# Gantt2.0

How a schedule from MS Project changed from version to version. A marks actual dates.

## Version 1 (data date 2015-06-07, saved 2015-06-24, file Gantt.mpp)

Note of the change: alcance gant y tabla de riesgos

| ID | WBS | Task | Duration | Start | Finish | Predecessors | Complete | Total float | Constraint |
| --- | --- | --- | --- | --- | --- | --- | --- | --- | --- |
| 1 | 1 | **Análisis** | 15d | 2015-04-12 A | 2015-05-17 |  | 90% | 86.4d |  |
| 2 | 1.1 | **Riesgos** | 2.4d | 2015-04-12 A | 2015-04-18 A |  | 100% |  |  |
| 3 |  | Identificar los riegos | 2h | 2015-04-12 A | 2015-04-12 A |  | 100% |  |  |
| 4 |  | Analizar los riegos | 3h | 2015-04-12 A | 2015-04-12 A | 3 | 100% |  |  |
| 5 |  | Planificación de riesgos | 6h | 2015-04-12 A | 2015-04-18 A | 4 | 100% |  |  |
| 6 |  | Completar tabla de riesgos | 1h | 2015-04-18 A | 2015-04-18 A | 5 | 100% |  |  |
| 7 | 1.2 | **Planificación** | 9d | 2015-04-19 A | 2015-05-10 |  | 82% | 88.4d |  |
| 8 |  | Identificar las tareas para cada entregable | 8h | 2015-04-19 A | 2015-04-25 | 21 | 50% | 0.4d |  |
| 9 |  | Definir las precedencias | 4h | 2015-04-25 A | 2015-04-26 | 8 | 50% | 0.4d |  |
| 10 |  | Estimar los tiempos de cada tarea | 4h | 2015-04-26 A | 2015-04-28 | 9 | 50% | 94d |  |
| 11 |  | Calcular el camino crítico | 3h | 2015-05-10 A | 2015-05-10 A | 12 | 100% |  |  |
| 12 |  | Realizar diagrama de Gantt | 25h | 2015-04-28 A | 2015-05-10 A | 10 | 100% |  |  |
| 13 | 1.3 | **Roles y Responsabilidades** | 1d | 2015-05-10 A | 2015-05-12 A |  | 100% |  |  |
| 14 |  | Identificar roles | 2h | 2015-05-10 A | 2015-05-10 A | 12 | 100% |  |  |
| 15 |  | Asignar responsabilidades a los roles | 3h | 2015-05-10 A | 2015-05-12 A | 14 | 100% |  |  |
| 16 | 1.4 | **Habilidades y Competencias** | 1.2d | 2015-05-12 A | 2015-05-16 A |  | 100% |  |  |
| 17 |  | Asignar competencias a los roles | 6h | 2015-05-12 A | 2015-05-16 A | 15 | 100% |  |  |
| 18 | 1.5 | **Comunicación** | 0.4d | 2015-05-16 A | 2015-05-17 A |  | 100% |  |  |
| 19 |  | Establecer canales de comunicación entre roles | 2h | 2015-05-16 A | 2015-05-17 A | 17 | 100% |  |  |
| 20 | 1.6 | **WBS** | 1.6d | 2015-04-18 A | 2015-04-19 A |  | 100% |  |  |
| 21 |  | Definir entregables | 8h | 2015-04-18 A | 2015-04-19 A | 6 | 100% |  |  |
| 22 | 2 | **Diseño** | 27.8d | 2015-04-25 A | 2015-06-28 |  | 36% | 62.2d |  |
| 23 | 2.1 | **Casos de Uso** | 16d | 2015-05-12 A | 2015-06-20 |  | 44% | 7.4d |  |
| 24 |  | Identificar actores y funcionalidades | 25h | 2015-05-12 A | 2015-05-24 | 21, 13 | 75% | 0.8d |  |
| 25 |  | Describir casos de uso | 48h | 2015-05-24 A | 2015-06-14 | 24 | 25% | 1.2d |  |
| 26 |  | Describir las relaciones entre los actores y casos de uso | 4h | 2015-06-14 A | 2015-06-20 | 24, 25 | 75% | 7.4d |  |
| 27 | 2.2 | **DER** | 11.6d | 2015-05-24 A | 2015-06-21 |  | 36% | 6.8d |  |
| 28 |  | Definir entidades y sus atributos | 8h | 2015-05-24 A | 2015-05-29 | 24 | 50% | 8d |  |
| 29 |  | Describir las relaciones entre las entidades | 8h | 2015-05-29 A | 2015-06-18 | 28 | 50% | 6.8d |  |
| 30 |  | Normalizar DER | 6h | 2015-06-18 | 2015-06-21 | 29 |  | 6.8d |  |
| 31 | 2.3 | **Maqueta del Front-End** | 2d | 2015-06-21 | 2015-06-26 |  |  | 63.6d |  |
| 32 |  | Diseñar disposición de elementos estéticamente | 10h | 2015-06-21 | 2015-06-26 | 30 |  | 63.6d |  |
| 33 | 2.4 | **Documento De Arquitectura** | 1.6d | 2015-04-25 A | 2015-04-27 |  | 75% | 0d |  |
| 34 |  | Definir arquitectura de software | 8h | 2015-04-25 A | 2015-04-27 | 8 | 75% | 0d |  |
| 35 | 2.5 | **Especificación de la BD** | 3.4d | 2015-06-21 | 2015-06-28 |  |  | 6.8d |  |
| 36 |  | Diseño de tablas de la BD | 6h | 2015-06-21 | 2015-06-22 | 30, 26 |  | 6.8d |  |
| 37 |  | Definir tipo y volumen de datos | 3h | 2015-06-25 | 2015-06-27 | 38 |  | 6.8d |  |
| 38 |  | Relaciones entre las tablas de la BD | 3h | 2015-06-22 | 2015-06-25 | 36 |  | 6.8d |  |
| 39 |  | Definir políticas de seguridad e integridad | 5h | 2015-06-27 | 2015-06-28 | 37 |  | 6.8d |  |
| 40 | 3 | **Desarrollo** | 90d | 2015-04-27 | 2015-11-23 |  |  | 0d |  |
| 41 |  | Capacitación en HTML | 120h | 2015-04-27 | 2015-06-22 | 34 |  | 0d |  |
| 42 |  | Capacitación en Java | 120h | 2015-04-27 | 2015-06-22 | 34 |  | 4d |  |
| 43 |  | Capacitación en CSS | 120h | 2015-04-27 | 2015-06-22 | 34 |  | 70.2d |  |
| 44 |  | Capacitación en PHP | 120h | 2015-04-27 | 2015-06-22 | 34 |  | 8d |  |
| 45 |  | Escribir código de Plantillas | 220h | 2015-06-22 | 2015-10-04 | 41 |  | 0d |  |
| 46 |  | Escribir código JavaScript | 200h | 2015-06-22 | 2015-09-26 | 42 |  | 4d |  |
| 47 |  | Escribir código PHP | 180h | 2015-06-22 | 2015-09-14 | 44 |  | 8d |  |
| 48 |  | Escribir script de la base de datos | 180h | 2015-06-28 | 2015-09-20 | 39 |  | 6.8d |  |
| 49 |  | Revisión de pares de Plantillas | 70h | 2015-10-04 | 2015-11-21 | 45, 46, 47 |  | 6.2d |  |
| 50 |  | Revisión de pares de JavaScript | 40h | 2015-10-04 | 2015-10-24 | 46, 45, 47 |  | 0d |  |
| 51 |  | Revisión de pares de la base de datos | 60h | 2015-09-26 | 2015-11-07 | 48 |  | 7.4d |  |
| 52 |  | Revisión de pares de PHP | 70h | 2015-10-24 | 2015-11-23 | 50 |  | 0d |  |
| 53 | 3.13 | **Promoción** | 3.6d | 2015-07-22 | 2015-08-01 |  |  | 52d |  |
| 54 |  | Realizar presentación comercial | 10h | 2015-07-26 | 2015-08-01 | 55 |  | 54.2d |  |
| 55 |  | Realizar poster comercial | 8h | 2015-07-22 | 2015-07-26 | 31 |  | 52d | start no earlier than 2015-07-22 |
| 56 | 4 | **Testing** | 55.2d | 2015-06-21 | 2015-10-26 |  |  | 16.2d |  |
| 57 |  | Armar el plan de pruebas | 8h | 2015-06-28 | 2015-07-03 | 58 |  | 66.4d |  |
| 58 |  | Definir los casos de prueba | 14h | 2015-06-21 | 2015-06-28 | 26, 30 |  | 63.2d |  |
| 59 |  | Ejecutar los casos de prueba | 40h | 2015-10-04 | 2015-10-24 | 45, 46, 47, 48 |  | 12d |  |
| 60 |  | Documentar resultados de las pruebas | 10h | 2015-10-24 | 2015-10-26 | 59 |  | 12d |  |
| 61 | 5 | **Manuales** | 0.6d | 2015-11-07 | 2015-11-07 |  |  | 7.4d |  |
| 62 |  | Redactar manual de instalación | 3h | 2015-11-07 | 2015-11-07 | 50, 51, 58 |  | 7.4d |  |
| 63 | 6 | **Finalización del Proyecto** | 4.2d | 2015-11-23 | 2015-12-05 |  |  | 0d |  |
| 64 |  | Reflexionar sobre la experiencia realizada | 3h | 2015-11-23 | 2015-11-26 | 62, 60, 6, 12, 15, 17, 19, 21, 26, 30, 32, 34, 39, 52, 55 |  | 0d |  |
| 65 |  | Analizar errores cometidos | 6h | 2015-11-26 | 2015-11-29 | 64 |  | 0d |  |
| 66 |  | Documentación de cierre de proyecto | 6h | 2015-11-29 | 2015-11-30 | 65 |  | 0d |  |
| 67 |  | Cerrar el proyecto | 6h | 2015-11-30 | 2015-12-05 | 66 |  | 0d |  |

## Version 2 (data date 2015-06-07, saved 2015-10-11, file Gantt3.mpp)

Note of the change: Gantt Contingencia

Last finish 2015-12-05 → 2015-11-21 (-14d). Complete tasks 11 → 72.

Added:

| ID | Task | Duration | Start | Finish | Predecessors | Resources |
| --- | --- | --- | --- | --- | --- | --- |
| 41 | Inicio Capacitación en HTML | 20h | 2015-04-27 A | 2015-05-11 A | 34 | Tiberti-DESAROLLADOR |
| 42 | Inicio Capacitación en Java | 20h | 2015-04-27 A | 2015-05-11 A | 34 | Croci-DESAROLLADOR |
| 43 | Inicio Capacitación en CSS | 20h | 2015-04-27 A | 2015-05-11 A | 34 | Budic-DESAROLLADOR |
| 44 | Inicio Capacitación en PHP | 20h | 2015-04-27 A | 2015-05-11 A | 34 | Rodriguez-DESAROLLADOR |
| 50 | Inscribirse al portal | 10h | 2015-05-11 A | 2015-05-17 A | 41, 43 | Budic-DESAROLLADOR |
| 51 | Autenticarse como usuario | 10h? | 2015-05-17 A | 2015-05-23 A | 50 | Budic-DESAROLLADOR |
| 52 | Modificar Usuario | 10h? | 2015-06-01 A | 2015-06-07 A | 51 | Budic-DESAROLLADOR |
| 53 | Dar de baja Usuario | 10h? | 2015-06-07 A | 2015-06-13 A | 52 | Budic-DESAROLLADOR |
| 54 | Inscribirse como emprendedor | 10h? | 2015-07-11 A | 2015-07-15 A | 134 | Budic-DESAROLLADOR |
| 55 | Aprobar inscripción como emprendedor | 10h? | 2015-07-15 A | 2015-07-19 A | 54 | Budic-DESAROLLADOR |
| 56 | Aplicar para crear emprendimiento | 10h? | 2015-07-21 A | 2015-07-26 A | 55 | Budic-DESAROLLADOR |
| 57 | Aprobar emprendimiento | 10h? | 2015-08-01 A | 2015-08-04 A | 56 | Budic-DESAROLLADOR |
| 58 | Modificar emprendimiento | 10h? | 2015-08-04 A | 2015-08-09 A | 57 | Budic-DESAROLLADOR |
| 59 | Dar de baja emprendimiento | 10h? | 2015-08-09 A | 2015-08-15 A | 58 | Budic-DESAROLLADOR |
| 60 | Solicitar asociación a emprendimiento | 10h? | 2015-08-20 | 2015-08-23 | 135 | Budic-DESAROLLADOR |
| 61 | Responder a inversor | 10h? | 2015-08-29 | 2015-09-01 | 60 | Budic-DESAROLLADOR |
| 62 | Aceptar solicitud de asociación | 10h? | 2015-09-01 A | 2015-09-06 A | 61 | Budic-DESAROLLADOR |
| 63 | Consultar información a emprendedor | 10h? | 2015-09-12 A | 2015-09-15 | 62 | Budic-DESAROLLADOR |
| 64 | Buscar/filtrar emprendimientos | 10h? | 2015-09-15 | 2015-09-20 | 63 | Budic-DESAROLLADOR |
| 65 | Pagar | 10h? | 2015-09-20 | 2015-09-26 | 64 | Budic-DESAROLLADOR |
| 66 | Configurar seguimiento de emprendimiento | 10h? | 2015-10-03 | 2015-10-05 | 136 | Budic-DESAROLLADOR |
| 67 | Crear Agenda | 10h? | 2015-10-11 | 2015-10-17 | 66 | Budic-DESAROLLADOR |
| 68 | Modificar agenda | 10h? | 2015-10-17 | 2015-10-22 | 67 | Budic-DESAROLLADOR |
| 69 | Difundir Mail | 10h? | 2015-10-22 | 2015-10-25 | 68 | Budic-DESAROLLADOR |
| 71 | Inscribirse al portal | 12h? | 2015-05-17 A | 2015-05-23 A | 42 | Croci-DESAROLLADOR |
| 72 | Autenticarse como usuario | 10h? | 2015-05-23 A | 2015-05-27 A | 71 | Croci-DESAROLLADOR |
| 73 | Modificar Usuario | 10h? | 2015-05-27 A | 2015-05-31 A | 72 | Croci-DESAROLLADOR |
| 74 | Dar de baja Usuario | 10h? | 2015-05-31 A | 2015-06-06 A | 73 | Croci-DESAROLLADOR |
| 75 | Inscribirse como emprendedor | 10h? | 2015-06-28 A | 2015-07-04 A | 139 | Croci-DESAROLLADOR |
| 76 | Aprobar inscripción como emprendedor | 10h? | 2015-07-04 A | 2015-07-06 A | 75 | Croci-DESAROLLADOR |
| 77 | Aplicar para crear emprendimiento | 10h? | 2015-07-06 A | 2015-07-12 A | 76 | Croci-DESAROLLADOR |
| 78 | Aprobar emprendimiento | 10h? | 2015-07-12 A | 2015-07-19 A | 77 | Croci-DESAROLLADOR |
| 79 | Modificar emprendimiento | 10h? | 2015-07-19 A | 2015-07-26 A | 78 | Croci-DESAROLLADOR |
| 80 | Dar de baja emprendimiento | 10h? | 2015-07-26 A | 2015-08-02 A | 79 | Croci-DESAROLLADOR |
| 81 | Solicitar asociación a emprendimiento | 10h? | 2015-08-20 | 2015-08-23 | 140 | Croci-DESAROLLADOR |
| 82 | Responder a inversor | 10h? | 2015-08-26 | 2015-08-30 | 81 | Croci-DESAROLLADOR |
| 83 | Aceptar solicitud de asociación | 10h? | 2015-08-30 A | 2015-09-05 A | 82 | Croci-DESAROLLADOR |
| 84 | Consultar información a emprendedor | 10h? | 2015-09-09 A | 2015-09-13 | 83 | Croci-DESAROLLADOR |
| 85 | Buscar/filtrar emprendimientos | 10h? | 2015-09-13 | 2015-09-19 | 84 | Croci-DESAROLLADOR |
| 86 | Pagar | 10h? | 2015-09-19 A | 2015-09-23 | 85 | Croci-DESAROLLADOR |
| 87 | Configurar seguimiento de emprendimiento | 10h? | 2015-10-01 | 2015-10-04 | 141 | Croci-DESAROLLADOR |
| 88 | Crear Agenda | 10h? | 2015-10-10 | 2015-10-15 | 87 | Croci-DESAROLLADOR |
| 89 | Modificar agenda | 10h? | 2015-10-15 | 2015-10-18 | 88 | Croci-DESAROLLADOR |
| 90 | Difundir Mail | 10h? | 2015-10-18 | 2015-10-24 | 89 | Croci-DESAROLLADOR |
| 92 | Inscribirse al portal | 9h? | 2015-06-14 A | 2015-06-19 A | 44 | Rodriguez-DESAROLLADOR |
| 93 | Autenticarse como usuario | 9h? | 2015-06-21 A | 2015-06-27 A | 149 | Rodriguez-DESAROLLADOR |
| 94 | Modificar Usuario | 9h? | 2015-06-28 A | 2015-07-03 A | 93 | Rodriguez-DESAROLLADOR |
| 95 | Dar de baja Usuario | 9h? | 2015-07-03 A | 2015-07-05 A | 94 | Rodriguez-DESAROLLADOR |
| 96 | Inscribirse como emprendedor | 9h? | 2015-07-05 A | 2015-07-11 A | 95 | Rodriguez-DESAROLLADOR |
| 97 | Aprobar inscripción como emprendedor | 9h? | 2015-07-11 A | 2015-07-14 A | 96 | Rodriguez-DESAROLLADOR |
| 98 | Aplicar para crear emprendimiento | 9h? | 2015-07-14 A | 2015-07-19 A | 97 | Rodriguez-DESAROLLADOR |
| 99 | Aprobar emprendimiento | 9h? | 2015-08-01 A | 2015-08-03 A | 150 | Rodriguez-DESAROLLADOR |
| 100 | Modificar emprendimiento | 9h? | 2015-08-03 A | 2015-08-09 A | 99 | Rodriguez-DESAROLLADOR |
| 101 | Dar de baja emprendimiento | 9h? | 2015-08-09 A | 2015-08-13 A | 100 | Rodriguez-DESAROLLADOR |
| 102 | Solicitar asociación a emprendimiento | 9h? | 2015-08-13 | 2015-08-23 | 101 | Rodriguez-DESAROLLADOR |
| 103 | Responder a inversor | 9h? | 2015-08-23 | 2015-08-27 | 102 | Rodriguez-DESAROLLADOR |
| 104 | Aceptar solicitud de asociación | 9h? | 2015-08-27 A | 2015-08-30 A | 103 | Rodriguez-DESAROLLADOR |
| 105 | Consultar información a emprendedor | 9h? | 2015-09-12 | 2015-09-14 | 151 | Rodriguez-DESAROLLADOR |
| 106 | Buscar/filtrar emprendimientos | 9h? | 2015-09-14 | 2015-09-20 | 105 | Rodriguez-DESAROLLADOR |
| 107 | Pagar | 9h? | 2015-09-20 A | 2015-09-24 | 106 | Rodriguez-DESAROLLADOR |
| 108 | Configurar seguimiento de emprendimiento | 9h? | 2015-09-24 | 2015-10-04 | 107 | Rodriguez-DESAROLLADOR |
| 109 | Crear Agenda | 9h? | 2015-10-11 | 2015-10-16 | 152 | Rodriguez-DESAROLLADOR |
| 110 | Modificar agenda | 9h? | 2015-10-16 | 2015-10-18 | 109 | Rodriguez-DESAROLLADOR |
| 111 | Difundir Mail | 9h? | 2015-10-18 | 2015-10-24 | 110 | Rodriguez-DESAROLLADOR |
| 113 | Inscribirse al portal | 9h? | 2015-06-28 A | 2015-07-04 A | 39 | Tiberti-DESAROLLADOR; Rodriguez-ARQUITECTO DE SOFTWARE |
| 114 | Autenticarse como usuario | 9h? | 2015-07-04 A | 2015-07-06 A | 113 | Tiberti-DESAROLLADOR; Rodriguez-ARQUITECTO DE SOFTWARE |
| 115 | Modificar Usuario | 9h? | 2015-07-06 A | 2015-07-12 A | 114 | Tiberti-DESAROLLADOR; Rodriguez-ARQUITECTO DE SOFTWARE |
| 116 | Dar de baja Usuario | 9h? | 2015-07-12 A | 2015-07-16 A | 115 | Tiberti-DESAROLLADOR; Rodriguez-ARQUITECTO DE SOFTWARE |
| 117 | Inscribirse como emprendedor | 9h? | 2015-07-21 A | 2015-07-26 A | 144 | Tiberti-DESAROLLADOR; Rodriguez-ARQUITECTO DE SOFTWARE |
| 118 | Aprobar inscripción como emprendedor | 9h? | 2015-07-26 A | 2015-07-31 A | 117 | Tiberti-DESAROLLADOR; Rodriguez-ARQUITECTO DE SOFTWARE |
| 119 | Aplicar para crear emprendimiento | 9h? | 2015-07-31 A | 2015-08-02 A | 118 | Tiberti-DESAROLLADOR; Rodriguez-ARQUITECTO DE SOFTWARE |
| 120 | Aprobar emprendimiento | 9h? | 2015-08-02 A | 2015-08-08 A | 119 | Tiberti-DESAROLLADOR; Rodriguez-ARQUITECTO DE SOFTWARE |
| 121 | Modificar emprendimiento | 11h? | 2015-08-08 A | 2015-08-16 A | 120 | Tiberti-DESAROLLADOR; Rodriguez-ARQUITECTO DE SOFTWARE |
| 122 | Dar de baja emprendimiento | 9h? | 2015-08-16 A | 2015-08-22 A | 121 | Tiberti-DESAROLLADOR; Rodriguez-ARQUITECTO DE SOFTWARE |
| 123 | Solicitar asociación a emprendimiento | 9h? | 2015-08-26 | 2015-08-30 | 145 | Tiberti-DESAROLLADOR; Rodriguez-ARQUITECTO DE SOFTWARE |
| 124 | Responder a inversor | 9h? | 2015-08-30 | 2015-09-05 | 123 | Tiberti-DESAROLLADOR; Rodriguez-ARQUITECTO DE SOFTWARE |
| 125 | Aceptar solicitud de asociación | 9h? | 2015-09-05 A | 2015-09-06 A | 124 | Tiberti-DESAROLLADOR; Rodriguez-ARQUITECTO DE SOFTWARE |
| 126 | Consultar información a emprendedor | 9h? | 2015-09-06 | 2015-09-12 | 125 | Tiberti-DESAROLLADOR; Rodriguez-ARQUITECTO DE SOFTWARE |
| 127 | Buscar/filtrar emprendimientos | 9h? | 2015-09-12 A | 2015-09-16 | 126 | Tiberti-DESAROLLADOR; Rodriguez-ARQUITECTO DE SOFTWARE |
| 128 | Pagar | 9h? | 2015-09-16 A | 2015-09-20 | 127 | Tiberti-DESAROLLADOR; Rodriguez-ARQUITECTO DE SOFTWARE |
| 129 | Configurar seguimiento de emprendimiento | 9h? | 2015-10-03 | 2015-10-04 | 146 | Tiberti-DESAROLLADOR; Rodriguez-ARQUITECTO DE SOFTWARE |
| 130 | Crear Agenda | 9h? | 2015-10-04 | 2015-10-10 | 129 | Tiberti-DESAROLLADOR; Rodriguez-ARQUITECTO DE SOFTWARE |
| 131 | Modificar agenda | 9h? | 2015-10-10 | 2015-10-14 | 130 | Tiberti-DESAROLLADOR; Rodriguez-ARQUITECTO DE SOFTWARE |
| 132 | Difundir Mail | 9h? | 2015-10-14 | 2015-10-18 | 131 | Tiberti-DESAROLLADOR; Rodriguez-ARQUITECTO DE SOFTWARE |
| 134 | Revision 1 | 24h? | 2015-06-13 A | 2015-06-28 | 53 | Croci-DESAROLLADOR; Rodriguez-DESAROLLADOR |
| 135 | Revision 2 | 12h? | 2015-08-15 A | 2015-08-20 | 59 | Croci-DESAROLLADOR; Rodriguez-DESAROLLADOR |
| 136 | Revision 3 | 12h? | 2015-09-26 | 2015-10-01 | 65 | Croci-DESAROLLADOR; Rodriguez-DESAROLLADOR |
| 137 | Revision 4 | 12h? | 2015-10-25 | 2015-11-01 | 69 | Croci-DESAROLLADOR; Rodriguez-DESAROLLADOR |
| 139 | Revision 1 | 20h? | 2015-06-13 A | 2015-06-28 | 74 | Tiberti-DESAROLLADOR; Budic-DESAROLLADOR |
| 140 | Revision 2 | 20h? | 2015-08-08 A | 2015-08-18 | 80 | Tiberti-DESAROLLADOR; Budic-DESAROLLADOR |
| 141 | Revision 3 | 14h? | 2015-09-23 | 2015-09-29 | 86 | Tiberti-DESAROLLADOR; Budic-DESAROLLADOR |
| 142 | Revision 4 | 15h? | 2015-10-24 | 2015-10-31 | 90 | Tiberti-DESAROLLADOR; Budic-DESAROLLADOR |
| 144 | Revision 1 | 8h? | 2015-07-16 A | 2015-07-21 A | 116 | Budic-DESAROLLADOR; Croci-DESAROLLADOR |
| 145 | Revision 2 | 4h? | 2015-08-23 A | 2015-08-26 | 122 | Budic-DESAROLLADOR; Croci-DESAROLLADOR |
| 146 | Revision 3 | 8h? | 2015-09-23 | 2015-10-03 | 128 | Budic-DESAROLLADOR; Croci-DESAROLLADOR |
| 147 | Revision 4 | 8h? | 2015-10-24 | 2015-11-01 | 132 | Budic-DESAROLLADOR; Croci-DESAROLLADOR |
| 149 | Revision 1 | 10h? | 2015-06-19 A | 2015-06-21 | 92 | Budic-DESAROLLADOR; Croci-DESAROLLADOR |
| 150 | Revision 2 | 20h? | 2015-07-19 A | 2015-08-01 | 98 | Budic-DESAROLLADOR; Croci-DESAROLLADOR |
| 151 | Revision 3 | 14h? | 2015-09-05 | 2015-09-12 | 104 | Budic-DESAROLLADOR; Croci-DESAROLLADOR |
| 152 | Revision 4 | 12h? | 2015-10-04 | 2015-10-11 | 108 | Budic-DESAROLLADOR; Croci-DESAROLLADOR |

Changed:

| ID | Task | Start | Finish | Duration | Complete | Total float | Predecessors | Other |
| --- | --- | --- | --- | --- | --- | --- | --- | --- |
| 1 | **Análisis** |  |  |  | 90% → 97% | 86.4d → 77.8d |  |  |
| 3 | Identificar los riegos |  |  |  |  |  |  | resources Budic; Tiberti; Rodriguez; Croci → Budic-PROJECT MANAGER; Tiberti-ADMINISTRADOR DE BASE DE DATOS; Rodriguez-ARQUITECTO DE SOFTWARE; Rodriguez-PROJECT CONTROLLER; Budic-ANALISTA FUNCIONAL; Croci-DESAROLLADOR |
| 4 | Analizar los riegos |  |  |  |  |  |  | resources Budic; Tiberti; Rodriguez; Croci → Budic-PROJECT MANAGER; Tiberti-ADMINISTRADOR DE BASE DE DATOS; Rodriguez-ARQUITECTO DE SOFTWARE; Rodriguez-PROJECT CONTROLLER; Budic-ANALISTA FUNCIONAL; Croci-DESAROLLADOR |
| 5 | Planificación de riesgos |  |  |  |  |  |  | resources Budic; Rodriguez → Budic-PROJECT MANAGER; Rodriguez-PROJECT CONTROLLER; Budic-ANALISTA FUNCIONAL |
| 6 | Completar tabla de riesgos |  |  |  |  |  |  | resources Budic; Rodriguez → Budic-PROJECT MANAGER; Rodriguez-PROJECT CONTROLLER |
| 7 | **Planificación** |  |  |  | 82% → 94% | 88.4d → 79.8d |  |  |
| 8 | Identificar las tareas para cada entregable |  | 2015-04-25 A |  | 50% → 100% | 0.4d → none |  | resources Budic → Budic-PROJECT MANAGER |
| 9 | Definir las precedencias |  | 2015-04-26 A |  | 50% → 100% | 0.4d → none |  | resources Budic → Budic-PROJECT MANAGER |
| 10 | Estimar los tiempos de cada tarea |  | 2015-04-28 → 2015-04-26 A (-2d) | 4h → 3h | 50% → 100% | 94d → none |  | resources Budic; Tiberti; Croci; Rodriguez → Budic-PROJECT MANAGER; Tiberti-ADMINISTRADOR DE BASE DE DATOS; Tiberti-ADMINISTRADOR DEL ENTORNO DE DESARROLLO; Croci-ANALISTA FUNCIONAL; Rodriguez-ARQUITECTO DE SOFTWARE; Budic-TESTER; Croci-DISEÑADOR DE EXPERIENCIA DE USUARIO |
| 11 | Calcular el camino crítico |  |  |  |  |  |  | resources Rodriguez → Rodriguez-PROJECT CONTROLLER |
| 12 | Realizar diagrama de Gantt |  | 2015-05-10 A → 2015-05-10 |  | 100% → 90% | none → 80.4d |  | resources Rodriguez → Rodriguez-PROJECT CONTROLLER |
| 14 | Identificar roles |  |  |  |  |  |  | resources Budic; Croci → Budic-PROJECT MANAGER; Croci-ANALISTA FUNCIONAL |
| 15 | Asignar responsabilidades a los roles |  |  |  |  |  |  | resources Budic → Budic-PROJECT MANAGER |
| 17 | Asignar competencias a los roles |  |  |  |  |  |  | resources Budic → Budic-PROJECT MANAGER |
| 19 | Establecer canales de comunicación entre roles |  |  |  |  |  |  | resources Budic → Budic-PROJECT MANAGER |
| 21 | Definir entregables |  |  |  |  |  |  | resources Budic; Croci → Budic-PROJECT MANAGER; Croci-ANALISTA FUNCIONAL |
| 22 | **Diseño** |  |  | 27.8d → 28d | 36% → 91% | 62.2d → 61.9d |  |  |
| 23 | **Casos de Uso** |  | 2015-06-20 → 2015-06-21 (+1d) | 16d → 16.8d | 44% → 94% | 7.4d → 65.3d |  |  |
| 24 | Identificar actores y funcionalidades |  | 2015-05-24 A |  | 75% → 100% | 0.8d → none |  | resources Croci; Budic → Croci-ANALISTA FUNCIONAL; Budic-ANALISTA FUNCIONAL |
| 25 | Describir casos de uso |  | 2015-06-14 → 2015-06-21 (+7d) |  | 25% → 90% | 1.2d → 65.5d |  | resources Croci; Budic → Croci-ANALISTA FUNCIONAL; Budic-PROJECT MANAGER |
| 26 | Describir las relaciones entre los actores y casos de uso |  | 2015-06-20 → 2015-06-21 A (+1d) |  | 75% → 100% | 7.4d → none |  | resources Croci; Budic → Croci-ANALISTA FUNCIONAL; Budic-ANALISTA FUNCIONAL |
| 27 | **DER** |  | 2015-06-21 A |  | 36% → 100% | 6.8d → none |  |  |
| 28 | Definir entidades y sus atributos |  | 2015-05-29 A |  | 50% → 100% | 8d → none |  | resources Tiberti; Croci; Rodriguez; Budic → Tiberti-ADMINISTRADOR DE BASE DE DATOS; Croci-ANALISTA FUNCIONAL; Rodriguez-ARQUITECTO DE SOFTWARE; Budic-PROJECT MANAGER |
| 29 | Describir las relaciones entre las entidades |  | 2015-06-18 A |  | 50% → 100% | 6.8d → none |  | resources Tiberti; Croci → Tiberti-ADMINISTRADOR DE BASE DE DATOS; Croci-ANALISTA FUNCIONAL |
| 30 | Normalizar DER | 2015-06-18 A | 2015-06-21 A |  | 0% → 100% | 6.8d → none |  | resources Tiberti → Tiberti-ADMINISTRADOR DE BASE DE DATOS |
| 31 | **Maqueta del Front-End** | 2015-06-21 A |  |  | 0% → 75% | 63.6d → 60.8d |  |  |
| 32 | Diseñar disposición de elementos estéticamente | 2015-06-21 A |  |  | 0% → 75% | 63.6d → 60.8d |  | resources Croci → Croci-DISEÑADOR DE EXPERIENCIA DE USUARIO |
| 34 | Definir arquitectura de software |  |  |  |  | 0d → 85.6d |  | resources Rodriguez → Rodriguez-ARQUITECTO DE SOFTWARE |
| 35 | **Especificación de la BD** | 2015-06-21 A |  |  | 0% → 85% | 6.8d → 59.2d |  |  |
| 36 | Diseño de tablas de la BD | 2015-06-21 A | 2015-06-22 → 2015-06-23 A (+1d) |  | 0% → 100% | 6.8d → none |  | resources Tiberti; Croci; Rodriguez → Tiberti-ADMINISTRADOR DE BASE DE DATOS; Croci-ANALISTA FUNCIONAL; Rodriguez-ARQUITECTO DE SOFTWARE |
| 37 | Definir tipo y volumen de datos | 2015-06-25 → 2015-06-26 A (+1d) | 2015-06-27 A |  | 0% → 100% | 6.8d → none |  | resources Tiberti → Tiberti-ADMINISTRADOR DE BASE DE DATOS |
| 38 | Relaciones entre las tablas de la BD | 2015-06-22 → 2015-06-23 A (+1d) | 2015-06-25 → 2015-06-26 A (+1d) |  | 0% → 100% | 6.8d → none |  | resources Tiberti → Tiberti-ADMINISTRADOR DE BASE DE DATOS |
| 39 | Definir políticas de seguridad e integridad | 2015-06-27 A |  |  | 0% → 50% | 6.8d → 59.2d |  | resources Tiberti; Croci; Rodriguez → Tiberti-ADMINISTRADOR DE BASE DE DATOS; Croci-ANALISTA FUNCIONAL; Rodriguez-ARQUITECTO DE SOFTWARE |
| 40 | **Desarrollo** | 2015-04-27 A | 2015-11-23 → 2015-11-14 (-9d) | 90d → 85.4d? | 0% → 59% | 0d → 2.9d |  |  |
| 45 | Capacitación en HTML | 2015-04-27 → 2015-05-09 A (+12d) |  | 120h → 80h | 0% → 60% | 0d → 64.3d | 34 → 41 | resources Tiberti → Tiberti-DESAROLLADOR |
| 46 | Capacitación en Java | 2015-04-27 → 2015-05-11 A (+14d) | 2015-06-22 → 2015-05-17 (-36d) | 120h → 10h | 0% → 60% | 4d → 80.3d | 34 → 42 | resources Croci → Croci-DESAROLLADOR |
| 47 | Capacitación en CSS | 2015-04-27 → 2015-05-09 A (+12d) | 2015-06-22 → 2015-11-14 (+145d) | 120h → 80h | 0% → 60% | 70.2d → 2.9d | 34 → 43 | resources Budic → Budic-DESAROLLADOR |
| 48 | Capacitación en PHP | 2015-04-27 → 2015-05-11 A (+14d) | 2015-06-22 → 2015-06-14 (-8d) | 120h → 70h | 0% → 60% | 8d → 68.3d | 34 → 44 | resources Rodriguez → Rodriguez-DESAROLLADOR |
| 49 | **Escribir código de Plantillas** | 2015-06-22 → 2015-05-11 A (-42d) | 2015-10-04 → 2015-10-25 (+21d) | 220h → 71.6d? | 0% → 57% |  | 45 → none | resources Budic → none |
| 70 | **Escribir código JavaScript** | 2015-06-22 → 2015-05-17 A (-36d) | 2015-09-26 → 2015-10-24 (+28d) | 200h → 68.6d? | 0% → 60% | 4d → 1d | 46 → none | resources Croci → none |
| 91 | **Escribir código PHP** | 2015-06-22 → 2015-06-14 A (-8d) | 2015-09-14 → 2015-10-24 (+40d) | 180h → 56.4d? | 0% → 58% | 8d → 1.2d | 48 → none | resources Rodriguez → none |
| 112 | **Escribir script de la base de datos** | 2015-06-28 A | 2015-09-20 → 2015-10-18 (+28d) | 180h → 47.8d? | 0% → 61% | 6.8d → 3.4d | 39 → none | resources Tiberti; Rodriguez → none |
| 133 | **Revisión de pares de Plantillas** | 2015-10-04 → 2015-06-13 A (-113d) | 2015-11-21 → 2015-11-01 (-20d) | 70h → 61d? | 0% → 48% | 6.2d → 8.3d | 49, 70, 91 → none | resources Croci; Rodriguez → none |
| 138 | **Revisión de pares de JavaScript** | 2015-10-04 → 2015-06-13 A (-113d) | 2015-10-24 → 2015-10-31 (+7d) | 40h → 60.6d? | 0% → 41% | 0d → 5.6d | 70, 49, 91 → none | resources Tiberti; Budic → none |
| 143 | **Revisión de pares de la base de datos** | 2015-09-26 → 2015-07-16 A (-72d) | 2015-11-07 → 2015-11-01 (-6d) | 60h → 46.8d? | 0% → 37% | 7.4d → 4.8d | 112 → none | resources Croci; Budic → none |
| 148 | **Revisión de pares de PHP** | 2015-10-24 → 2015-06-19 A (-127d) | 2015-11-23 → 2015-10-11 (-43d) | 70h → 49.2d? | 0% → 32% | 0d → 14.6d | 138 → none | resources Budic; Croci → none |
| 153 | **Promoción** | 2015-07-22 A | 2015-08-01 A |  | 0% → 100% | 52d → none |  |  |
| 154 | Realizar presentación comercial | 2015-07-26 A | 2015-08-01 A |  | 0% → 100% | 54.2d → none |  | resources Croci; Budic → Croci-ANALISTA FUNCIONAL; Croci-DISEÑADOR DE EXPERIENCIA DE USUARIO; Budic-PROJECT MANAGER |
| 155 | Realizar poster comercial | 2015-07-22 A | 2015-07-26 A |  | 0% → 100% | 52d → none |  | resources Croci → Croci-DISEÑADOR DE EXPERIENCIA DE USUARIO |
| 156 | **Testing** | 2015-06-21 A | 2015-10-26 → 2015-11-14 (+19d) | 55.2d → 62.6d | 0% → 17% | 16.2d → 2.7d |  |  |
| 157 | Armar el plan de pruebas | 2015-06-28 A | 2015-07-03 → 2015-07-04 (+1d) |  | 0% → 60% | 66.4d → 60.3d |  | resources Croci; Budic → Croci-ANALISTA FUNCIONAL; Budic-PROJECT MANAGER |
| 158 | Definir los casos de prueba | 2015-06-21 A |  |  | 0% → 40% | 63.2d → 58.8d |  | resources Croci; Budic → Croci-ANALISTA FUNCIONAL; Budic-PROJECT MANAGER |
| 159 | Ejecutar los casos de prueba | 2015-10-04 → 2015-10-25 (+21d) | 2015-10-24 → 2015-11-08 (+15d) | 40h → 30h |  | 12d → 0d |  | resources Budic → Budic-TESTER |
| 160 | Documentar resultados de las pruebas | 2015-10-24 → 2015-11-08 (+15d) | 2015-10-26 → 2015-11-14 (+19d) |  |  | 12d → 0d |  | resources Budic → Budic-TESTER |
| 161 | **Manuales** | 2015-11-07 → 2015-11-01 (-6d) | 2015-11-07 → 2015-11-01 (-6d) | 0.6d → 0.4d |  | 7.4d → 4.8d |  |  |
| 162 | Redactar manual de instalación | 2015-11-07 → 2015-11-01 (-6d) | 2015-11-07 → 2015-11-01 (-6d) | 3h → 2h |  | 7.4d → 4.8d |  | resources Tiberti → Tiberti-ADMINISTRADOR DE BASE DE DATOS; Tiberti-ADMINISTRADOR DEL ENTORNO DE DESARROLLO; Tiberti-DESAROLLADOR |
| 163 | **Finalización del Proyecto** | 2015-11-23 → 2015-11-14 (-9d) | 2015-12-05 → 2015-11-21 (-14d) | 4.2d → 2.7d |  |  |  |  |
| 164 | Reflexionar sobre la experiencia realizada | 2015-11-23 → 2015-11-14 (-9d) | 2015-11-26 → 2015-11-14 (-12d) | 3h → 0.5h |  |  |  | resources Tiberti; Croci; Rodriguez; Budic → Tiberti-ADMINISTRADOR DE BASE DE DATOS; Tiberti-ADMINISTRADOR DEL ENTORNO DE DESARROLLO; Croci-ANALISTA FUNCIONAL; Rodriguez-ARQUITECTO DE SOFTWARE; Tiberti-DESAROLLADOR; Croci-DISEÑADOR DE EXPERIENCIA DE USUARIO; Budic-PROJECT MANAGER; Budic-TESTER |
| 165 | Analizar errores cometidos | 2015-11-26 → 2015-11-14 (-12d) | 2015-11-29 → 2015-11-15 (-14d) | 6h → 1h |  |  |  | resources Tiberti; Croci; Rodriguez; Budic → Tiberti-ADMINISTRADOR DE BASE DE DATOS; Tiberti-ADMINISTRADOR DEL ENTORNO DE DESARROLLO; Croci-ANALISTA FUNCIONAL; Rodriguez-ARQUITECTO DE SOFTWARE; Tiberti-DESAROLLADOR; Croci-DISEÑADOR DE EXPERIENCIA DE USUARIO; Budic-PROJECT MANAGER; Budic-TESTER |
| 166 | Documentación de cierre de proyecto | 2015-11-29 → 2015-11-15 (-14d) | 2015-11-30 → 2015-11-16 (-14d) |  |  |  |  | resources Croci; Budic → Croci-ANALISTA FUNCIONAL; Budic-PROJECT MANAGER |
| 167 | Cerrar el proyecto | 2015-11-30 → 2015-11-16 (-14d) | 2015-12-05 → 2015-11-21 (-14d) |  |  |  |  | resources Budic → Budic-PROJECT MANAGER |
