# Gantt2.0

How a schedule from MS Project changed from version to version. A marks actual dates.

## Version 1 (data date 2015-06-07, saved 2015-06-24, file Gantt.mpp)

Note of the change: alcance gant y tabla de riesgos

| ID | WBS | Task | Duration | Start | Finish | Predecessors | Complete | Total float |
| --- | --- | --- | --- | --- | --- | --- | --- | --- |
| 1 | 1 | **Análisis** | 15d | 2015-04-12 A | 2015-05-17 |  | 89% | 89.6d |
| 2 | 1.1 | **Riesgos** | 2.4d | 2015-04-12 A | 2015-04-18 A |  | 100% |  |
| 3 |  | Identificar los riegos | 2h | 2015-04-12 A | 2015-04-12 A |  | 100% |  |
| 4 |  | Analizar los riegos | 3h | 2015-04-12 A | 2015-04-12 A | 3 | 100% |  |
| 5 |  | Planificación de riesgos | 6h | 2015-04-12 A | 2015-04-18 A | 4 | 100% |  |
| 6 |  | Completar tabla de riesgos | 1h | 2015-04-18 A | 2015-04-18 A | 5 | 100% |  |
| 7 | 1.2 | **Planificación** | 9d | 2015-04-19 A | 2015-05-10 |  | 81% | 91.6d |
| 8 |  | Identificar las tareas para cada entregable | 8h | 2015-04-19 A | 2015-04-25 | 21 | 80% | 0.64d |
| 9 |  | Definir las precedencias | 4h | 2015-04-25 A | 2015-04-26 | 8 | 80% | 0.48d |
| 10 |  | Estimar los tiempos de cada tarea | 3h | 2015-04-26 A | 2015-04-26 | 9 | 80% | 4.4d |
| 11 |  | Calcular el camino crítico | 3h | 2015-05-10 A | 2015-05-10 A | 12 | 100% |  |
| 12 |  | Realizar diagrama de Gantt | 25h | 2015-04-28 A | 2015-05-10 | 10 | 80% | 92.2d |
| 13 | 1.3 | **Roles y Responsabilidades** | 1d | 2015-05-10 A | 2015-05-12 A |  | 100% |  |
| 14 |  | Identificar roles | 2h | 2015-05-10 A | 2015-05-10 A | 12 | 100% |  |
| 15 |  | Asignar responsabilidades a los roles | 3h | 2015-05-10 A | 2015-05-12 A | 14 | 100% |  |
| 16 | 1.4 | **Habilidades y Competencias** | 1.2d | 2015-05-12 A | 2015-05-16 A |  | 100% |  |
| 17 |  | Asignar competencias a los roles | 6h | 2015-05-12 A | 2015-05-16 A | 15 | 100% |  |
| 18 | 1.5 | **Comunicación** | 0.4d | 2015-05-16 A | 2015-05-17 A |  | 100% |  |
| 19 |  | Establecer canales de comunicación entre roles | 2h | 2015-05-16 A | 2015-05-17 A | 17 | 100% |  |
| 20 | 1.6 | **WBS** | 1.6d | 2015-04-18 A | 2015-04-19 A |  | 100% |  |
| 21 |  | Definir entregables | 8h | 2015-04-18 A | 2015-04-19 A | 6 | 100% |  |
| 22 | 2 | **Diseño** | 28d | 2015-04-25 A | 2015-06-28 |  | 36% | 69.4d |
| 23 | 2.1 | **Casos de Uso** | 16.8d | 2015-05-12 A | 2015-06-21 |  | 44% | 3d |
| 24 |  | Identificar actores y funcionalidades | 25h | 2015-05-12 A | 2015-05-24 | 21, 13 | 75% | 0.8d |
| 25 |  | Describir casos de uso | 48h | 2015-05-24 A | 2015-06-21 | 24 | 25% | 0d |
| 26 |  | Describir las relaciones entre los actores y casos de uso | 4h | 2015-06-14 A | 2015-06-21 | 24, 25 | 75% | 3d |
| 27 | 2.2 | **DER** | 11.6d | 2015-05-24 A | 2015-06-21 |  | 36% | 3.2d |
| 28 |  | Definir entidades y sus atributos | 8h | 2015-05-24 A | 2015-05-29 | 24 | 50% | 8d |
| 29 |  | Describir las relaciones entre las entidades | 8h | 2015-05-29 A | 2015-06-18 | 28 | 50% | 3.2d |
| 30 |  | Normalizar DER | 6h | 2015-06-18 | 2015-06-21 | 29 |  | 3.2d |
| 31 | 2.3 | **Maqueta del Front-End** | 2d | 2015-06-21 | 2015-06-26 |  |  | 71d |
| 32 |  | Diseñar disposición de elementos estéticamente | 10h | 2015-06-21 | 2015-06-26 | 30 |  | 71d |
| 33 | 2.4 | **Documento De Arquitectura** | 1.6d | 2015-04-25 A | 2015-04-27 |  | 75% | 6d |
| 34 |  | Definir arquitectura de software | 8h | 2015-04-25 A | 2015-04-27 | 8 | 75% | 6d |
| 35 | 2.5 | **Especificación de la BD** | 3.4d | 2015-06-21 | 2015-06-28 |  |  | 3d |
| 36 |  | Diseño de tablas de la BD | 6h | 2015-06-21 | 2015-06-23 | 30, 26 |  | 3d |
| 37 |  | Definir tipo y volumen de datos | 3h | 2015-06-26 | 2015-06-27 | 38 |  | 3d |
| 38 |  | Relaciones entre las tablas de la BD | 3h | 2015-06-23 | 2015-06-26 | 36 |  | 3d |
| 39 |  | Definir políticas de seguridad e integridad | 5h | 2015-06-27 | 2015-06-28 | 37 |  | 3d |
| 40 | 3 | **Desarrollo** | 90.6d? | 2015-04-27 A | 2015-11-26 |  | 8% | 10.1d |
| 41 |  | Capacitación en HTML | 120h | 2015-04-27 A | 2015-06-22 | 34 | 25% | 0d |
| 42 |  | Capacitación en Java | 120h | 2015-04-27 A | 2015-06-22 | 34 | 25% | 0d |
| 43 |  | Capacitación en CSS | 120h | 2015-04-27 A | 2015-06-22 | 34 | 25% | 76.7d |
| 44 |  | Capacitación en PHP | 120h | 2015-04-27 A | 2015-06-22 | 34 | 25% | 2d |
| 45 | 3.5 | **Escribir código de Plantillas** | 63.4d? | 2015-06-22 | 2015-11-18 |  |  | 0d |
| 46 |  | Inscribirse al portal | 11h? | 2015-06-22 | 2015-06-28 | 41 |  | 0d |
| 47 |  | Autenticarse como usuario | 11h? | 2015-06-28 | 2015-07-04 | 46 |  | 0d |
| 48 |  | Modificar Usuario | 11h? | 2015-07-04 | 2015-07-09 | 47 |  | 0d |
| 49 |  | Dar de baja Usuario | 11h? | 2015-07-09 | 2015-07-12 | 48 |  | 0d |
| 50 |  | Inscribirse como emprendedor | 11h? | 2015-07-22 | 2015-07-26 | 130 |  | 0d |
| 51 |  | Aprobar inscripción como emprendedor | 11h? | 2015-08-01 | 2015-08-07 | 50 |  | 0d |
| 52 |  | Aplicar para crear emprendimiento | 11h? | 2015-08-07 | 2015-08-10 | 51 |  | 0d |
| 53 |  | Aprobar emprendimiento | 11h? | 2015-08-10 | 2015-08-16 | 52 |  | 0d |
| 54 |  | Modificar emprendimiento | 11h? | 2015-08-16 | 2015-08-22 | 53 |  | 0d |
| 55 |  | Dar de baja emprendimiento | 11h? | 2015-08-26 | 2015-08-30 | 54 |  | 0d |
| 56 |  | Solicitar asociación a emprendimiento | 11h? | 2015-09-06 | 2015-09-12 | 131 |  | 0d |
| 57 |  | Responder a inversor | 11h? | 2015-09-15 | 2015-09-20 | 56 |  | 0d |
| 58 |  | Aceptar solicitud de asociación | 11h? | 2015-09-20 | 2015-09-26 | 57 |  | 0d |
| 59 |  | Consultar información a emprendedor | 11h? | 2015-09-26 | 2015-10-02 | 58 |  | 0d |
| 60 |  | Buscar/filtrar emprendimientos | 11h? | 2015-10-04 | 2015-10-11 | 59 |  | 0d |
| 61 |  | Promocionar emprendimiento | 11h? | 2015-10-11 | 2015-10-17 | 60 |  | 0d |
| 62 |  | Configurar seguimiento de emprendimiento | 11h? | 2015-10-24 | 2015-10-30 | 132 |  | 0d |
| 63 |  | Crear Agenda | 11h? | 2015-11-01 | 2015-11-08 | 62 |  | 0d |
| 64 |  | Modificar agenda | 11h? | 2015-11-08 | 2015-11-14 | 63 |  | 0d |
| 65 |  | Difundir Mail | 11h? | 2015-11-14 | 2015-11-18 | 64 |  | 0d |
| 66 | 3.6 | **Escribir código JavaScript** | 63.4d? | 2015-06-22 | 2015-11-18 |  |  | 0d |
| 67 |  | Inscribirse al portal | 20h? | 2015-06-22 | 2015-07-04 | 42 |  | 0d |
| 68 |  | Autenticarse como usuario | 10h? | 2015-07-04 | 2015-07-06 | 67 |  | 0d |
| 69 |  | Modificar Usuario | 10h? | 2015-07-12 | 2015-07-18 | 68 |  | 0d |
| 70 |  | Dar de baja Usuario | 10h? | 2015-07-22 | 2015-07-26 | 69 |  | 0d |

| ID | WBS | Task | Duration | Start | Finish | Predecessors | Total float |
| --- | --- | --- | --- | --- | --- | --- | --- |
| 71 |  | Inscribirse como emprendedor | 10h? | 2015-08-01 | 2015-08-06 | 135 | 0d |
| 72 |  | Aprobar inscripción como emprendedor | 10h? | 2015-08-06 | 2015-08-09 | 71 | 0d |
| 73 |  | Aplicar para crear emprendimiento | 10h? | 2015-08-09 | 2015-08-15 | 72 | 0d |
| 74 |  | Aprobar emprendimiento | 10h? | 2015-08-20 | 2015-08-23 | 73 | 0d |
| 75 |  | Modificar emprendimiento | 10h? | 2015-08-23 | 2015-08-29 | 74 | 0d |
| 76 |  | Dar de baja emprendimiento | 10h? | 2015-08-29 | 2015-09-07 | 75 | 0d |
| 77 |  | Solicitar asociación a emprendimiento | 10h? | 2015-09-15 | 2015-09-20 | 136 | 0d |
| 78 |  | Responder a inversor | 10h? | 2015-09-20 | 2015-09-26 | 77 | 0d |
| 79 |  | Aceptar solicitud de asociación | 10h? | 2015-09-26 | 2015-09-29 | 78 | 0d |
| 80 |  | Consultar información a emprendedor | 10h? | 2015-10-04 | 2015-10-10 | 79 | 0d |
| 81 |  | Buscar/filtrar emprendimientos | 10h? | 2015-10-10 | 2015-10-13 | 80 | 0d |
| 82 |  | Promocionar emprendimiento | 10h? | 2015-10-13 | 2015-10-18 | 81 | 0d |
| 83 |  | Configurar seguimiento de emprendimiento | 10h? | 2015-10-25 | 2015-10-31 | 137 | 0d |
| 84 |  | Crear Agenda | 10h? | 2015-11-04 | 2015-11-08 | 83 | 0d |
| 85 |  | Modificar agenda | 10h? | 2015-11-08 | 2015-11-14 | 84 | 0d |
| 86 |  | Difundir Mail | 10h? | 2015-11-14 | 2015-11-18 | 85 | 0d |
| 87 | 3.7 | **Escribir código PHP** | 62.8d? | 2015-06-22 | 2015-11-15 |  | 0.6d |
| 88 |  | Inscribirse al portal | 9h? | 2015-06-22 | 2015-06-28 | 44 | 2d |
| 89 |  | Autenticarse como usuario | 9h? | 2015-07-19 | 2015-07-25 | 145 | 2.4d |
| 90 |  | Modificar Usuario | 9h? | 2015-07-25 | 2015-07-26 | 89 | 2.4d |
| 91 |  | Dar de baja Usuario | 9h? | 2015-07-26 | 2015-08-01 | 90 | 2.4d |
| 92 |  | Inscribirse como emprendedor | 9h? | 2015-08-01 | 2015-08-05 | 91 | 2.4d |
| 93 |  | Aprobar inscripción como emprendedor | 9h? | 2015-08-05 | 2015-08-09 | 92 | 2.4d |
| 94 |  | Aplicar para crear emprendimiento | 9h? | 2015-08-09 | 2015-08-15 | 93 | 2.4d |
| 95 |  | Aprobar emprendimiento | 9h? | 2015-08-26 | 2015-08-30 | 146 | 1.8d |
| 96 |  | Modificar emprendimiento | 9h? | 2015-08-30 | 2015-09-09 | 95 | 1.8d |
| 97 |  | Dar de baja emprendimiento | 9h? | 2015-09-09 | 2015-09-13 | 96 | 1.8d |
| 98 |  | Solicitar asociación a emprendimiento | 9h? | 2015-09-13 | 2015-09-19 | 97 | 1.8d |
| 99 |  | Responder a inversor | 9h? | 2015-09-19 | 2015-09-20 | 98 | 1.8d |
| 100 |  | Aceptar solicitud de asociación | 9h? | 2015-09-20 | 2015-09-26 | 99 | 1.8d |
| 101 |  | Consultar información a emprendedor | 9h? | 2015-10-04 | 2015-10-10 | 147 | 0.8d |
| 102 |  | Buscar/filtrar emprendimientos | 9h? | 2015-10-10 | 2015-10-14 | 101 | 0.8d |
| 103 |  | Promocionar emprendimiento | 9h? | 2015-10-14 | 2015-10-18 | 102 | 0.8d |
| 104 |  | Configurar seguimiento de emprendimiento | 9h? | 2015-10-24 | 2015-10-28 | 103 | 0.2d |
| 105 |  | Crear Agenda | 9h? | 2015-11-04 | 2015-11-08 | 148 | 0.6d |
| 106 |  | Modificar agenda | 9h? | 2015-11-08 | 2015-11-14 | 105 | 0.6d |
| 107 |  | Difundir Mail | 9h? | 2015-11-14 | 2015-11-15 | 106 | 0.6d |
| 108 | 3.8 | **Escribir script de la base de datos** | 58.2d? | 2015-06-28 | 2015-11-12 |  | 2.8d |
| 109 |  | Inscribirse al portal | 9h? | 2015-06-28 | 2015-07-04 | 39 | 3d |
| 110 |  | Autenticarse como usuario | 9h? | 2015-07-04 | 2015-07-06 | 109 | 3d |
| 111 |  | Modificar Usuario | 9h? | 2015-07-06 | 2015-07-12 | 110 | 3d |
| 112 |  | Dar de baja Usuario | 9h? | 2015-07-12 | 2015-07-16 | 111 | 3d |
| 113 |  | Inscribirse como emprendedor | 11h? | 2015-07-28 | 2015-08-04 | 140 | 3d |
| 114 |  | Aprobar inscripción como emprendedor | 9h? | 2015-08-04 | 2015-08-09 | 113 | 3d |
| 115 |  | Aplicar para crear emprendimiento | 9h? | 2015-08-09 | 2015-08-14 | 114 | 3d |
| 116 |  | Aprobar emprendimiento | 9h? | 2015-08-14 | 2015-08-16 | 115 | 3d |
| 117 |  | Modificar emprendimiento | 9h? | 2015-08-16 | 2015-08-22 | 116 | 3d |
| 118 |  | Dar de baja emprendimiento | 9h? | 2015-08-22 | 2015-08-25 | 117 | 3d |
| 119 |  | Solicitar asociación a emprendimiento | 11h? | 2015-09-11 | 2015-09-18 | 141 | 3d |
| 120 |  | Responder a inversor | 9h? | 2015-09-18 | 2015-09-20 | 119 | 3d |
| 121 |  | Aceptar solicitud de asociación | 9h? | 2015-09-20 | 2015-09-26 | 120 | 3d |
| 122 |  | Consultar información a emprendedor | 9h? | 2015-09-26 | 2015-09-29 | 121 | 3d |
| 123 |  | Buscar/filtrar emprendimientos | 9h? | 2015-09-29 | 2015-10-04 | 122 | 3d |
| 124 |  | Promocionar emprendimiento | 9h? | 2015-10-04 | 2015-10-09 | 123 | 3d |
| 125 |  | Configurar seguimiento de emprendimiento | 9h? | 2015-10-25 | 2015-10-31 | 142 | 2.8d |
| 126 |  | Crear Agenda | 9h? | 2015-10-31 | 2015-11-02 | 125 | 2.8d |
| 127 |  | Modificar agenda | 9h? | 2015-11-02 | 2015-11-08 | 126 | 2.8d |
| 128 |  | Difundir Mail | 9h? | 2015-11-08 | 2015-11-12 | 127 | 2.8d |
| 129 | 3.9 | **Revisión de pares de Plantillas** | 57d? | 2015-07-12 | 2015-11-22 |  | 0d |
| 130 |  | Revision 1 | 18h? | 2015-07-12 | 2015-07-22 | 49 | 0d |
| 131 |  | Revision 2 | 12h? | 2015-08-30 | 2015-09-06 | 55 | 0d |
| 132 |  | Revision 3 | 12h? | 2015-10-18 | 2015-10-24 | 61 | 0d |
| 133 |  | Revision 4 | 12h? | 2015-11-18 | 2015-11-22 | 65 | 10.9d |
| 134 | 3.10 | **Revisión de pares de JavaScript** | 51d? | 2015-07-26 | 2015-11-22 |  | 0d |
| 135 |  | Revision 1 | 11h? | 2015-07-26 | 2015-08-01 | 70 | 0d |
| 136 |  | Revision 2 | 16h? | 2015-09-07 | 2015-09-15 | 76 | 0d |
| 137 |  | Revision 3 | 10h? | 2015-10-18 | 2015-10-24 | 82 | 0d |
| 138 |  | Revision 4 | 10h? | 2015-11-18 | 2015-11-22 | 86 | 7.4d |
| 139 | 3.11 | **Revisión de pares de la base de datos** | 55.8d? | 2015-07-19 | 2015-11-26 |  | 3d |
| 140 |  | Revision 1 | 8h? | 2015-07-19 | 2015-07-28 | 112 | 3d |

| ID | WBS | Task | Duration | Start | Finish | Predecessors | Total float | Constraint |
| --- | --- | --- | --- | --- | --- | --- | --- | --- |
| 141 |  | Revision 2 | 8h? | 2015-08-30 | 2015-09-11 | 118 | 3d |  |
| 142 |  | Revision 3 | 8h? | 2015-10-17 | 2015-10-25 | 124 | 2.8d |  |
| 143 |  | Revision 4 | 6h? | 2015-11-22 | 2015-11-26 | 128 | 6.2d |  |
| 144 | 3.12 | **Revisión de pares de PHP** | 51.4d? | 2015-07-06 | 2015-11-04 |  | 0.6d |  |
| 145 |  | Revision 1 | 20h? | 2015-07-06 | 2015-07-19 | 88 | 2.4d |  |
| 146 |  | Revision 2 | 20h? | 2015-08-15 | 2015-08-26 | 94 | 1.8d |  |
| 147 |  | Revision 3 | 13h? | 2015-09-29 | 2015-10-04 | 100 | 0.8d |  |
| 148 |  | Revision 4 | 13h? | 2015-10-30 | 2015-11-04 | 104 | 0.6d |  |
| 149 | 3.13 | **Promoción** | 3.6d | 2015-07-22 | 2015-08-01 |  | 59.4d |  |
| 150 |  | Realizar presentación comercial | 10h | 2015-07-26 | 2015-08-01 | 151 | 60.7d |  |
| 151 |  | Realizar poster comercial | 8h | 2015-07-22 | 2015-07-26 | 31 | 59.4d | start no earlier than 2015-07-22 |
| 152 | 4 | **Testing** | 74.4d | 2015-06-21 | 2015-12-12 |  | 3.3d |  |
| 153 |  | Armar el plan de pruebas | 8h | 2015-06-28 | 2015-07-04 | 154 | 72.7d |  |
| 154 |  | Definir los casos de prueba | 14h | 2015-06-21 | 2015-06-28 | 26, 30 | 70.4d |  |
| 155 |  | Ejecutar los casos de prueba | 40h | 2015-11-18 | 2015-12-06 | 45, 66, 87, 108 | 0d |  |
| 156 |  | Documentar resultados de las pruebas | 10h | 2015-12-06 | 2015-12-12 | 155 | 0d |  |
| 157 | 5 | **Manuales** | 0.6d | 2015-11-26 | 2015-11-28 |  | 6.2d |  |
| 158 |  | Redactar manual de instalación | 3h | 2015-11-26 | 2015-11-28 | 134, 139, 154 | 6.2d |  |
| 159 | 6 | **Finalización del Proyecto** | 3.3d | 2015-12-12 | 2015-12-19 |  | 0d |  |
| 160 |  | Reflexionar sobre la experiencia realizada | 1.5h | 2015-12-12 | 2015-12-12 | 158, 156, 6, 12, 15, 17, 19, 21, 26, 30, 32, 34, 39, 144, 151 | 0d |  |
| 161 |  | Analizar errores cometidos | 3h | 2015-12-12 | 2015-12-13 | 160 | 0d |  |
| 162 |  | Documentación de cierre de proyecto | 6h | 2015-12-13 | 2015-12-16 | 161 | 0d |  |
| 163 |  | Cerrar el proyecto | 6h | 2015-12-16 | 2015-12-19 | 162 | 0d |  |

## Version 2 (data date 2015-06-07, saved 2015-07-08, file Gantt3.mpp)

Note of the change: Gantt

Last finish 2015-12-19 → 2015-11-21 (-28d). Complete tasks 10 → 14.

Added:

| ID | Task | Duration | Start | Finish | Predecessors | Resources |
| --- | --- | --- | --- | --- | --- | --- |
| 41 | Inicio Capacitación en HTML | 20h | 2015-04-27 A | 2015-05-11 A | 34 | Tiberti-DESAROLLADOR |
| 42 | Inicio Capacitación en Java | 20h | 2015-04-27 A | 2015-05-11 A | 34 | Croci-DESAROLLADOR |
| 43 | Inicio Capacitación en CSS | 20h | 2015-04-27 A | 2015-05-11 A | 34 | Budic-DESAROLLADOR |
| 44 | Inicio Capacitación en PHP | 20h | 2015-04-27 A | 2015-05-11 A | 34 | Rodriguez-DESAROLLADOR |

Changed:

| ID | Task | Start | Finish | Duration | Complete | Total float | Predecessors |
| --- | --- | --- | --- | --- | --- | --- | --- |
| 22 | **Diseño** |  |  |  | 36% → 71% | 69.4d → 59.2d |  |
| 23 | **Casos de Uso** |  |  |  | 44% → 90% | 3d → 5.6d |  |
| 24 | Identificar actores y funcionalidades |  |  |  | 75% → 90% | 0.8d → 1.28d |  |
| 25 | Describir casos de uso |  |  |  | 25% → 90% | 0d → 0.12d |  |
| 26 | Describir las relaciones entre los actores y casos de uso |  |  |  | 75% → 90% | 3d → 5.6d |  |
| 27 | **DER** |  |  |  | 36% → 58% | 3.2d → 1.5d |  |
| 28 | Definir entidades y sus atributos |  |  |  | 50% → 80% | 8d → 8.48d |  |
| 29 | Describir las relaciones entre las entidades |  |  |  | 50% → 80% | 3.2d → 1.5d |  |
| 31 | **Maqueta del Front-End** | 2015-06-21 A |  |  | 0% → 75% | 71d → 59.2d |  |
| 32 | Diseñar disposición de elementos estéticamente | 2015-06-21 A |  |  | 0% → 75% | 71d → 59.2d |  |
| 40 | **Desarrollo** |  | 2015-11-26 → 2015-11-14 (-12d) | 90.6d? → 85.4d? | 8% → 7% | 10.1d → 2.9d |  |
| 45 | Capacitación en HTML | 2015-04-27 A → 2015-05-09 A (+12d) |  | 120h → 80h | 25% → 13% | 0d → 64.3d | 34 → 41 |
| 46 | Capacitación en Java | 2015-04-27 A → 2015-05-11 (+14d) | 2015-06-22 → 2015-05-17 (-36d) | 120h → 10h | 25% → 0% | 0d → 80.3d | 34 → 42 |
| 47 | Capacitación en CSS | 2015-04-27 A → 2015-05-09 A (+12d) | 2015-06-22 → 2015-11-14 (+145d) | 120h → 80h | 25% → 6% | 76.7d → 2.9d | 34 → 43 |
| 48 | Capacitación en PHP | 2015-04-27 A → 2015-05-11 (+14d) | 2015-06-22 → 2015-06-14 (-8d) | 120h → 70h | 25% → 0% | 2d → 68.3d | 34 → 44 |
| 49 | **Escribir código de Plantillas** | 2015-06-22 → 2015-05-11 (-42d) | 2015-11-18 → 2015-10-25 (-24d) | 63.4d? → 71.6d? |  |  |  |
| 50 | Inscribirse al portal | 2015-06-22 → 2015-05-11 (-42d) | 2015-06-28 → 2015-05-17 (-42d) | 11h? → 10h |  |  | 45 → 41, 43 |
| 51 | Autenticarse como usuario | 2015-06-28 → 2015-05-17 (-42d) | 2015-07-04 → 2015-05-23 (-42d) | 11h? → 10h? |  |  |  |
| 52 | Modificar Usuario | 2015-07-04 → 2015-06-01 (-33d) | 2015-07-09 → 2015-06-07 (-32d) | 11h? → 10h? |  |  |  |
| 53 | Dar de baja Usuario | 2015-07-09 → 2015-06-07 (-32d) | 2015-07-12 → 2015-06-13 (-29d) | 11h? → 10h? |  |  |  |
| 54 | Inscribirse como emprendedor | 2015-07-22 → 2015-07-11 (-11d) | 2015-07-26 → 2015-07-15 (-11d) | 11h? → 10h? |  |  |  |
| 55 | Aprobar inscripción como emprendedor | 2015-08-01 → 2015-07-15 (-17d) | 2015-08-07 → 2015-07-19 (-19d) | 11h? → 10h? |  |  |  |
| 56 | Aplicar para crear emprendimiento | 2015-08-07 → 2015-07-21 (-17d) | 2015-08-10 → 2015-07-26 (-15d) | 11h? → 10h? |  |  |  |
| 57 | Aprobar emprendimiento | 2015-08-10 → 2015-08-01 (-9d) | 2015-08-16 → 2015-08-04 (-12d) | 11h? → 10h? |  |  |  |
| 58 | Modificar emprendimiento | 2015-08-16 → 2015-08-04 (-12d) | 2015-08-22 → 2015-08-09 (-13d) | 11h? → 10h? |  |  |  |
| 59 | Dar de baja emprendimiento | 2015-08-26 → 2015-08-09 (-17d) | 2015-08-30 → 2015-08-15 (-15d) | 11h? → 10h? |  |  |  |
| 60 | Solicitar asociación a emprendimiento | 2015-09-06 → 2015-08-20 (-17d) | 2015-09-12 → 2015-08-23 (-20d) | 11h? → 10h? |  |  |  |
| 61 | Responder a inversor | 2015-09-15 → 2015-08-29 (-17d) | 2015-09-20 → 2015-09-01 (-19d) | 11h? → 10h? |  |  |  |
| 62 | Aceptar solicitud de asociación | 2015-09-20 → 2015-09-01 (-19d) | 2015-09-26 → 2015-09-06 (-20d) | 11h? → 10h? |  |  |  |
| 63 | Consultar información a emprendedor | 2015-09-26 → 2015-09-12 (-14d) | 2015-10-02 → 2015-09-15 (-17d) | 11h? → 10h? |  |  |  |
| 64 | Buscar/filtrar emprendimientos | 2015-10-04 → 2015-09-15 (-19d) | 2015-10-11 → 2015-09-20 (-21d) | 11h? → 10h? |  |  |  |
| 65 | Promocionar emprendimiento | 2015-10-11 → 2015-09-20 (-21d) | 2015-10-17 → 2015-09-26 (-21d) | 11h? → 10h? |  |  |  |
| 66 | Configurar seguimiento de emprendimiento | 2015-10-24 → 2015-10-03 (-21d) | 2015-10-30 → 2015-10-05 (-25d) | 11h? → 10h? |  |  |  |
| 67 | Crear Agenda | 2015-11-01 → 2015-10-11 (-21d) | 2015-11-08 → 2015-10-17 (-22d) | 11h? → 10h? |  |  |  |
| 68 | Modificar agenda | 2015-11-08 → 2015-10-17 (-22d) | 2015-11-14 → 2015-10-22 (-23d) | 11h? → 10h? |  |  |  |
| 69 | Difundir Mail | 2015-11-14 → 2015-10-22 (-23d) | 2015-11-18 → 2015-10-25 (-24d) | 11h? → 10h? |  |  |  |
| 70 | **Escribir código JavaScript** | 2015-06-22 → 2015-05-17 (-36d) | 2015-11-18 → 2015-10-24 (-25d) | 63.4d? → 68.6d? |  | 0d → 1d |  |
| 71 | Inscribirse al portal | 2015-06-22 → 2015-05-17 (-36d) | 2015-07-04 → 2015-05-23 (-42d) | 20h? → 12h? |  | 0d → 1.2d | 46 → 42 |
| 72 | Autenticarse como usuario | 2015-07-04 → 2015-05-23 (-42d) | 2015-07-06 → 2015-05-27 (-40d) |  |  | 0d → 1.2d |  |
| 73 | Modificar Usuario | 2015-07-12 → 2015-05-27 (-46d) | 2015-07-18 → 2015-05-31 (-48d) |  |  | 0d → 1.2d |  |
| 74 | Dar de baja Usuario | 2015-07-22 → 2015-05-31 (-52d) | 2015-07-26 → 2015-06-06 (-50d) |  |  | 0d → 1.2d |  |
| 75 | Inscribirse como emprendedor | 2015-08-01 → 2015-06-28 (-34d) | 2015-08-06 → 2015-07-04 (-33d) |  |  | 0d → 1.2d |  |
| 76 | Aprobar inscripción como emprendedor | 2015-08-06 → 2015-07-04 (-33d) | 2015-08-09 → 2015-07-06 (-34d) |  |  | 0d → 1.2d |  |
| 77 | Aplicar para crear emprendimiento | 2015-08-09 → 2015-07-06 (-34d) | 2015-08-15 → 2015-07-12 (-34d) |  |  | 0d → 1.2d |  |
| 78 | Aprobar emprendimiento | 2015-08-20 → 2015-07-12 (-39d) | 2015-08-23 → 2015-07-19 (-35d) |  |  | 0d → 1.2d |  |
| 79 | Modificar emprendimiento | 2015-08-23 → 2015-07-19 (-35d) | 2015-08-29 → 2015-07-26 (-34d) |  |  | 0d → 1.2d |  |
| 80 | Dar de baja emprendimiento | 2015-08-29 → 2015-07-26 (-34d) | 2015-09-07 → 2015-08-02 (-36d) |  |  | 0d → 1.2d |  |
| 81 | Solicitar asociación a emprendimiento | 2015-09-15 → 2015-08-20 (-26d) | 2015-09-20 → 2015-08-23 (-28d) |  |  | 0d → 1d |  |
| 82 | Responder a inversor | 2015-09-20 → 2015-08-26 (-25d) | 2015-09-26 → 2015-08-30 (-27d) |  |  | 0d → 1.6d |  |
| 83 | Aceptar solicitud de asociación | 2015-09-26 → 2015-08-30 (-27d) | 2015-09-29 → 2015-09-05 (-24d) |  |  | 0d → 1.6d |  |
| 84 | Consultar información a emprendedor | 2015-10-04 → 2015-09-09 (-25d) | 2015-10-10 → 2015-09-13 (-27d) |  |  | 0d → 0.4d |  |
| 85 | Buscar/filtrar emprendimientos | 2015-10-10 → 2015-09-13 (-27d) | 2015-10-13 → 2015-09-19 (-24d) |  |  | 0d → 0.4d |  |
| 86 | Promocionar emprendimiento | 2015-10-13 → 2015-09-19 (-24d) | 2015-10-18 → 2015-09-23 (-25d) |  |  | 0d → 0.4d |  |
| 87 | Configurar seguimiento de emprendimiento | 2015-10-25 → 2015-10-01 (-24d) | 2015-10-31 → 2015-10-04 (-27d) |  |  | 0d → 0.4d |  |
| 88 | Crear Agenda | 2015-11-04 → 2015-10-10 (-25d) | 2015-11-08 → 2015-10-15 (-24d) |  |  | 0d → 1d |  |
| 89 | Modificar agenda | 2015-11-08 → 2015-10-15 (-24d) | 2015-11-14 → 2015-10-18 (-27d) |  |  | 0d → 1d |  |
| 90 | Difundir Mail | 2015-11-14 → 2015-10-18 (-27d) | 2015-11-18 → 2015-10-24 (-25d) |  |  | 0d → 1d |  |
| 91 | **Escribir código PHP** | 2015-06-22 → 2015-06-14 (-8d) | 2015-11-15 → 2015-10-24 (-22d) | 62.8d? → 56.4d? |  | 0.6d → 1.2d |  |
| 92 | Inscribirse al portal | 2015-06-22 → 2015-06-14 (-8d) | 2015-06-28 → 2015-06-19 (-9d) |  |  | 2d → 1.6d | 48 → 44 |
| 93 | Autenticarse como usuario | 2015-07-19 → 2015-06-21 (-28d) | 2015-07-25 → 2015-06-27 (-28d) |  |  | 2.4d → 1.6d |  |
| 94 | Modificar Usuario | 2015-07-25 → 2015-06-28 (-27d) | 2015-07-26 → 2015-07-03 (-23d) |  |  | 2.4d → 1.2d |  |
| 95 | Dar de baja Usuario | 2015-07-26 → 2015-07-03 (-23d) | 2015-08-01 → 2015-07-05 (-27d) |  |  | 2.4d → 1.2d |  |
| 96 | Inscribirse como emprendedor | 2015-08-01 → 2015-07-05 (-27d) | 2015-08-05 → 2015-07-11 (-25d) |  |  | 2.4d → 1.2d |  |
| 97 | Aprobar inscripción como emprendedor | 2015-08-05 → 2015-07-11 (-25d) | 2015-08-09 → 2015-07-14 (-26d) |  |  | 2.4d → 1.2d |  |
| 98 | Aplicar para crear emprendimiento | 2015-08-09 → 2015-07-14 (-26d) | 2015-08-15 → 2015-07-19 (-27d) |  |  | 2.4d → 1.2d |  |
| 99 | Aprobar emprendimiento | 2015-08-26 → 2015-08-01 (-25d) | 2015-08-30 → 2015-08-03 (-27d) |  |  | 1.8d → 1.2d |  |
| 100 | Modificar emprendimiento | 2015-08-30 → 2015-08-03 (-27d) | 2015-09-09 → 2015-08-09 (-31d) |  |  | 1.8d → 1.2d |  |
| 101 | Dar de baja emprendimiento | 2015-09-09 → 2015-08-09 (-31d) | 2015-09-13 → 2015-08-13 (-31d) |  |  | 1.8d → 1.2d |  |
| 102 | Solicitar asociación a emprendimiento | 2015-09-13 → 2015-08-13 (-31d) | 2015-09-19 → 2015-08-23 (-27d) |  |  | 1.8d → 1.2d |  |
| 103 | Responder a inversor | 2015-09-19 → 2015-08-23 (-27d) | 2015-09-20 → 2015-08-27 (-24d) |  |  | 1.8d → 1.2d |  |

| ID | Task | Start | Finish | Duration | Total float |
| --- | --- | --- | --- | --- | --- |
| 104 | Aceptar solicitud de asociación | 2015-09-20 → 2015-08-27 (-24d) | 2015-09-26 → 2015-08-30 (-27d) |  | 1.8d → 1.2d |
| 105 | Consultar información a emprendedor | 2015-10-04 → 2015-09-12 (-22d) | 2015-10-10 → 2015-09-14 (-26d) |  | 0.8d → 2d |
| 106 | Buscar/filtrar emprendimientos | 2015-10-10 → 2015-09-14 (-26d) | 2015-10-14 → 2015-09-20 (-24d) |  | 0.8d → 2d |
| 107 | Promocionar emprendimiento | 2015-10-14 → 2015-09-20 (-24d) | 2015-10-18 → 2015-09-24 (-24d) |  | 0.8d → 2d |
| 108 | Configurar seguimiento de emprendimiento | 2015-10-24 → 2015-09-24 (-30d) | 2015-10-28 → 2015-10-04 (-24d) |  | 0.2d → 2d |
| 109 | Crear Agenda | 2015-11-04 → 2015-10-11 (-24d) | 2015-11-08 → 2015-10-16 (-23d) |  | 0.6d → 1.2d |
| 110 | Modificar agenda | 2015-11-08 → 2015-10-16 (-23d) | 2015-11-14 → 2015-10-18 (-27d) |  | 0.6d → 1.2d |
| 111 | Difundir Mail | 2015-11-14 → 2015-10-18 (-27d) | 2015-11-15 → 2015-10-24 (-22d) |  | 0.6d → 1.2d |
| 112 | **Escribir script de la base de datos** |  | 2015-11-12 → 2015-10-18 (-25d) | 58.2d? → 47.8d? | 2.8d → 3.4d |
| 117 | Inscribirse como emprendedor | 2015-07-28 → 2015-07-21 (-7d) | 2015-08-04 → 2015-07-26 (-9d) | 11h? → 9h? | 3d → 5.6d |
| 118 | Aprobar inscripción como emprendedor | 2015-08-04 → 2015-07-26 (-9d) | 2015-08-09 → 2015-07-31 (-9d) |  | 3d → 5.6d |
| 119 | Aplicar para crear emprendimiento | 2015-08-09 → 2015-07-31 (-9d) | 2015-08-14 → 2015-08-02 (-12d) |  | 3d → 5.6d |
| 120 | Aprobar emprendimiento | 2015-08-14 → 2015-08-02 (-12d) | 2015-08-16 → 2015-08-08 (-8d) |  | 3d → 5.6d |
| 121 | Modificar emprendimiento | 2015-08-16 → 2015-08-08 (-8d) | 2015-08-22 → 2015-08-16 (-6d) | 9h? → 11h? | 3d → 5.6d |
| 122 | Dar de baja emprendimiento | 2015-08-22 → 2015-08-16 (-6d) | 2015-08-25 → 2015-08-22 (-3d) |  | 3d → 5.6d |
| 123 | Solicitar asociación a emprendimiento | 2015-09-11 → 2015-08-26 (-16d) | 2015-09-18 → 2015-08-30 (-19d) | 11h? → 9h? | 3d → 4d |
| 124 | Responder a inversor | 2015-09-18 → 2015-08-30 (-19d) | 2015-09-20 → 2015-09-05 (-15d) |  | 3d → 4d |
| 125 | Aceptar solicitud de asociación | 2015-09-20 → 2015-09-05 (-15d) | 2015-09-26 → 2015-09-06 (-20d) |  | 3d → 4d |
| 126 | Consultar información a emprendedor | 2015-09-26 → 2015-09-06 (-20d) | 2015-09-29 → 2015-09-12 (-17d) |  | 3d → 4d |
| 127 | Buscar/filtrar emprendimientos | 2015-09-29 → 2015-09-12 (-17d) | 2015-10-04 → 2015-09-16 (-18d) |  | 3d → 4d |
| 128 | Promocionar emprendimiento | 2015-10-04 → 2015-09-16 (-18d) | 2015-10-09 → 2015-09-20 (-19d) |  | 3d → 4d |
| 129 | Configurar seguimiento de emprendimiento | 2015-10-25 → 2015-10-03 (-22d) | 2015-10-31 → 2015-10-04 (-27d) |  | 2.8d → 3.4d |
| 130 | Crear Agenda | 2015-10-31 → 2015-10-04 (-27d) | 2015-11-02 → 2015-10-10 (-23d) |  | 2.8d → 3.4d |
| 131 | Modificar agenda | 2015-11-02 → 2015-10-10 (-23d) | 2015-11-08 → 2015-10-14 (-25d) |  | 2.8d → 3.4d |
| 132 | Difundir Mail | 2015-11-08 → 2015-10-14 (-25d) | 2015-11-12 → 2015-10-18 (-25d) |  | 2.8d → 3.4d |
| 133 | **Revisión de pares de Plantillas** | 2015-07-12 → 2015-06-13 (-29d) | 2015-11-22 → 2015-11-01 (-21d) | 57d? → 61d? |  |
| 134 | Revision 1 | 2015-07-12 → 2015-06-13 (-29d) | 2015-07-22 → 2015-06-28 (-24d) | 18h? → 24h? |  |
| 135 | Revision 2 | 2015-08-30 → 2015-08-15 (-15d) | 2015-09-06 → 2015-08-20 (-17d) |  |  |
| 136 | Revision 3 | 2015-10-18 → 2015-09-26 (-22d) | 2015-10-24 → 2015-10-01 (-23d) |  |  |
| 137 | Revision 4 | 2015-11-18 → 2015-10-25 (-24d) | 2015-11-22 → 2015-11-01 (-21d) |  | 10.9d → 8.3d |
| 138 | **Revisión de pares de JavaScript** | 2015-07-26 → 2015-06-13 (-43d) | 2015-11-22 → 2015-10-31 (-22d) | 51d? → 60.6d? | 0d → 1.2d |
| 139 | Revision 1 | 2015-07-26 → 2015-06-13 (-43d) | 2015-08-01 → 2015-06-28 (-34d) | 11h? → 20h? | 0d → 1.2d |
| 140 | Revision 2 | 2015-09-07 → 2015-08-08 (-30d) | 2015-09-15 → 2015-08-18 (-28d) | 16h? → 20h? | 0d → 0.4d |
| 141 | Revision 3 | 2015-10-18 → 2015-09-23 (-25d) | 2015-10-24 → 2015-09-29 (-25d) | 10h? → 14h? | 0d → 0.4d |
| 142 | Revision 4 | 2015-11-18 → 2015-10-24 (-25d) | 2015-11-22 → 2015-10-31 (-22d) | 10h? → 15h? | 7.4d → 5.6d |
| 143 | **Revisión de pares de la base de datos** | 2015-07-19 → 2015-07-16 (-3d) | 2015-11-26 → 2015-11-01 (-25d) | 55.8d? → 46.8d? | 3d → 4.8d |
| 144 | Revision 1 | 2015-07-19 → 2015-07-16 (-3d) | 2015-07-28 → 2015-07-21 (-7d) |  | 3d → 5.6d |
| 145 | Revision 2 | 2015-08-30 → 2015-08-23 (-7d) | 2015-09-11 → 2015-08-26 (-16d) | 8h? → 4h? | 3d → 4d |
| 146 | Revision 3 | 2015-10-17 → 2015-09-23 (-24d) | 2015-10-25 → 2015-10-03 (-22d) |  | 2.8d → 3.4d |
| 147 | Revision 4 | 2015-11-22 → 2015-10-24 (-29d) | 2015-11-26 → 2015-11-01 (-25d) | 6h? → 8h? | 6.2d → 4.8d |
| 148 | **Revisión de pares de PHP** | 2015-07-06 → 2015-06-19 (-17d) | 2015-11-04 → 2015-10-11 (-24d) | 51.4d? → 49.2d? | 0.6d → 1.2d |
| 149 | Revision 1 | 2015-07-06 → 2015-06-19 (-17d) | 2015-07-19 → 2015-06-21 (-28d) | 20h? → 10h? | 2.4d → 1.6d |
| 150 | Revision 2 | 2015-08-15 → 2015-07-19 (-27d) | 2015-08-26 → 2015-08-01 (-25d) |  | 1.8d → 1.2d |
| 151 | Revision 3 | 2015-09-29 → 2015-09-05 (-24d) | 2015-10-04 → 2015-09-12 (-22d) | 13h? → 14h? | 0.8d → 2d |
| 152 | Revision 4 | 2015-10-30 → 2015-10-04 (-26d) | 2015-11-04 → 2015-10-11 (-24d) | 13h? → 12h? | 0.6d → 1.2d |
| 156 | **Testing** |  | 2015-12-12 → 2015-11-14 (-28d) | 74.4d → 62.6d | 3.3d → 2.7d |
| 159 | Ejecutar los casos de prueba | 2015-11-18 → 2015-10-25 (-24d) | 2015-12-06 → 2015-11-08 (-28d) | 40h → 30h |  |
| 160 | Documentar resultados de las pruebas | 2015-12-06 → 2015-11-08 (-28d) | 2015-12-12 → 2015-11-14 (-28d) |  |  |
| 161 | **Manuales** | 2015-11-26 → 2015-11-01 (-25d) | 2015-11-28 → 2015-11-01 (-27d) | 0.6d → 0.4d | 6.2d → 4.8d |
| 162 | Redactar manual de instalación | 2015-11-26 → 2015-11-01 (-25d) | 2015-11-28 → 2015-11-01 (-27d) | 3h → 2h | 6.2d → 4.8d |
| 163 | **Finalización del Proyecto** | 2015-12-12 → 2015-11-14 (-28d) | 2015-12-19 → 2015-11-21 (-28d) | 3.3d → 2.7d |  |
| 164 | Reflexionar sobre la experiencia realizada | 2015-12-12 → 2015-11-14 (-28d) | 2015-12-12 → 2015-11-14 (-28d) | 1.5h → 0.5h |  |
| 165 | Analizar errores cometidos | 2015-12-12 → 2015-11-14 (-28d) | 2015-12-13 → 2015-11-15 (-28d) | 3h → 1h |  |
| 166 | Documentación de cierre de proyecto | 2015-12-13 → 2015-11-15 (-28d) | 2015-12-16 → 2015-11-16 (-30d) |  |  |
| 167 | Cerrar el proyecto | 2015-12-16 → 2015-11-16 (-30d) | 2015-12-19 → 2015-11-21 (-28d) |  |  |

## Version 3 (data date 2015-06-07, saved 2015-09-16, file Gantt3.mpp)

Note of the change: cosas que no se habian comitteado (DER)

Last finish stays 2015-11-21. Complete tasks 14 → 48.

Changed:

| ID | Task | Start | Finish | Complete | Total float |
| --- | --- | --- | --- | --- | --- |
| 1 | **Análisis** |  |  | 89% → 97% |  |
| 7 | **Planificación** |  |  | 81% → 94% |  |
| 8 | Identificar las tareas para cada entregable |  | 2015-04-25 A | 80% → 100% | 0.64d → none |
| 9 | Definir las precedencias |  | 2015-04-26 A | 80% → 100% | 0.48d → none |
| 10 | Estimar los tiempos de cada tarea |  | 2015-04-26 A | 80% → 100% | 4.4d → none |
| 12 | Realizar diagrama de Gantt |  |  | 80% → 90% |  |
| 22 | **Diseño** |  |  | 71% → 91% | 59.2d → 61.9d |
| 23 | **Casos de Uso** |  |  | 90% → 94% | 5.6d → 65.3d |
| 24 | Identificar actores y funcionalidades |  | 2015-05-24 A | 90% → 100% | 1.28d → none |
| 26 | Describir las relaciones entre los actores y casos de uso |  | 2015-06-21 A | 90% → 100% | 5.6d → none |
| 27 | **DER** |  | 2015-06-21 A | 58% → 100% | 1.5d → none |
| 28 | Definir entidades y sus atributos |  | 2015-05-29 A | 80% → 100% | 8.48d → none |
| 29 | Describir las relaciones entre las entidades |  | 2015-06-18 A | 80% → 100% | 1.5d → none |
| 30 | Normalizar DER | 2015-06-18 A | 2015-06-21 A | 0% → 100% | 1.5d → none |
| 35 | **Especificación de la BD** | 2015-06-21 A |  | 0% → 85% | 5.6d → 59.2d |
| 36 | Diseño de tablas de la BD | 2015-06-21 A | 2015-06-23 A | 0% → 100% | 5.6d → none |
| 37 | Definir tipo y volumen de datos | 2015-06-26 A | 2015-06-27 A | 0% → 100% | 5.6d → none |
| 38 | Relaciones entre las tablas de la BD | 2015-06-23 A | 2015-06-26 A | 0% → 100% | 5.6d → none |
| 39 | Definir políticas de seguridad e integridad | 2015-06-27 A |  | 0% → 50% | 5.6d → 59.2d |
| 40 | **Desarrollo** |  |  | 7% → 39% |  |
| 45 | Capacitación en HTML |  |  | 13% → 60% |  |
| 46 | Capacitación en Java | 2015-05-11 A |  | 0% → 60% |  |
| 47 | Capacitación en CSS |  |  | 6% → 60% |  |
| 48 | Capacitación en PHP | 2015-05-11 A |  | 0% → 60% |  |
| 49 | **Escribir código de Plantillas** | 2015-05-11 A |  | 0% → 30% |  |
| 50 | Inscribirse al portal | 2015-05-11 A | 2015-05-17 A | 0% → 100% | 0d → none |
| 51 | Autenticarse como usuario | 2015-05-17 A | 2015-05-23 A | 0% → 100% | 0d → none |
| 52 | Modificar Usuario | 2015-06-01 A | 2015-06-07 A | 0% → 100% | 0d → none |
| 53 | Dar de baja Usuario | 2015-06-07 A | 2015-06-13 A | 0% → 100% | 0d → none |
| 54 | Inscribirse como emprendedor | 2015-07-11 A | 2015-07-15 A | 0% → 100% | 0d → none |
| 55 | Aprobar inscripción como emprendedor | 2015-07-15 A | 2015-07-19 A | 0% → 100% | 0d → none |
| 70 | **Escribir código JavaScript** | 2015-05-17 A |  | 0% → 26% |  |
| 71 | Inscribirse al portal | 2015-05-17 A | 2015-05-23 A | 0% → 100% | 1.2d → none |
| 72 | Autenticarse como usuario | 2015-05-23 A | 2015-05-27 A | 0% → 100% | 1.2d → none |
| 73 | Modificar Usuario | 2015-05-27 A | 2015-05-31 A | 0% → 100% | 1.2d → none |
| 74 | Dar de baja Usuario | 2015-05-31 A | 2015-06-06 A | 0% → 100% | 1.2d → none |
| 75 | Inscribirse como emprendedor | 2015-06-28 A | 2015-07-04 A | 0% → 100% | 1.2d → none |
| 91 | **Escribir código PHP** | 2015-06-14 A |  | 0% → 25% |  |
| 92 | Inscribirse al portal | 2015-06-14 A | 2015-06-19 A | 0% → 100% | 1.6d → none |
| 93 | Autenticarse como usuario | 2015-06-21 A | 2015-06-27 A | 0% → 100% | 1.6d → none |
| 94 | Modificar Usuario | 2015-06-28 A | 2015-07-03 A | 0% → 100% | 1.2d → none |
| 95 | Dar de baja Usuario | 2015-07-03 A | 2015-07-05 A | 0% → 100% | 1.2d → none |
| 96 | Inscribirse como emprendedor | 2015-07-05 A | 2015-07-11 A | 0% → 100% | 1.2d → none |
| 112 | **Escribir script de la base de datos** | 2015-06-28 A |  | 0% → 25% |  |
| 113 | Inscribirse al portal | 2015-06-28 A | 2015-07-04 A | 0% → 100% | 5.6d → none |
| 114 | Autenticarse como usuario | 2015-07-04 A | 2015-07-06 A | 0% → 100% | 5.6d → none |
| 115 | Modificar Usuario | 2015-07-06 A | 2015-07-12 A | 0% → 100% | 5.6d → none |
| 116 | Dar de baja Usuario | 2015-07-12 A | 2015-07-16 A | 0% → 100% | 5.6d → none |
| 117 | Inscribirse como emprendedor | 2015-07-21 A | 2015-07-26 A | 0% → 100% | 5.6d → none |
| 133 | **Revisión de pares de Plantillas** | 2015-06-13 A |  | 0% → 40% | 0d → 8.3d |
| 134 | Revision 1 | 2015-06-13 A |  | 0% → 80% | 0d → 62.3d |
| 135 | Revision 2 | 2015-08-15 A |  | 0% → 40% |  |
| 138 | **Revisión de pares de JavaScript** | 2015-06-13 A |  | 0% → 35% | 1.2d → 5.6d |
| 139 | Revision 1 | 2015-06-13 A |  | 0% → 80% | 1.2d → 59.2d |
| 140 | Revision 2 | 2015-08-08 A |  | 0% → 40% |  |
| 143 | **Revisión de pares de la base de datos** | 2015-07-16 A |  | 0% → 26% |  |
| 144 | Revision 1 | 2015-07-16 A |  | 0% → 80% | 5.6d → 49d |
| 145 | Revision 2 | 2015-08-23 A |  | 0% → 20% |  |
| 148 | **Revisión de pares de PHP** | 2015-06-19 A |  | 0% → 29% | 1.2d → 14.6d |
| 149 | Revision 1 | 2015-06-19 A |  | 0% → 80% | 1.6d → 61.8d |
| 150 | Revision 2 | 2015-07-19 A |  | 0% → 40% |  |
| 153 | **Promoción** | 2015-07-22 A | 2015-08-01 A | 0% → 100% | 47.6d → none |
| 154 | Realizar presentación comercial | 2015-07-26 A | 2015-08-01 A | 0% → 100% | 48.3d → none |
| 155 | Realizar poster comercial | 2015-07-22 A | 2015-07-26 A | 0% → 100% | 47.6d → none |
| 156 | **Testing** | 2015-06-21 A |  | 0% → 12% |  |
| 157 | Armar el plan de pruebas | 2015-06-28 A |  | 0% → 60% |  |
| 158 | Definir los casos de prueba | 2015-06-21 A |  | 0% → 20% |  |

## Version 4 (data date 2015-06-07, saved 2015-10-11, file Gantt AY Contingencia.mpp)

Note of the change: Gantt Contingencia

Last finish 2015-11-21 → 2015-11-22 (+1d). Complete tasks 48 → 53.

Added:

| ID | Task | Duration | Start | Finish | Predecessors | Resources |
| --- | --- | --- | --- | --- | --- | --- |
| 41 | **Capacitacion** | 4.96d? | 2015-04-27 A | 2015-07-05 A |  |  |
| 50 | Capacitacion Symfony | 53.02h? | 2015-05-11 A | 2015-06-20 A | 42, 43, 44, 45 | Budic-DESAROLLADOR; Croci-DESAROLLADOR; Rodriguez-DESAROLLADOR; Tiberti-DESAROLLADOR |

Changed:

| ID | Task | Start | Finish | Duration | Complete | Total float | Other |
| --- | --- | --- | --- | --- | --- | --- | --- |
| 1 | **Análisis** |  | 2015-05-17 A | 15d → 2.5d | 97% → 100% | 77.8d → none |  |
| 2 | **Riesgos** |  |  | 2.4d → 0.42d |  |  |  |
| 7 | **Planificación** |  | 2015-05-10 A | 9d → 1.5d | 94% → 100% | 79.8d → none |  |
| 12 | Realizar diagrama de Gantt | 2015-04-28 A → 2015-04-26 A (-2d) | 2015-05-10 → 2015-05-03 A (-7d) |  | 90% → 100% | 80.4d → none |  |
| 13 | **Roles y Responsabilidades** |  |  | 1d → 0.21d |  |  |  |
| 16 | **Habilidades y Competencias** |  |  | 1.2d → 0.25d |  |  |  |
| 18 | **Comunicación** |  |  | 0.4d → 0.04d |  |  |  |
| 20 | **WBS** |  |  | 1.6d → 0.21d |  |  |  |
| 22 | **Diseño** |  |  | 28d → 4.65d | 91% → 94% | 61.9d → 10.52d |  |
| 23 | **Casos de Uso** |  |  | 16.8d → 2.79d |  | 65.3d → 11.12d |  |
| 25 | Describir casos de uso |  | 2015-06-21 → 2015-06-18 (-3d) |  |  | 65.5d → 11.33d |  |
| 27 | **DER** |  |  | 11.6d → 2d |  |  |  |
| 31 | **Maqueta del Front-End** |  |  | 2d → 0.33d | 75% → 90% | 60.8d → 10.47d |  |
| 32 | Diseñar disposición de elementos estéticamente |  |  |  | 75% → 90% | 60.8d → 10.47d |  |
| 33 | **Documento De Arquitectura** |  | 2015-04-27 A | 1.6d → 0.21d | 75% → 100% | 85.6d → none |  |
| 34 | Definir arquitectura de software |  | 2015-04-27 A |  | 75% → 100% | 85.6d → none |  |
| 35 | **Especificación de la BD** |  |  | 3.4d → 0.6d |  | 59.2d → 10.2d |  |
| 40 | **Desarrollo** | 2015-04-27 A → 2015-04-12 A (-15d) | 2015-11-14 → 2015-11-12 (-2d) | 85.4d? → 15.31d? | 39% → 62% | 2.9d → 0.81d |  |
| 42 | Inicio Capacitación en HTML |  | 2015-05-11 A → 2015-05-04 A (-7d) | 20h → 15h |  |  |  |
| 46 | Capacitación en HTML |  | 2015-06-22 → 2015-05-31 A (-22d) | 80h → 30h | 60% → 100% | 64.3d → none |  |
| 47 | Capacitación en Java |  | 2015-05-17 A |  | 60% → 100% | 80.3d → none |  |
| 48 | Capacitación en CSS |  | 2015-11-14 → 2015-07-05 A (-132d) | 80h → 50h | 60% → 100% | 2.9d → none |  |
| 49 | Capacitación en PHP |  | 2015-06-14 A |  | 60% → 100% | 68.3d → none |  |
| 51 | **Escribir código de Plantillas** |  | 2015-10-25 → 2015-10-03 (-22d) | 71.6d? → 10.29d? | 30% → 65% | 0d → 2.54d |  |
| 52 | Inscribirse al portal |  | 2015-05-17 A → 2015-06-21 A (+35d) | 10h → 15h? |  |  |  |
| 53 | Autenticarse como usuario |  | 2015-05-23 A → 2015-06-27 A (+35d) | 10h? → 15h? |  |  |  |
| 56 | Inscribirse como emprendedor |  | 2015-07-15 A → 2015-07-19 A (+4d) | 10h? → 15h? |  |  |  |
| 58 | Aplicar para crear emprendimiento | 2015-07-21 A | 2015-07-26 A |  | 0% → 100% | 0.8d → none |  |
| 59 | Aprobar emprendimiento | 2015-08-01 A | 2015-08-04 → 2015-08-08 (+4d) | 10h? → 15h? | 0% → 67% | 0.96d → 13.81d |  |
| 60 | Modificar emprendimiento | 2015-08-04 A | 2015-08-09 A |  | 0% → 100% | 0.96d → none |  |
| 61 | Dar de baja emprendimiento | 2015-08-09 A | 2015-08-15 A |  | 0% → 100% | 0.96d → none |  |
| 62 | Solicitar asociación a emprendimiento | 2015-08-20 → 2015-08-16 (-4d) | 2015-08-23 → 2015-08-22 (-1d) |  |  | 0d → 11.1d |  |
| 63 | Responder a inversor | 2015-08-29 → 2015-08-22 (-7d) | 2015-09-01 → 2015-08-24 (-8d) |  |  | 0d → 11.1d |  |
| 64 | Aceptar solicitud de asociación | 2015-09-01 A | 2015-09-06 A |  | 0% → 100% | 0d → none |  |
| 65 | Consultar información a emprendedor | 2015-09-12 A | 2015-09-15 → 2015-09-13 (-2d) |  | 0% → 50% | 0d → 5.62d |  |
| 66 | Buscar/filtrar emprendimientos | 2015-09-15 → 2015-09-13 (-2d) | 2015-09-20 → 2015-09-18 (-2d) |  |  | 0d → 5.62d |  |
| 67 | Realizar Pago | 2015-09-20 → 2015-09-18 (-2d) | 2015-09-26 → 2015-09-22 (-4d) | 10h? → 20h? |  | 0d → 5.62d | was named Promocionar emprendimiento |
| 68 | Configurar seguimiento de emprendimiento | 2015-10-03 → 2015-09-27 (-6d) | 2015-10-05 → 2015-10-03 (-2d) |  |  | 0d → 5.35d |  |
| 69 | Crear Agenda | 2015-10-11 → 2015-10-03 (-8d) | 2015-10-17 → 2015-10-04 (-13d) |  |  | 0d → 4.1d |  |
| 70 | Modificar agenda | 2015-10-17 → 2015-10-04 (-13d) | 2015-10-22 → 2015-10-09 (-13d) |  |  | 0d → 4.1d |  |
| 71 | Difundir Mail | 2015-10-22 → 2015-10-09 (-13d) | 2015-10-25 → 2015-10-11 (-14d) |  |  | 0d → 4.1d |  |
| 72 | **Escribir código JavaScript** |  | 2015-10-24 → 2015-10-02 (-22d) | 68.6d? → 9.83d? | 26% → 60% | 1d → 2.67d |  |
| 73 | Inscribirse al portal |  | 2015-05-23 A → 2015-05-24 (+1d) | 12h? → 15h? | 100% → 80% | none → 11.67d |  |
| 74 | Autenticarse como usuario |  | 2015-05-27 A → 2015-06-08 (+12d) | 10h? → 15h? | 100% → 67% | none → 10.83d |  |
| 77 | Inscribirse como emprendedor |  | 2015-07-04 A → 2015-08-02 (+29d) | 10h? → 15h? | 100% → 67% | none → 6.96d |  |
| 78 | Aprobar inscripción como emprendedor | 2015-07-04 A | 2015-07-06 A |  | 0% → 100% | 5.4d → none |  |
| 79 | Aplicar para crear emprendimiento | 2015-07-06 A | 2015-07-12 A |  | 0% → 100% | 5.4d → none |  |
| 80 | Aprobar emprendimiento | 2015-07-12 A | 2015-07-19 → 2015-08-08 (+20d) | 10h? → 15h? | 0% → 67% | 5.4d → 6.62d |  |
| 81 | Modificar emprendimiento | 2015-07-19 A | 2015-07-26 A |  | 0% → 100% | 5.4d → none |  |
| 82 | Dar de baja emprendimiento | 2015-07-26 A | 2015-08-02 A |  | 0% → 100% | 5.4d → none |  |
| 83 | Solicitar asociación a emprendimiento | 2015-08-20 → 2015-08-23 (+3d) | 2015-08-23 → 2015-08-26 (+3d) |  |  | 1d → 10.51d |  |
| 84 | Responder a inversor |  | 2015-08-30 → 2015-08-29 (-1d) |  |  | 1.6d → 10.51d |  |
| 85 | Aceptar solicitud de asociación | 2015-08-30 A | 2015-09-05 A |  | 0% → 100% | 1.6d → none |  |
| 86 | Consultar información a emprendedor | 2015-09-09 A |  | 10h? → 15h? | 0% → 33% | 0.4d → 5.81d |  |
| 88 | Realizar Pago | 2015-09-19 A | 2015-09-23 → 2015-09-25 (+2d) | 10h? → 20h? | 0% → 25% | 0.4d → 5.56d | was named Promocionar emprendimiento |
| 89 | Configurar seguimiento de emprendimiento | 2015-10-01 → 2015-09-27 (-4d) | 2015-10-04 → 2015-10-02 (-2d) |  |  | 0.4d → 5.56d |  |
| 90 | Crear Agenda | 2015-10-10 → 2015-10-02 (-8d) | 2015-10-15 → 2015-10-04 (-11d) |  |  | 1d → 4.31d |  |
| 91 | Modificar agenda | 2015-10-15 → 2015-10-04 (-11d) | 2015-10-18 → 2015-10-07 (-11d) |  |  | 1d → 4.31d |  |
| 92 | Difundir Mail | 2015-10-18 → 2015-10-07 (-11d) | 2015-10-24 → 2015-10-10 (-14d) |  |  | 1d → 4.31d |  |
| 93 | **Escribir código PHP** |  | 2015-10-24 → 2015-11-08 (+15d) | 56.4d? → 10.5d? | 25% → 34% | 1.2d → 0d |  |
| 94 | Inscribirse al portal |  | 2015-06-19 A → 2015-07-08 (+19d) | 9h? → 25h? | 100% → 36% | none → 2.88d |  |
| 95 | Autenticarse como usuario |  | 2015-06-27 A → 2015-08-20 (+54d) | 9h? → 20h? | 100% → 10% | none → 0.88d |  |
| 96 | Modificar Usuario |  | 2015-07-03 A → 2015-08-30 (+58d) | 9h? → 25h? | 100% → 36% | none → 0.71d |  |
| 97 | Dar de baja Usuario |  | 2015-07-05 A → 2015-08-31 (+57d) | 9h? → 10h? | 100% → 90% | none → 0.71d |  |
| 98 | Inscribirse como emprendedor |  | 2015-07-11 A → 2015-09-05 (+56d) | 9h? → 15h? | 100% → 60% | none → 0.71d |  |
| 99 | Aprobar inscripción como emprendedor | 2015-07-11 A | 2015-07-14 → 2015-09-07 (+55d) | 9h? → 15h? | 0% → 60% | 4d → 0.71d |  |
| 100 | Aplicar para crear emprendimiento | 2015-07-14 A | 2015-07-19 → 2015-09-12 (+55d) | 9h? → 15h? | 0% → 60% | 4d → 0.71d |  |
| 101 | Aprobar emprendimiento | 2015-08-01 A | 2015-08-03 → 2015-10-04 (+62d) | 9h? → 20h? | 0% → 45% | 1.2d → 0d |  |
| 102 | Modificar emprendimiento | 2015-08-03 A | 2015-08-09 → 2015-10-07 (+59d) | 9h? → 15h? | 0% → 60% | 1.2d → 0d |  |
| 103 | Dar de baja emprendimiento | 2015-08-09 A | 2015-08-13 → 2015-10-07 (+55d) | 9h? → 10h? | 0% → 90% | 1.2d → 0d |  |

| ID | Task | Start | Finish | Duration | Complete | Total float | Predecessors | Other |
| --- | --- | --- | --- | --- | --- | --- | --- | --- |
| 104 | Solicitar asociación a emprendimiento | 2015-08-13 → 2015-10-07 (+55d) | 2015-08-23 → 2015-10-11 (+49d) | 9h? → 15h? |  | 1.2d → 0d |  |  |
| 105 | Responder a inversor | 2015-08-23 → 2015-10-11 (+49d) | 2015-08-27 → 2015-10-14 (+48d) | 9h? → 10h? |  | 1.2d → 0d |  |  |
| 106 | Aceptar solicitud de asociación | 2015-08-27 A | 2015-08-30 → 2015-10-17 (+48d) | 9h? → 14h? | 0% → 64% | 1.2d → 0d |  |  |
| 107 | Consultar información a emprendedor | 2015-09-12 → 2015-10-18 (+36d) | 2015-09-14 → 2015-10-23 (+39d) | 9h? → 14h? |  | 2d → 0d |  |  |
| 108 | Buscar/filtrar emprendimientos | 2015-09-14 → 2015-10-23 (+39d) | 2015-09-20 → 2015-10-25 (+35d) | 9h? → 15h? |  | 2d → 0d |  |  |
| 109 | Realizar Pago | 2015-09-20 A | 2015-09-24 → 2015-11-06 (+43d) | 9h? → 40h? | 0% → 15% | 2d → 0d |  | was named Promocionar emprendimiento |
| 110 | Configurar seguimiento de emprendimiento | 2015-09-24 → 2015-11-06 (+43d) | 2015-10-04 → 2015-11-08 (+35d) |  |  | 2d → 0d |  |  |
| 111 | Crear Agenda | 2015-10-11 → 2015-11-12 (+32d) | 2015-10-16 → 2015-11-15 (+30d) |  |  | 1.2d → -1.75d |  |  |
| 112 | Modificar agenda | 2015-10-16 → 2015-11-15 (+30d) | 2015-10-18 → 2015-11-16 (+29d) |  |  | 1.2d → -1.75d |  |  |
| 113 | Difundir Mail | 2015-10-18 → 2015-11-16 (+29d) | 2015-10-24 → 2015-11-20 (+27d) |  |  | 1.2d → -1.75d |  |  |
| 114 | **Escribir script de la base de datos** |  | 2015-10-18 → 2015-07-05 A (-105d) | 47.8d? → 0.46d? | 25% → 100% | 3.4d → none |  |  |
| 115 | Script inicial |  | 2015-07-04 A → 2015-07-05 A (+1d) | 9h? → 12h? |  |  |  | was named Inscribirse al portal; resources Tiberti-DESAROLLADOR; Rodriguez-ARQUITECTO DE SOFTWARE → Rodriguez-DESAROLLADOR; Rodriguez-ARQUITECTO DE SOFTWARE; Tiberti-ADMINISTRADOR DE BASE DE DATOS |
| 116 | Autenticarse como usuario | 2015-07-04 A → 2015-07-05 (+1d) | 2015-07-06 A → 2015-07-11 (+5d) |  | 100% → 0% | none → 8.99d |  |  |
| 117 | Modificar Usuario | 2015-07-06 A → 2015-07-11 (+5d) | 2015-07-12 A → 2015-07-15 (+3d) |  | 100% → 0% | none → 8.99d |  |  |
| 118 | Dar de baja Usuario | 2015-07-12 A → 2015-07-15 (+3d) | 2015-07-16 A → 2015-07-19 (+3d) |  | 100% → 0% | none → 8.99d |  |  |
| 119 | Inscribirse como emprendedor | 2015-07-21 A → 2015-08-08 (+18d) | 2015-07-26 A → 2015-08-14 (+19d) |  | 100% → 0% | none → 0.29d |  |  |
| 120 | Aprobar inscripción como emprendedor | 2015-07-26 → 2015-08-14 (+19d) | 2015-07-31 → 2015-08-18 (+18d) |  |  | 5.76d → 0.29d |  |  |
| 121 | Aplicar para crear emprendimiento | 2015-07-31 → 2015-08-18 (+18d) | 2015-08-02 → 2015-08-23 (+21d) |  |  | 5.76d → 0.29d |  |  |
| 122 | Aprobar emprendimiento | 2015-08-02 → 2015-08-23 (+21d) | 2015-08-08 → 2015-08-29 (+21d) |  |  | 5.76d → 0.29d |  |  |
| 123 | Modificar emprendimiento | 2015-08-08 → 2015-08-29 (+21d) | 2015-08-16 → 2015-09-13 (+28d) | 11h? → 20h? |  | 5.76d → 0.29d |  |  |
| 124 | Dar de baja emprendimiento | 2015-08-16 → 2015-09-13 (+28d) | 2015-08-22 → 2015-09-20 (+29d) |  |  | 5.76d → 0.29d |  |  |
| 125 | Solicitar asociación a emprendimiento | 2015-08-26 → 2015-09-20 (+25d) | 2015-08-30 → 2015-09-27 (+28d) |  |  | 4d → 0.29d |  |  |
| 126 | Responder a inversor | 2015-08-30 → 2015-09-27 (+28d) | 2015-09-05 → 2015-10-03 (+28d) |  |  | 4d → 0.29d |  |  |
| 127 | Aceptar solicitud de asociación | 2015-09-05 → 2015-10-03 (+28d) | 2015-09-06 → 2015-10-07 (+31d) |  |  | 4d → 0.29d |  |  |
| 128 | Consultar información a emprendedor | 2015-09-06 → 2015-10-07 (+31d) | 2015-09-12 → 2015-10-11 (+29d) |  |  | 4d → 0.29d |  |  |
| 129 | Buscar/filtrar emprendimientos | 2015-09-12 → 2015-10-11 (+29d) | 2015-09-16 → 2015-10-18 (+32d) |  |  | 4d → 0.29d |  |  |
| 130 | Pagar | 2015-09-16 → 2015-10-18 (+32d) | 2015-09-20 → 2015-10-24 (+34d) |  |  | 4d → 0.29d |  | was named Promocionar emprendimiento |
| 131 | Configurar seguimiento de emprendimiento | 2015-10-03 → 2015-10-25 (+22d) | 2015-10-04 → 2015-10-31 (+27d) |  |  | 3.4d → 0.21d |  |  |
| 132 | Crear Agenda | 2015-10-04 → 2015-10-31 (+27d) | 2015-10-10 → 2015-11-04 (+25d) |  |  | 3.4d → 0.21d |  |  |
| 133 | Modificar agenda | 2015-10-10 → 2015-11-04 (+25d) | 2015-10-14 → 2015-11-08 (+25d) |  |  | 3.4d → 0.21d |  |  |
| 134 | Difundir Mail | 2015-10-14 → 2015-11-08 (+25d) | 2015-10-18 → 2015-11-14 (+27d) |  |  | 3.4d → 0.21d |  |  |
| 135 | **Revisión de pares de Plantillas** | 2015-06-13 A → 2015-04-12 A (-62d) | 2015-11-01 → 2015-09-27 (-35d) | 61d? → 12d? | 40% → 50% | 8.3d → 4.12d |  |  |
| 136 | Revision 1 |  | 2015-06-28 → 2015-06-21 A (-7d) | 24h? → 16h? | 80% → 100% | 62.3d → none |  |  |
| 137 | Revision 2 |  | 2015-08-20 → 2015-08-16 (-4d) | 12h? → 8h? | 40% → 90% | 0d → 5.26d |  |  |
| 138 | Revision 3 | 2015-09-26 → 2015-09-22 (-4d) | 2015-10-01 → 2015-09-27 (-4d) | 12h? → 14h? |  | 0d → 5.62d |  |  |
| 139 | Revision 4 | 2015-10-25 → 2015-04-12 (-196d) | 2015-11-01 → 2015-04-12 (-203d) | 12h? → 8h? |  | 8.3d → 33.2d |  |  |
| 140 | **Revisión de pares de JavaScript** | 2015-06-13 A → 2015-04-12 A (-62d) | 2015-10-31 → 2015-09-27 (-34d) | 60.6d? → 12.17d? | 35% → 47% | 5.6d → 3.6d |  |  |
| 141 | Revision 1 |  |  |  | 80% → 90% | 59.2d → 9.21d |  |  |
| 142 | Revision 2 |  | 2015-08-18 → 2015-08-23 (+5d) |  | 40% → 50% | 0.4d → 5.08d |  |  |
| 143 | Revision 3 | 2015-09-23 → 2015-09-25 (+2d) | 2015-09-29 → 2015-09-27 (-2d) | 14h? → 11h? |  | 0.4d → 5.56d |  |  |
| 144 | Revision 4 | 2015-10-24 → 2015-04-12 (-195d) | 2015-10-31 → 2015-04-12 (-202d) | 15h? → 8h? |  | 5.6d → 32.56d |  |  |
| 145 | **Revisión de pares de la base de datos** |  | 2015-11-01 → 2015-08-08 (-85d) | 46.8d? → 1.67d? | 26% → 33% | 4.8d → 7.31d |  |  |
| 146 | Revision 1 |  | 2015-07-21 → 2015-08-08 (+18d) | 8h? → 18h? | 80% → 33% | 49d → 7.31d | 118 → 115 |  |
| 147 | Revision 2 | 2015-08-23 A → 2015-09-20 (+28d) | 2015-08-26 → 2015-09-20 (+25d) | 4h? → 3h? | 20% → 0% | 4d → 0.29d |  |  |
| 148 | Revision 3 | 2015-09-23 → 2015-10-24 (+31d) | 2015-10-03 → 2015-10-24 (+21d) | 8h? → 3h? |  | 3.4d → 0.54d |  |  |
| 149 | Revision 4 | 2015-10-24 → 2015-11-14 (+21d) | 2015-11-01 → 2015-11-15 (+14d) | 8h? → 3h? |  | 4.8d → 0.52d |  |  |
| 150 | **Revisión de pares de PHP** |  | 2015-10-11 → 2015-11-12 (+32d) | 49.2d? → 10.47d? | 29% → 26% | 14.6d → 0.5d |  |  |
| 151 | Revision 1 |  | 2015-06-21 → 2015-08-03 (+43d) | 10h? → 15.01h? | 80% → 53% | 61.8d → 1.26d |  |  |
| 152 | Revision 2 |  | 2015-08-01 → 2015-10-03 (+63d) | 20h? → 28h? | 40% → 36% | 1.2d → 0d |  |  |
| 153 | Revision 3 | 2015-09-05 → 2015-10-17 (+42d) | 2015-09-12 → 2015-10-18 (+36d) | 14h? → 10h? |  | 2d → 0d |  |  |
| 154 | Revision 4 | 2015-10-04 → 2015-11-08 (+35d) | 2015-10-11 → 2015-11-12 (+32d) | 12h? → 15h? |  | 1.2d → 1.04d |  |  |
| 155 | **Promoción** |  |  | 3.6d → 0.62d |  |  |  |  |
| 158 | **Testing** |  | 2015-11-14 → 2015-11-19 (+5d) | 62.6d → 10.81d | 12% → 17% | 2.7d → 0.31d |  |  |
| 160 | Definir los casos de prueba |  |  | 14h → 14.6h | 20% → 38% | 58.8d → 10.2d |  |  |
| 161 | Ejecutar los casos de prueba | 2015-10-25 → 2015-11-08 (+14d) | 2015-11-08 → 2015-11-15 (+7d) |  |  |  |  |  |
| 162 | Documentar resultados de las pruebas | 2015-11-08 → 2015-11-15 (+7d) | 2015-11-14 → 2015-11-19 (+5d) |  |  |  |  |  |
| 163 | **Manuales** | 2015-11-01 → 2015-09-27 (-35d) | 2015-11-01 → 2015-09-28 (-34d) | 0.4d → 0d |  | 4.8d → 3.6d |  |  |
| 164 | Redactar manual de uso y ayuda | 2015-11-01 → 2015-09-27 (-35d) | 2015-11-01 → 2015-09-28 (-34d) |  |  | 4.8d → 7.56d |  | was named Redactar manual de instalación |
| 165 | **Finalización del Proyecto** | 2015-11-14 → 2015-11-19 (+5d) | 2015-11-21 → 2015-11-22 (+1d) | 2.7d → 0.56d |  |  |  |  |
| 166 | Reflexionar sobre la experiencia realizada | 2015-11-14 → 2015-11-19 (+5d) | 2015-11-14 → 2015-11-19 (+5d) |  |  |  |  |  |
| 167 | Analizar errores cometidos | 2015-11-14 → 2015-11-19 (+5d) | 2015-11-15 → 2015-11-20 (+5d) |  |  |  |  |  |
| 168 | Documentación de cierre de proyecto | 2015-11-15 → 2015-11-20 (+5d) | 2015-11-16 → 2015-11-21 (+5d) |  |  |  |  |  |
| 169 | Cerrar el proyecto | 2015-11-16 → 2015-11-21 (+5d) | 2015-11-21 → 2015-11-22 (+1d) |  |  |  |  |  |

## Version 5 (data date 2015-06-07, saved 2015-10-12, file Gantt AY Contingencia.mpp)

Note of the change: Gantt Contingencia 2.0

Last finish 2015-11-22 → 2015-11-21 (-1d). Complete tasks 53 → 73.

Added:

| ID | Task | Duration | Start | Finish | Predecessors | Resources |
| --- | --- | --- | --- | --- | --- | --- |
| 71 | Promocionar emprendimiento | 10h? | 2015-10-04 | 2015-10-07 | 70 | Budic-DESAROLLADOR |
| 94 | Difundir mail | 5h? | 2015-09-27 | 2015-09-29 | 93 | Croci-DESAROLLADOR |
| 116 | Difundir mail | 12h? | 2015-11-04 | 2015-11-08 | 115 | Rodriguez-DESAROLLADOR |

Changed:

| ID | Task | Start | Finish | Duration | Complete | Total float | Predecessors | Other |
| --- | --- | --- | --- | --- | --- | --- | --- | --- |
| 22 | **Diseño** |  | 2015-06-28 A |  | 94% → 100% | 10.52d → none |  |  |
| 23 | **Casos de Uso** |  | 2015-06-21 A |  | 94% → 100% | 11.12d → none |  |  |
| 25 | Describir casos de uso |  | 2015-06-18 A |  | 90% → 100% | 11.33d → none |  |  |
| 31 | **Maqueta del Front-End** |  | 2015-06-26 A |  | 90% → 100% | 10.47d → none |  |  |
| 32 | Diseñar disposición de elementos estéticamente |  | 2015-06-26 A |  | 90% → 100% | 10.47d → none |  |  |
| 35 | **Especificación de la BD** |  | 2015-06-28 A |  | 85% → 100% | 10.2d → none |  |  |
| 39 | Definir políticas de seguridad e integridad |  | 2015-06-28 A |  | 50% → 100% | 10.2d → none |  |  |
| 40 | **Desarrollo** | 2015-04-12 A → 2015-04-27 A (+15d) | 2015-11-12 → 2015-11-09 (-3d) | 15.31d? → 14.02d? | 62% → 81% | 0.81d → 0.69d |  |  |
| 51 | **Escribir código de Plantillas** |  | 2015-10-03 → 2015-10-11 (+8d) | 10.29d? → 10.92d? | 65% → 64% | 2.54d → 2.79d |  |  |
| 52 | Inscribirse al portal |  | 2015-06-21 A → 2015-06-21 |  | 100% → 90% | none → 10.56d |  |  |
| 53 | Autenticarse como usuario |  | 2015-06-27 A → 2015-06-27 |  | 100% → 90% | none → 10.42d |  |  |
| 54 | Modificar Usuario |  | 2015-06-07 A → 2015-06-27 (+20d) |  | 100% → 90% | none → 10.33d |  |  |
| 55 | Dar de baja Usuario |  | 2015-06-13 A → 2015-07-04 (+21d) |  | 100% → 90% | none → 10d |  |  |
| 56 | Inscribirse como emprendedor |  | 2015-07-19 A → 2015-07-20 (+1d) |  | 100% → 90% | none → 8.53d |  |  |
| 57 | Aprobar inscripción como emprendedor |  | 2015-07-19 A → 2015-07-26 (+7d) |  | 100% → 90% | none → 8.19d |  |  |
| 58 | Aplicar para crear emprendimiento |  | 2015-07-26 A → 2015-08-01 (+6d) |  | 100% → 90% | none → 7.85d |  |  |
| 59 | Aprobar emprendimiento |  |  |  | 67% → 90% | 13.81d → 15.58d |  |  |
| 60 | Modificar emprendimiento |  | 2015-08-09 A → 2015-08-10 (+1d) |  | 100% → 90% | none → 14.99d |  |  |
| 61 | Dar de baja emprendimiento |  | 2015-08-15 A → 2015-08-16 (+1d) |  | 100% → 90% | none → 14.24d |  |  |
| 62 | Aprobar baja de emprendimiento | 2015-08-16 A | 2015-08-22 → 2015-08-21 (-1d) |  | 0% → 60% | 11.1d → 9.87d |  | was named Solicitar asociación a emprendimiento |
| 63 | Responder a inversor | 2015-08-22 A |  |  | 0% → 90% | 11.1d → 9.16d |  |  |
| 64 | Asociacion a emprendimiento |  | 2015-09-06 A → 2015-09-06 |  | 100% → 90% | none → 7.45d |  | was named Aceptar solicitud de asociación |
| 65 | Consultar información a emprendedor |  |  |  | 50% → 90% | 5.62d → 6.24d |  |  |
| 66 | Buscar/filtrar emprendimientos | 2015-09-13 A |  |  | 0% → 90% | 5.62d → 5.87d |  |  |
| 67 | Realizar Pago |  | 2015-09-22 → 2015-10-11 (+19d) |  |  | 5.62d → 5.87d |  |  |
| 68 | Presentar estado de resultados | 2015-09-27 → 2015-09-25 (-2d) | 2015-10-03 → 2015-09-27 (-6d) |  |  | 5.35d → 4.71d |  | was named Configurar seguimiento de emprendimiento |
| 69 | Promocionar estado de Resultados | 2015-10-03 → 2015-09-27 (-6d) | 2015-10-04 → 2015-10-02 (-2d) |  |  | 4.1d → 4.71d |  | was named Crear Agenda |
| 70 | Cancelar proyecto (manualmente y por finalizacion) | 2015-10-04 → 2015-10-02 (-2d) | 2015-10-09 → 2015-10-04 (-5d) |  |  | 4.1d → 4.71d |  | was named Modificar agenda |
| 72 | Difundir Mail | 2015-10-09 → 2015-10-07 (-2d) | 2015-10-11 → 2015-10-09 (-2d) | 10h? → 4h? |  | 4.1d → 6.36d | 70 → 71 |  |
| 73 | **Escribir código JavaScript** |  | 2015-10-02 → 2015-09-29 (-3d) | 9.83d? → 9.71d? | 60% → 88% | 2.67d → 2.79d |  |  |
| 74 | Inscribirse al portal |  | 2015-05-24 A |  | 80% → 100% | 11.67d → none |  |  |
| 75 | Autenticarse como usuario |  | 2015-06-08 A |  | 67% → 100% | 10.83d → none |  |  |
| 78 | Inscribirse como emprendedor |  | 2015-08-02 A |  | 67% → 100% | 6.96d → none |  |  |
| 81 | Aprobar emprendimiento |  | 2015-08-08 A |  | 67% → 100% | 6.62d → none |  |  |
| 84 | Aprobar baja de emprendimiento | 2015-08-23 A | 2015-08-26 A |  | 0% → 100% | 10.51d → none |  | was named Solicitar asociación a emprendimiento |
| 85 | Responder a inversor | 2015-08-26 A | 2015-08-29 A |  | 0% → 100% | 10.51d → none |  |  |
| 86 | Asociacion a emprendimiento |  |  |  |  |  |  | was named Aceptar solicitud de asociación |
| 87 | Consultar información a emprendedor |  | 2015-09-13 A | 15h? → 10h? | 33% → 100% | 5.81d → none |  |  |
| 88 | Buscar/filtrar emprendimientos | 2015-09-13 A | 2015-09-19 A |  | 0% → 100% | 5.81d → none |  |  |
| 89 | Realizar Pago |  | 2015-09-25 → 2015-09-20 (-5d) | 20h? → 10h? | 25% → 50% | 5.56d → 5.25d |  |  |
| 90 | Presentar estado de resultados | 2015-09-27 → 2015-09-25 (-2d) | 2015-10-02 → 2015-09-26 (-6d) | 10h? → 2h? |  | 5.56d → 5.38d |  | was named Configurar seguimiento de emprendimiento |
| 91 | Promocionar estado de Resultados | 2015-10-02 → 2015-09-26 (-6d) | 2015-10-04 → 2015-09-26 (-8d) | 10h? → 3h? |  | 4.31d → 5.38d |  | was named Crear Agenda |
| 92 | Cancelar proyecto (manualmente y por finalizacion) | 2015-10-04 → 2015-09-26 (-8d) | 2015-10-07 → 2015-09-27 (-10d) | 10h? → 5h? |  | 4.31d → 5.38d |  | was named Modificar agenda |
| 93 | Promocionar emprendimiento | 2015-10-07 → 2015-09-27 (-10d) | 2015-10-10 → 2015-09-27 (-13d) | 10h? → 5h? |  | 4.31d → 5.38d |  | was named Difundir Mail |
| 95 | **Escribir código PHP** |  |  |  | 34% → 78% | 0d → 0.5d |  |  |
| 96 | Inscribirse al portal |  | 2015-07-08 A |  | 36% → 100% | 2.88d → none |  |  |
| 97 | Autenticarse como usuario |  | 2015-08-20 A |  | 10% → 100% | 0.88d → none |  |  |
| 98 | Modificar Usuario |  | 2015-08-30 A | 25h? → 15h? | 36% → 100% | 0.71d → none |  |  |
| 99 | Dar de baja Usuario |  | 2015-08-31 A |  | 90% → 100% | 0.71d → none |  |  |
| 100 | Inscribirse como emprendedor |  | 2015-09-05 A |  | 60% → 100% | 0.71d → none |  |  |
| 101 | Aprobar inscripción como emprendedor |  | 2015-09-07 A |  | 60% → 100% | 0.71d → none |  |  |
| 102 | Aplicar para crear emprendimiento |  | 2015-09-12 A |  | 60% → 100% | 0.71d → none |  |  |
| 103 | Aprobar emprendimiento |  | 2015-10-04 A |  | 45% → 100% | 0d → none |  |  |
| 104 | Modificar emprendimiento |  | 2015-10-07 A |  | 60% → 100% | 0d → none |  |  |
| 105 | Dar de baja emprendimiento |  | 2015-10-07 A |  | 90% → 100% | 0d → none |  |  |
| 106 | Aprobar baja de emprendimiento | 2015-10-07 A | 2015-10-11 A |  | 0% → 100% | 0d → none |  | was named Solicitar asociación a emprendimiento |
| 107 | Responder a inversor | 2015-10-11 A | 2015-10-14 A |  | 0% → 100% | 0d → none |  |  |
| 108 | Asociacion a emprendimiento | 2015-08-27 A → 2015-10-17 (+51d) | 2015-10-17 → 2015-10-18 (+1d) | 14h? → 6h? | 64% → 0% | 0d → 4.05d |  | was named Aceptar solicitud de asociación |
| 109 | Consultar información a emprendedor | 2015-10-18 A | 2015-10-23 A |  | 0% → 100% | 0d → none |  |  |
| 110 | Buscar/filtrar emprendimientos | 2015-10-23 A | 2015-10-25 → 2015-10-24 (-1d) | 15h? → 3h? | 0% → 33% |  |  |  |
| 111 | Realizar Pago |  | 2015-11-06 → 2015-10-29 (-8d) | 40h? → 25h? | 15% → 23% |  |  |  |
| 112 | Presentar estado de resultados | 2015-11-06 → 2015-10-29 (-8d) | 2015-11-08 → 2015-10-30 (-9d) | 9h? → 3h? |  |  |  | was named Configurar seguimiento de emprendimiento |
| 113 | Promocionar estado de Resultados | 2015-11-12 → 2015-10-31 (-12d) | 2015-11-15 → 2015-11-01 (-14d) | 9h? → 3h? |  | -1.75d → 0d |  | was named Crear Agenda |
| 114 | Cancelar proyecto (manualmente y por finalizacion) | 2015-11-15 → 2015-11-01 (-14d) | 2015-11-16 → 2015-11-01 (-15d) | 9h? → 4h? |  | -1.75d → 0d |  | was named Modificar agenda |
| 115 | Promocionar emprendimiento | 2015-11-16 → 2015-11-01 (-15d) | 2015-11-20 → 2015-11-04 (-16d) |  |  | -1.75d → 0d |  | was named Difundir Mail |
| 122 | Inscribirse como emprendedor | 2015-08-08 → 2015-07-26 (-13d) | 2015-08-14 → 2015-08-01 (-13d) |  |  | 0.29d → 1.25d |  |  |
| 123 | Aprobar inscripción como emprendedor | 2015-08-14 → 2015-08-01 (-13d) | 2015-08-18 → 2015-08-07 (-11d) |  |  | 0.29d → 1.25d |  |  |
| 124 | Aplicar para crear emprendimiento | 2015-08-18 → 2015-08-07 (-11d) | 2015-08-23 → 2015-08-11 (-12d) |  |  | 0.29d → 1.25d |  |  |
| 125 | Aprobar emprendimiento | 2015-08-23 → 2015-08-11 (-12d) | 2015-08-29 → 2015-08-16 (-13d) |  |  | 0.29d → 1.25d |  |  |
| 126 | Modificar emprendimiento | 2015-08-29 → 2015-08-16 (-13d) | 2015-09-13 → 2015-09-02 (-11d) |  |  | 0.29d → 1.25d |  |  |

| ID | Task | Start | Finish | Duration | Complete | Total float | Predecessors |
| --- | --- | --- | --- | --- | --- | --- | --- |
| 127 | Dar de baja emprendimiento | 2015-09-13 → 2015-09-02 (-11d) | 2015-09-20 → 2015-09-06 (-14d) |  |  | 0.29d → 1.25d |  |
| 128 | Solicitar asociación a emprendimiento | 2015-09-20 → 2015-09-09 (-11d) | 2015-09-27 → 2015-09-13 (-14d) |  |  | 0.29d → 1.25d |  |
| 129 | Responder a inversor | 2015-09-27 → 2015-09-13 (-14d) | 2015-10-03 → 2015-09-20 (-13d) |  |  | 0.29d → 1.25d |  |
| 130 | Aceptar solicitud de asociación | 2015-10-03 → 2015-09-20 (-13d) | 2015-10-07 → 2015-09-26 (-11d) |  |  | 0.29d → 1.25d |  |
| 131 | Consultar información a emprendedor | 2015-10-07 → 2015-09-26 (-11d) | 2015-10-11 → 2015-09-30 (-11d) |  |  | 0.29d → 1.25d |  |
| 132 | Buscar/filtrar emprendimientos | 2015-10-11 → 2015-09-30 (-11d) | 2015-10-18 → 2015-10-04 (-14d) |  |  | 0.29d → 1.25d |  |
| 133 | Pagar | 2015-10-18 → 2015-10-04 (-14d) | 2015-10-24 → 2015-10-11 (-13d) |  |  | 0.29d → 1.25d |  |
| 134 | Configurar seguimiento de emprendimiento | 2015-10-25 → 2015-10-11 (-14d) | 2015-10-31 → 2015-10-18 (-13d) |  |  | 0.21d → 1.2d |  |
| 135 | Crear Agenda | 2015-10-31 → 2015-10-18 (-13d) | 2015-11-04 → 2015-10-24 (-11d) |  |  | 0.21d → 1.2d |  |
| 136 | Modificar agenda | 2015-11-04 → 2015-10-24 (-11d) | 2015-11-08 → 2015-10-28 (-11d) |  |  | 0.21d → 1.2d |  |
| 137 | Difundir Mail | 2015-11-08 → 2015-10-28 (-11d) | 2015-11-14 → 2015-11-01 (-13d) |  |  | 0.21d → 1.2d |  |
| 138 | **Revisión de pares de Plantillas** | 2015-04-12 A → 2015-06-13 A (+62d) | 2015-09-27 → 2015-10-17 (+20d) | 12d? → 9d? | 50% → 70% | 4.12d → 2.5d |  |
| 140 | Revision 2 |  | 2015-08-16 A | 8h? → 7h? | 90% → 100% | 5.26d → none |  |
| 141 | Revision 3 | 2015-09-22 A | 2015-09-27 → 2015-09-25 A (-2d) | 14h? → 5h? | 0% → 100% | 5.62d → none |  |
| 142 | Revision 4 | 2015-04-12 → 2015-10-07 (+178d) | 2015-04-12 → 2015-10-17 (+188d) | 8h? → 12h? |  | 33.2d → 5.19d | 72 → 71 |
| 143 | **Revisión de pares de JavaScript** | 2015-04-12 A → 2015-06-13 A (+62d) | 2015-09-27 → 2015-10-11 (+14d) | 12.17d? → 8.62d? | 47% → 44% | 3.6d → 2.6d |  |
| 145 | Revision 2 |  | 2015-08-23 → 2015-08-26 (+3d) |  |  | 5.08d → 5.85d |  |
| 146 | Revision 3 | 2015-09-25 → 2015-09-20 (-5d) | 2015-09-27 → 2015-09-24 (-3d) | 11h? → 8h? |  | 5.56d → 5.25d |  |
| 147 | Revision 4 | 2015-04-12 → 2015-09-27 (+168d) | 2015-04-12 → 2015-10-11 (+182d) | 8h? → 16h? |  | 32.56d → 5.38d |  |
| 148 | **Revisión de pares de la base de datos** |  | 2015-08-08 → 2015-07-26 A (-13d) | 1.67d? → 0.79d? | 33% → 100% | 7.31d → none |  |
| 149 | Revision 1 |  | 2015-08-08 → 2015-07-26 A (-13d) | 18h? → 16h? | 33% → 100% | 7.31d → none |  |
| 150 | Revision 2 | 2015-09-20 → 2015-09-06 (-14d) | 2015-09-20 → 2015-09-09 (-11d) |  |  | 0.29d → 1.25d |  |
| 151 | Revision 3 | 2015-10-24 → 2015-10-11 (-13d) | 2015-10-24 → 2015-10-11 (-13d) |  |  | 0.54d → 2.58d |  |
| 152 | Revision 4 | 2015-11-14 → 2015-11-01 (-13d) | 2015-11-15 → 2015-11-01 (-14d) |  |  | 0.52d → 2.58d |  |
| 153 | **Revisión de pares de PHP** |  | 2015-11-12 → 2015-11-09 (-3d) | 10.47d? → 10.35d? | 26% → 66% | 0.5d → 0.48d |  |
| 154 | Revision 1 |  | 2015-08-03 → 2015-07-09 (-25d) | 15.01h? → 8h? | 53% → 88% | 1.26d → 9.37d |  |
| 155 | Revision 2 |  | 2015-10-03 → 2015-11-09 A (+37d) | 28h? → 14h? | 36% → 100% | 0d → none |  |
| 156 | Revision 3 | 2015-10-17 → 2015-10-18 (+1d) | 2015-10-18 → 2015-10-19 (+1d) | 10h? → 5h? |  | 0d → 4.05d |  |
| 157 | Revision 4 | 2015-11-08 → 2015-10-30 (-9d) | 2015-11-12 → 2015-10-31 (-12d) | 15h? → 5h? |  | 1.04d → 0d |  |
| 161 | **Testing** |  | 2015-11-19 → 2015-11-15 (-4d) | 10.81d → 10.67d | 17% → 43% | 0.31d → 0d |  |
| 162 | Armar el plan de pruebas |  | 2015-07-04 A |  | 60% → 100% | 10.24d → none |  |
| 163 | Definir los casos de prueba |  | 2015-06-28 A |  | 38% → 100% | 10.2d → none |  |
| 164 | Ejecutar los casos de prueba |  | 2015-11-15 → 2015-11-14 (-1d) | 30h → 20h |  |  | 51, 73, 95, 117 → 163, 50, 71, 94, 116 |
| 165 | Documentar resultados de las pruebas | 2015-11-15 → 2015-11-14 (-1d) | 2015-11-19 → 2015-11-15 (-4d) |  |  |  |  |
| 166 | **Manuales** | 2015-09-27 → 2015-10-11 (+14d) | 2015-09-28 → 2015-10-11 (+13d) | 0d → 0.01d |  | 3.6d → 2.6d |  |
| 167 | Redactar manual de uso y ayuda | 2015-09-27 → 2015-10-11 (+14d) | 2015-09-28 → 2015-10-11 (+13d) |  |  | 7.56d → 5.38d |  |
| 168 | **Finalización del Proyecto** | 2015-11-19 → 2015-11-15 (-4d) | 2015-11-22 → 2015-11-21 (-1d) |  |  |  |  |
| 169 | Reflexionar sobre la experiencia realizada | 2015-11-19 → 2015-11-15 (-4d) | 2015-11-19 → 2015-11-15 (-4d) |  |  |  |  |
| 170 | Analizar errores cometidos | 2015-11-19 → 2015-11-15 (-4d) | 2015-11-20 → 2015-11-15 (-5d) |  |  |  |  |
| 171 | Documentación de cierre de proyecto | 2015-11-20 → 2015-11-15 (-5d) | 2015-11-21 → 2015-11-18 (-3d) |  |  |  |  |
| 172 | Cerrar el proyecto | 2015-11-21 → 2015-11-18 (-3d) | 2015-11-22 → 2015-11-21 (-1d) |  |  |  |  |

## Version 6 (data date 2015-06-07, saved 2015-10-31, file Gantt.mpp)

Note of the change: GANTT

Last finish 2015-11-21 → 2015-12-05 (+14d). Complete tasks 73 → 60.

Changed:

| ID | Task | Start | Finish | Duration | Complete | Total float |
| --- | --- | --- | --- | --- | --- | --- |
| 40 | **Desarrollo** | 2015-04-27 A → 2015-04-12 A (-15d) |  | 14.02d? → 15.18d? | 81% → 82% |  |
| 73 | **Escribir código JavaScript** | 2015-05-17 A → 2015-04-12 (-35d) | 2015-09-29 → 2015-04-12 (-170d) | 9.71d? → 0d? | 88% → 0% | 2.79d → 15.88d |
| 74 | Inscribirse al portal | 2015-05-17 A → 2015-05-11 (-6d) | 2015-05-24 A → 2015-05-22 (-2d) |  | 100% → 0% | none → -1.42d |
| 75 | Autenticarse como usuario | 2015-05-23 A → 2015-05-22 (-1d) | 2015-06-08 A → 2015-06-07 (-1d) |  | 100% → 0% | none → -1.42d |
| 76 | Modificar Usuario | 2015-05-27 A → 2015-06-08 (+12d) | 2015-05-31 A → 2015-06-14 (+14d) |  | 100% → 0% | none → -1.42d |
| 77 | Dar de baja Usuario | 2015-05-31 A → 2015-06-14 (+14d) | 2015-06-06 A → 2015-06-20 (+14d) |  | 100% → 0% | none → -1.42d |
| 78 | Inscribirse como emprendedor | 2015-06-28 A → 2015-07-07 (+9d) | 2015-08-02 A → 2015-08-12 (+10d) |  | 100% → 0% | none → -1.42d |
| 79 | Aprobar inscripción como emprendedor | 2015-07-04 A → 2015-08-12 (+39d) | 2015-07-06 A → 2015-08-17 (+42d) |  | 100% → 0% | none → -1.42d |
| 80 | Aplicar para crear emprendimiento | 2015-07-06 A → 2015-08-17 (+42d) | 2015-07-12 A → 2015-08-23 (+42d) |  | 100% → 0% | none → -1.42d |
| 81 | Aprobar emprendimiento | 2015-07-12 A → 2015-08-23 (+42d) | 2015-08-08 A → 2015-09-20 (+43d) |  | 100% → 0% | none → -1.42d |
| 82 | Modificar emprendimiento | 2015-07-19 A → 2015-09-20 (+63d) | 2015-07-26 A → 2015-10-03 (+69d) |  | 100% → 0% | none → -1.42d |
| 83 | Dar de baja emprendimiento | 2015-07-26 A → 2015-10-03 (+69d) | 2015-08-02 A → 2015-10-08 (+67d) |  | 100% → 0% | none → -1.42d |
| 84 | Aprobar baja de emprendimiento | 2015-08-23 A → 2015-10-25 (+63d) | 2015-08-26 A → 2015-10-28 (+63d) |  | 100% → 0% | none → -3.04d |
| 85 | Responder a inversor | 2015-08-26 A → 2015-10-28 (+63d) | 2015-08-29 A → 2015-10-31 (+63d) |  | 100% → 0% | none → -3.04d |
| 86 | Asociacion a emprendimiento | 2015-08-30 A → 2015-10-31 (+62d) | 2015-09-05 A → 2015-11-06 (+62d) |  | 100% → 0% | none → -3.04d |
| 87 | Consultar información a emprendedor | 2015-09-09 A → 2015-11-06 (+58d) | 2015-09-13 A → 2015-11-08 (+56d) |  | 100% → 0% | none → -3.04d |
| 88 | Buscar/filtrar emprendimientos | 2015-09-13 A → 2015-11-08 (+56d) | 2015-09-19 A → 2015-11-14 (+56d) |  | 100% → 0% | none → -3.04d |
| 89 | Realizar Pago | 2015-09-19 A → 2015-11-14 (+56d) | 2015-09-20 → 2015-11-15 (+56d) |  | 50% → 0% | 5.25d → -3.04d |
| 90 | Presentar estado de resultados | 2015-09-25 → 2015-11-19 (+55d) | 2015-09-26 → 2015-11-20 (+55d) |  |  | 5.38d → -2.91d |
| 91 | Promocionar estado de Resultados | 2015-09-26 → 2015-11-20 (+55d) | 2015-09-26 → 2015-11-21 (+56d) |  |  | 5.38d → -2.91d |
| 92 | Cancelar proyecto (manualmente y por finalizacion) | 2015-09-26 → 2015-11-21 (+56d) | 2015-09-27 → 2015-11-22 (+56d) |  |  | 5.38d → -2.91d |
| 93 | Promocionar emprendimiento | 2015-09-27 → 2015-11-22 (+56d) | 2015-09-27 → 2015-11-22 (+56d) |  |  | 5.38d → -2.91d |
| 94 | Difundir mail | 2015-09-27 → 2015-11-22 (+56d) | 2015-09-29 → 2015-11-23 (+55d) |  |  | 5.81d → -2.11d |
| 143 | **Revisión de pares de JavaScript** | 2015-06-13 A → 2015-04-12 (-62d) | 2015-10-11 → 2015-04-12 (-182d) | 8.62d? → 0d? | 44% → 0% | 2.6d → 15.88d |
| 144 | Revision 1 | 2015-06-13 A → 2015-06-21 (+8d) | 2015-06-28 → 2015-07-07 (+9d) |  | 90% → 0% | 10.02d → -1.42d |
| 145 | Revision 2 | 2015-08-08 A → 2015-10-08 (+61d) | 2015-08-26 → 2015-10-25 (+60d) |  | 50% → 0% | 5.85d → -1.42d |
| 146 | Revision 3 | 2015-09-20 → 2015-11-15 (+56d) | 2015-09-24 → 2015-11-18 (+55d) |  |  | 5.25d → -3.04d |
| 147 | Revision 4 | 2015-09-27 → 2015-11-22 (+56d) | 2015-10-11 → 2015-12-05 (+55d) |  |  | 5.38d → -2.91d |
| 153 | **Revisión de pares de PHP** |  |  |  | 66% → 84% | 0.48d → 0d |
| 154 | Revision 1 |  | 2015-07-09 A |  | 88% → 100% | 9.37d → none |
| 156 | Revision 3 | 2015-10-18 A | 2015-10-19 A |  | 0% → 100% | 4.05d → none |
| 161 | **Testing** |  |  |  | 43% → 60% |  |
| 164 | Ejecutar los casos de prueba | 2015-11-08 A |  |  | 0% → 30% | 0d → 0.12d |
| 165 | Documentar resultados de las pruebas | 2015-11-14 A |  |  | 0% → 30% |  |
| 166 | **Manuales** | 2015-10-11 → 2015-07-26 (-77d) | 2015-10-11 → 2015-07-26 (-77d) | 0.01d → 0.08d |  | 2.6d → 8d |
| 167 | Redactar manual de uso y ayuda | 2015-10-11 → 2015-07-26 (-77d) | 2015-10-11 → 2015-07-26 (-77d) |  |  | 5.38d → 16.68d |

## Version 7 (data date 2015-06-07, saved 2015-10-31, file Gantt2.mpp)

Note of the change: Gantt2

Last finish stays 2015-12-05. Complete tasks 60 → 73.

Changed:

| ID | Task | Start | Finish | Duration | Complete | Total float |
| --- | --- | --- | --- | --- | --- | --- |
| 40 | **Desarrollo** | 2015-04-12 A → 2015-04-27 A (+15d) | 2015-11-09 → 2015-11-22 (+13d) | 15.18d? → 15d? | 82% → 97% | 0.69d → 0d |
| 43 | Inicio Capacitación en Java | 2015-04-27 A → 2015-04-27 | 2015-05-11 A → 2015-05-10 (-1d) |  | 100% → 0% | none → -1.21d |
| 47 | Capacitación en Java | 2015-05-11 A → 2015-05-10 (-1d) | 2015-05-17 A → 2015-05-16 (-1d) |  | 100% → 0% | none → 13.75d |
| 51 | **Escribir código de Plantillas** |  | 2015-10-11 → 2015-11-22 (+42d) | 10.92d? → 14d? | 64% → 99% | 2.79d → 0d |
| 52 | Inscribirse al portal |  | 2015-06-21 A |  | 90% → 100% | 10.56d → none |
| 53 | Autenticarse como usuario |  | 2015-06-27 A |  | 90% → 100% | 10.42d → none |
| 54 | Modificar Usuario |  | 2015-06-27 A |  | 90% → 100% | 10.33d → none |
| 55 | Dar de baja Usuario |  | 2015-07-04 A |  | 90% → 100% | 10d → none |
| 56 | Inscribirse como emprendedor |  | 2015-07-20 A |  | 90% → 100% | 8.53d → none |
| 57 | Aprobar inscripción como emprendedor |  | 2015-07-26 → 2015-11-22 A (+119d) | 10h? → 44h? | 90% → 100% | 8.19d → none |
| 58 | Aplicar para crear emprendimiento |  | 2015-08-01 A |  | 90% → 100% | 7.85d → none |
| 59 | Aprobar emprendimiento |  | 2015-08-08 A |  | 90% → 100% | 15.58d → none |
| 60 | Modificar emprendimiento | 2015-08-04 A → 2015-08-08 (+4d) | 2015-08-10 → 2015-08-13 (+3d) |  | 90% → 0% | 14.99d → 15.2d |
| 61 | Dar de baja emprendimiento |  | 2015-08-16 A |  | 90% → 100% | 14.24d → none |
| 62 | Aprobar baja de emprendimiento | 2015-08-16 A → 2015-08-16 |  |  | 60% → 0% | 9.87d → 14.12d |
| 63 | Responder a inversor |  | 2015-08-24 A |  | 90% → 100% | 9.16d → none |
| 64 | Asociacion a emprendimiento |  | 2015-09-06 A |  | 90% → 100% | 7.45d → none |
| 65 | Consultar información a emprendedor |  |  |  | 90% → 75% | 6.24d → 10.37d |
| 66 | Buscar/filtrar emprendimientos |  | 2015-09-18 A |  | 90% → 100% | 5.87d → none |
| 67 | Realizar Pago | 2015-09-18 A | 2015-10-11 A |  | 0% → 100% | 5.87d → none |
| 70 | Cancelar proyecto (manualmente y por finalizacion) | 2015-10-02 A | 2015-10-04 A |  | 0% → 100% | 5.09d → none |
| 73 | **Escribir código JavaScript** | 2015-04-12 → 2015-05-10 (+28d) | 2015-04-12 → 2015-11-22 (+224d) | 0d? → 14.08d? |  | 15.88d → -1.21d |
| 74 | Inscribirse al portal | 2015-05-11 → 2015-05-10 (-1d) | 2015-05-22 → 2015-05-17 (-5d) |  |  | -1.42d → -1.21d |
| 75 | Autenticarse como usuario | 2015-05-22 → 2015-05-18 (-4d) | 2015-06-07 → 2015-06-06 (-1d) |  |  | -1.42d → -1.21d |
| 76 | Modificar Usuario | 2015-06-08 → 2015-06-07 (-1d) | 2015-06-14 → 2015-06-13 (-1d) |  |  | -1.42d → -1.21d |
| 77 | Dar de baja Usuario | 2015-06-14 → 2015-06-13 (-1d) | 2015-06-20 → 2015-06-19 (-1d) |  |  | -1.42d → -1.21d |
| 78 | Inscribirse como emprendedor | 2015-07-07 → 2015-07-05 (-2d) | 2015-08-12 → 2015-08-09 (-3d) |  |  | -1.42d → -1.21d |
| 79 | Aprobar inscripción como emprendedor | 2015-08-12 → 2015-08-09 (-3d) | 2015-08-17 → 2015-08-16 (-1d) |  |  | -1.42d → -1.21d |
| 80 | Aplicar para crear emprendimiento | 2015-08-17 → 2015-08-16 (-1d) | 2015-08-23 → 2015-08-22 (-1d) |  |  | -1.42d → -1.21d |
| 81 | Aprobar emprendimiento | 2015-08-23 → 2015-08-22 (-1d) | 2015-09-20 → 2015-09-19 (-1d) |  |  | -1.42d → -1.21d |
| 82 | Modificar emprendimiento | 2015-09-20 → 2015-09-19 (-1d) | 2015-10-03 → 2015-09-29 (-4d) |  |  | -1.42d → -1.21d |
| 83 | Dar de baja emprendimiento | 2015-10-03 → 2015-09-29 (-4d) | 2015-10-08 → 2015-10-04 (-4d) |  |  | -1.42d → -1.21d |
| 84 | Aprobar baja de emprendimiento | 2015-10-25 → 2015-10-24 (-1d) | 2015-10-28 → 2015-10-25 (-3d) |  |  | -3.04d → -2.53d |
| 85 | Responder a inversor | 2015-10-28 → 2015-10-25 (-3d) | 2015-10-31 → 2015-10-29 (-2d) |  |  | -3.04d → -2.53d |
| 86 | Asociacion a emprendimiento | 2015-10-31 → 2015-10-29 (-2d) | 2015-11-06 → 2015-11-03 (-3d) |  |  | -3.04d → -2.53d |
| 87 | Consultar información a emprendedor | 2015-11-06 → 2015-11-03 (-3d) |  |  |  | -3.04d → -2.53d |
| 88 | Buscar/filtrar emprendimientos |  | 2015-11-14 → 2015-11-11 (-3d) |  |  | -3.04d → -2.53d |
| 89 | Realizar Pago | 2015-11-14 → 2015-11-11 (-3d) | 2015-11-15 → 2015-11-14 (-1d) |  |  | -3.04d → -2.53d |
| 90 | Presentar estado de resultados | 2015-11-19 → 2015-11-16 (-3d) | 2015-11-20 → 2015-11-17 (-3d) |  |  | -2.91d → -2.15d |
| 91 | Promocionar estado de Resultados | 2015-11-20 → 2015-11-17 (-3d) | 2015-11-21 → 2015-11-18 (-3d) |  |  | -2.91d → -2.15d |
| 92 | Cancelar proyecto (manualmente y por finalizacion) | 2015-11-21 → 2015-11-18 (-3d) | 2015-11-22 → 2015-11-21 (-1d) |  |  | -2.91d → -2.15d |
| 93 | Promocionar emprendimiento | 2015-11-22 → 2015-11-21 (-1d) | 2015-11-22 → 2015-11-21 (-1d) |  |  | -2.91d → -2.15d |
| 94 | Difundir mail | 2015-11-22 → 2015-11-21 (-1d) | 2015-11-23 → 2015-11-22 (-1d) |  |  | -2.11d → -1.78d |
| 95 | **Escribir código PHP** |  | 2015-11-08 → 2015-11-01 (-7d) | 10.5d? → 10d? | 78% → 93% | 0.88d → 1.67d |
| 110 | Buscar/filtrar emprendimientos |  | 2015-10-24 → 2015-10-26 (+2d) |  | 33% → 25% | 0.38d → 0d |
| 111 | Realizar Pago |  |  |  | 23% → 75% | 0.38d → 0.08d |
| 112 | Presentar estado de resultados |  | 2015-10-30 → 2015-10-31 (+1d) |  |  | 0.38d → -0.04d |
| 113 | Promocionar estado de Resultados |  | 2015-11-01 → 2015-10-31 (-1d) |  |  | 0.38d → -0.04d |
| 114 | Cancelar proyecto (manualmente y por finalizacion) | 2015-11-01 → 2015-10-31 A (-1d) |  |  | 0% → 50% | 0.38d → 1.5d |
| 115 | Promocionar emprendimiento |  | 2015-11-04 → 2015-11-02 (-2d) |  |  | 0.38d → 0.62d |
| 116 | Difundir mail | 2015-11-04 → 2015-11-02 (-2d) | 2015-11-08 → 2015-11-07 (-1d) |  |  | 0.38d → 0.62d |
| 138 | **Revisión de pares de Plantillas** |  | 2015-10-17 A |  | 70% → 100% | 2.5d → none |
| 142 | Revision 4 | 2015-10-07 A | 2015-10-17 A |  | 0% → 100% | 5.19d → none |
| 143 | **Revisión de pares de JavaScript** | 2015-04-12 → 2015-06-19 (+68d) | 2015-04-12 → 2015-12-04 (+236d) | 0d? → 12d? |  | 15.88d → -1.21d |
| 144 | Revision 1 | 2015-06-21 → 2015-06-19 (-2d) | 2015-07-07 → 2015-07-05 (-2d) |  |  | -1.42d → -1.21d |
| 145 | Revision 2 | 2015-10-08 → 2015-10-04 (-4d) | 2015-10-25 → 2015-10-24 (-1d) |  |  | -1.42d → -1.21d |
| 146 | Revision 3 | 2015-11-15 → 2015-11-14 (-1d) | 2015-11-18 → 2015-11-15 (-3d) |  |  | -3.04d → -2.53d |
| 147 | Revision 4 | 2015-11-22 → 2015-11-21 (-1d) | 2015-12-05 → 2015-12-04 (-1d) |  |  | -2.91d → -2.15d |
| 157 | Revision 4 | 2015-10-30 → 2015-10-29 (-1d) |  |  |  | 0.38d → 0.08d |
| 161 | **Testing** |  |  |  | 60% → 71% | 0d → 0.17d |
| 164 | Ejecutar los casos de prueba |  |  |  | 30% → 50% | 0.12d → 0.21d |
| 165 | Documentar resultados de las pruebas |  |  |  | 30% → 50% | 0d → 0.46d |
| 166 | **Manuales** | 2015-07-26 → 2015-04-12 (-105d) | 2015-07-26 → 2015-04-12 (-105d) | 0.08d → 0d |  | 8d → 16.17d |
| 167 | Redactar manual de uso y ayuda | 2015-07-26 → 2015-12-04 (+131d) | 2015-07-26 → 2015-12-05 (+132d) |  |  | 16.68d → -2.15d |

## Version 8 (data date 2015-06-07, saved 2015-11-02, file Gantt.mpp)

Note of the change: GANTT DE GARCHA

Last finish 2015-12-05 → 2016-02-03 (+60d). Complete tasks 73 → 79.

Added:

| ID | Task | Duration | Start | Finish | Predecessors | Resources |
| --- | --- | --- | --- | --- | --- | --- |
| 67 | Dar de baja emprendimiento (baja manual) | 6h? | 2015-10-11 A | 2015-10-17 A | 66 | Budic-DESAROLLADOR; Croci-DESAROLLADOR |
| 111 | Dar de baja empremdimiento (baja manual) | 20h? | 2015-10-17 A | 2015-10-24 A | 110 | Croci-DESAROLLADOR; Rodriguez-DESAROLLADOR |
| 112 | Cancelar emprendimiento (baja por tiempo) | 24.99h? | 2015-10-24 A | 2015-11-01 | 111 | Rodriguez-DESAROLLADOR; Croci-DESAROLLADOR |
| 161 | **Legales** | 1.85d? | 2015-09-13 A | 2015-10-17 A |  |  |
| 162 | Desarrollar contrato Fideicomiso | 40h? | 2015-09-20 A | 2015-10-04 A | 165 | Tiberti-ANALISTA LEGAL |
| 163 | Desarrollar contrato de inversion | 12h? | 2015-10-04 A | 2015-10-10 A | 165 | Tiberti-ANALISTA LEGAL |
| 164 | Desarrollar términos y condiciones | 20h? | 2015-10-10 A | 2015-10-17 A | 162, 163 | Tiberti-ANALISTA LEGAL |
| 165 | Desarrollar reglas de negocio y aspectos legales | 20h? | 2015-09-13 A | 2015-09-20 A | 22 | Tiberti-ANALISTA LEGAL |

Removed: 61 Dar de baja emprendimiento; 105 Dar de baja emprendimiento; 114 Cancelar proyecto (manualmente y por finalizacion)

Changed:

| ID | Task | Start | Finish | Duration | Complete | Total float | Predecessors | Other |
| --- | --- | --- | --- | --- | --- | --- | --- | --- |
| 1 | **Análisis** |  | 2015-05-17 A → 2015-06-07 A (+21d) | 2.5d → 3.29d |  |  |  |  |
| 2 | **Riesgos** |  | 2015-04-18 A → 2015-04-25 A (+7d) | 0.42d → 0.71d |  |  |  |  |
| 4 | Analizar los riegos |  | 2015-04-12 A → 2015-04-18 A (+6d) |  |  |  |  |  |
| 5 | Planificación de riesgos | 2015-04-12 A → 2015-04-18 A (+6d) | 2015-04-18 A → 2015-04-25 A (+7d) |  |  |  |  |  |
| 6 | Completar tabla de riesgos | 2015-04-18 A → 2015-04-25 A (+7d) | 2015-04-18 A → 2015-04-25 A (+7d) |  |  |  |  |  |
| 7 | **Planificación** | 2015-04-19 A → 2015-05-02 A (+13d) | 2015-05-10 A → 2015-05-30 A (+20d) | 1.5d → 1.62d |  |  |  |  |
| 8 | Identificar las tareas para cada entregable | 2015-04-19 A → 2015-05-02 A (+13d) | 2015-04-25 A → 2015-05-10 A (+15d) |  |  |  |  |  |
| 9 | Definir las precedencias | 2015-04-25 A → 2015-05-10 A (+15d) | 2015-04-26 A → 2015-05-16 A (+20d) |  |  |  |  |  |
| 10 | Estimar los tiempos de cada tarea | 2015-04-26 A → 2015-05-16 A (+20d) | 2015-04-26 A → 2015-05-17 A (+21d) | 3h → 6h |  |  |  | resources Budic-PROJECT MANAGER; Tiberti-ADMINISTRADOR DE BASE DE DATOS; Tiberti-ADMINISTRADOR DEL ENTORNO DE DESARROLLO; Croci-ANALISTA FUNCIONAL; Rodriguez-ARQUITECTO DE SOFTWARE; Budic-TESTER; Croci-DISEÑADOR DE EXPERIENCIA DE USUARIO → Budic-PROJECT MANAGER; Tiberti-ADMINISTRADOR DE BASE DE DATOS; Tiberti-ADMINISTRADOR DEL ENTORNO DE DESARROLLO; Tiberti-ANALISTA FUNCIONAL; Rodriguez-ARQUITECTO DE SOFTWARE; Budic-TESTER; Croci-DISEÑADOR DE EXPERIENCIA DE USUARIO |
| 11 | Calcular el camino crítico | 2015-05-10 A → 2015-05-30 A (+20d) | 2015-05-10 A → 2015-05-30 A (+20d) |  |  |  |  |  |
| 12 | Realizar diagrama de Gantt | 2015-04-26 A → 2015-05-17 A (+21d) | 2015-05-03 A → 2015-05-26 A (+23d) |  |  |  |  |  |
| 13 | **Roles y Responsabilidades** | 2015-05-10 A → 2015-05-30 A (+20d) | 2015-05-12 A → 2015-05-31 A (+19d) |  |  |  |  |  |
| 14 | Identificar roles | 2015-05-10 A → 2015-05-30 A (+20d) | 2015-05-10 A → 2015-05-30 A (+20d) |  |  |  |  | resources Budic-PROJECT MANAGER; Croci-ANALISTA FUNCIONAL → Budic-PROJECT MANAGER; Tiberti-ANALISTA FUNCIONAL |
| 15 | Asignar responsabilidades a los roles | 2015-05-10 A → 2015-05-30 A (+20d) | 2015-05-12 A → 2015-05-31 A (+19d) |  |  |  |  |  |
| 16 | **Habilidades y Competencias** | 2015-05-12 A → 2015-05-31 A (+19d) | 2015-05-16 A → 2015-06-07 A (+22d) | 0.25d → 0.35d |  |  |  |  |
| 17 | Asignar competencias a los roles | 2015-05-12 A → 2015-05-31 A (+19d) | 2015-05-16 A → 2015-06-07 A (+22d) |  |  |  |  |  |
| 18 | **Comunicación** | 2015-05-16 A → 2015-06-07 A (+22d) | 2015-05-17 A → 2015-06-07 A (+21d) | 0.04d → 0.08d |  |  |  |  |
| 19 | Establecer canales de comunicación entre roles | 2015-05-16 A → 2015-06-07 A (+22d) | 2015-05-17 A → 2015-06-07 A (+21d) |  |  |  |  |  |
| 20 | **WBS** | 2015-04-18 A → 2015-04-25 A (+7d) | 2015-04-19 A → 2015-05-02 A (+13d) | 0.21d → 0.44d |  |  |  |  |
| 21 | Definir entregables | 2015-04-18 A → 2015-04-25 A (+7d) | 2015-04-19 A → 2015-05-02 A (+13d) |  |  |  |  | resources Budic-PROJECT MANAGER; Croci-ANALISTA FUNCIONAL → Budic-PROJECT MANAGER; Tiberti-ANALISTA FUNCIONAL |
| 22 | **Diseño** | 2015-04-25 A → 2015-05-10 A (+15d) | 2015-06-28 A → 2015-09-13 A (+77d) | 4.65d → 7.12d |  |  |  |  |
| 23 | **Casos de Uso** | 2015-05-12 A → 2015-05-31 A (+19d) | 2015-06-21 A → 2015-08-29 A (+69d) | 2.79d → 4.94d |  |  |  |  |
| 24 | Identificar actores y funcionalidades | 2015-05-12 A → 2015-05-31 A (+19d) | 2015-05-24 A → 2015-06-27 A (+34d) |  |  |  |  | resources Croci-ANALISTA FUNCIONAL; Budic-ANALISTA FUNCIONAL → Tiberti-ANALISTA FUNCIONAL; Budic-ANALISTA FUNCIONAL |
| 25 | Describir casos de uso | 2015-05-24 A → 2015-06-27 A (+34d) | 2015-06-18 A → 2015-08-15 A (+58d) |  |  |  |  | resources Croci-ANALISTA FUNCIONAL; Budic-PROJECT MANAGER → Tiberti-ANALISTA FUNCIONAL; Budic-PROJECT MANAGER |
| 26 | Describir las relaciones entre los actores y casos de uso | 2015-06-14 A → 2015-08-15 A (+62d) | 2015-06-21 A → 2015-08-29 A (+69d) | 4h → 9h |  |  |  | resources Croci-ANALISTA FUNCIONAL; Budic-ANALISTA FUNCIONAL → Tiberti-ANALISTA FUNCIONAL; Budic-ANALISTA FUNCIONAL |
| 27 | **DER** | 2015-05-24 A → 2015-06-27 A (+34d) | 2015-06-21 A → 2015-08-15 A (+55d) | 2d → 2.77d |  |  |  |  |
| 28 | Definir entidades y sus atributos | 2015-05-24 A → 2015-06-27 A (+34d) | 2015-05-29 A → 2015-07-04 A (+36d) |  |  |  |  | resources Tiberti-ADMINISTRADOR DE BASE DE DATOS; Croci-ANALISTA FUNCIONAL; Rodriguez-ARQUITECTO DE SOFTWARE; Budic-PROJECT MANAGER → Tiberti-ADMINISTRADOR DE BASE DE DATOS; Tiberti-ANALISTA FUNCIONAL; Rodriguez-ARQUITECTO DE SOFTWARE; Budic-PROJECT MANAGER |
| 29 | Describir las relaciones entre las entidades | 2015-05-29 A → 2015-07-05 A (+37d) | 2015-06-18 A → 2015-08-08 A (+51d) |  |  |  |  | resources Tiberti-ADMINISTRADOR DE BASE DE DATOS; Croci-ANALISTA FUNCIONAL → Tiberti-ADMINISTRADOR DE BASE DE DATOS; Tiberti-ANALISTA FUNCIONAL |
| 30 | Normalizar DER | 2015-06-18 A → 2015-08-09 A (+52d) | 2015-06-21 A → 2015-08-15 A (+55d) |  |  |  |  |  |
| 31 | **Maqueta del Front-End** | 2015-06-21 A → 2015-08-15 A (+55d) | 2015-06-26 A → 2015-08-23 A (+58d) | 0.33d → 0.52d |  |  |  |  |
| 32 | Diseñar disposición de elementos estéticamente | 2015-06-21 A → 2015-08-15 A (+55d) | 2015-06-26 A → 2015-08-23 A (+58d) |  |  |  |  |  |
| 33 | **Documento De Arquitectura** | 2015-04-25 A → 2015-05-10 A (+15d) | 2015-04-27 A → 2015-05-17 A (+20d) | 0.21d → 0.44d |  |  |  |  |
| 34 | Definir arquitectura de software | 2015-04-25 A → 2015-05-10 A (+15d) | 2015-04-27 A → 2015-05-17 A (+20d) |  |  |  |  |  |
| 35 | **Especificación de la BD** | 2015-06-21 A → 2015-08-29 A (+69d) | 2015-06-28 A → 2015-09-13 A (+77d) | 0.6d → 0.92d |  |  |  |  |
| 36 | Diseño de tablas de la BD | 2015-06-21 A → 2015-08-29 A (+69d) | 2015-06-23 A → 2015-08-30 A (+68d) |  |  |  |  | resources Tiberti-ADMINISTRADOR DE BASE DE DATOS; Croci-ANALISTA FUNCIONAL; Rodriguez-ARQUITECTO DE SOFTWARE → Tiberti-ADMINISTRADOR DE BASE DE DATOS; Tiberti-ANALISTA FUNCIONAL; Rodriguez-ARQUITECTO DE SOFTWARE |
| 37 | Definir tipo y volumen de datos | 2015-06-26 A → 2015-09-05 A (+71d) | 2015-06-27 A → 2015-09-06 A (+71d) |  |  |  |  |  |
| 38 | Relaciones entre las tablas de la BD | 2015-06-23 A → 2015-08-30 A (+68d) | 2015-06-26 A → 2015-09-05 A (+71d) |  |  |  |  |  |
| 39 | Definir políticas de seguridad e integridad | 2015-06-27 A → 2015-09-06 A (+71d) | 2015-06-28 A → 2015-09-13 A (+77d) |  |  |  |  | resources Tiberti-ADMINISTRADOR DE BASE DE DATOS; Croci-ANALISTA FUNCIONAL; Rodriguez-ARQUITECTO DE SOFTWARE → Tiberti-ADMINISTRADOR DE BASE DE DATOS; Tiberti-ANALISTA FUNCIONAL; Rodriguez-ARQUITECTO DE SOFTWARE |
| 40 | **Desarrollo** | 2015-04-27 A → 2015-05-17 A (+20d) | 2015-11-22 → 2015-11-07 (-15d) | 15d? → 9.77d? | 97% → 96% | 0d → 0.08d |  |  |
| 41 | **Capacitacion** | 2015-04-27 A → 2015-05-17 A (+20d) | 2015-07-05 A → 2015-09-05 A (+62d) | 4.96d? → 6.21d? |  |  |  |  |
| 42 | Inicio Capacitación en HTML | 2015-04-27 A → 2015-05-17 A (+20d) | 2015-05-04 A → 2015-05-30 A (+26d) | 15h → 10h |  |  |  | resources Tiberti-DESAROLLADOR → Budic-DESAROLLADOR |
| 43 | Inicio Capacitación en JavaScript | 2015-04-27 → 2015-05-17 (+20d) | 2015-05-10 → 2015-06-07 (+28d) |  |  | -1.21d → -8.94d |  | was named Inicio Capacitación en Java |
| 44 | Inicio Capacitación en CSS | 2015-04-27 A → 2015-05-17 A (+20d) | 2015-05-11 A → 2015-05-30 A (+19d) | 20h → 10h |  |  |  |  |
| 45 | Inicio Capacitación en PHP | 2015-04-27 A → 2015-05-17 A (+20d) | 2015-05-11 A → 2015-06-07 A (+27d) |  |  |  |  | resources Rodriguez-DESAROLLADOR → Rodriguez-DESAROLLADOR; Croci-DESAROLLADOR |
| 46 | Capacitación en HTML | 2015-05-09 A → 2015-05-30 A (+21d) | 2015-05-31 A → 2015-07-19 A (+49d) | 30h → 20h |  |  |  | resources Tiberti-DESAROLLADOR → Budic-DESAROLLADOR |
| 47 | Capacitación en Java | 2015-05-10 → 2015-06-07 (+28d) | 2015-05-16 → 2015-06-14 (+29d) |  |  | 13.75d → 8.75d |  |  |
| 48 | Capacitación en CSS | 2015-05-09 A → 2015-05-30 A (+21d) | 2015-07-05 A → 2015-06-27 A (-8d) | 50h → 20h |  |  |  |  |
| 49 | Capacitación en PHP | 2015-05-11 A → 2015-06-07 A (+27d) | 2015-06-14 A → 2015-09-05 A (+83d) |  |  |  |  |  |
| 50 | Capacitacion Symfony | 2015-05-11 A → 2015-06-07 A (+27d) | 2015-06-20 A → 2015-08-23 A (+64d) | 53.02h? → 61.97h? |  |  |  |  |
| 51 | **Escribir código de Plantillas** | 2015-05-11 A → 2015-05-30 A (+19d) | 2015-11-22 → 2015-10-18 A (-35d) | 14d? → 8.08d? | 99% → 100% | 0d → none |  |  |
| 52 | Inscribirse al portal | 2015-05-11 A → 2015-05-30 A (+19d) | 2015-06-21 A → 2015-06-13 A (-8d) | 15h? → 10h? |  |  |  | resources Budic-DESAROLLADOR → Budic-DESAROLLADOR; Croci-DESAROLLADOR |
| 53 | Autenticarse como usuario | 2015-05-17 A → 2015-06-13 A (+27d) | 2015-06-27 A → 2015-07-12 A (+15d) | 15h? → 10h? |  |  |  | resources Budic-DESAROLLADOR → Budic-DESAROLLADOR; Croci-DESAROLLADOR |
| 54 | Modificar Usuario | 2015-06-01 A → 2015-07-12 A (+41d) | 2015-06-27 A → 2015-07-19 A (+22d) | 10h? → 8h? |  |  |  | resources Budic-DESAROLLADOR → Budic-DESAROLLADOR; Croci-DESAROLLADOR |
| 55 | Dar de baja Usuario | 2015-06-07 A → 2015-07-19 A (+42d) | 2015-07-04 A → 2015-07-26 A (+22d) | 10h? → 6h? |  |  |  | resources Budic-DESAROLLADOR → Budic-DESAROLLADOR; Croci-DESAROLLADOR |
| 56 | Inscribirse como emprendedor | 2015-07-11 A → 2015-08-09 A (+29d) | 2015-07-20 A → 2015-08-16 A (+27d) | 15h? → 7h? |  |  |  | resources Budic-DESAROLLADOR → Budic-DESAROLLADOR; Croci-DESAROLLADOR |
| 57 | Aprobar inscripción como emprendedor | 2015-07-15 A → 2015-08-16 A (+32d) | 2015-11-22 A → 2015-09-05 A (-78d) | 44h? → 5h? |  |  |  | resources Budic-DESAROLLADOR → Budic-DESAROLLADOR; Croci-DESAROLLADOR |
| 58 | Aplicar para crear emprendimiento | 2015-07-21 A → 2015-09-05 A (+46d) | 2015-08-01 A → 2015-09-06 A (+36d) | 10h? → 5h? |  |  |  | resources Budic-DESAROLLADOR → Budic-DESAROLLADOR; Croci-DESAROLLADOR |
| 59 | Aprobar emprendimiento | 2015-08-01 A → 2015-09-06 A (+36d) | 2015-08-08 A → 2015-09-08 A (+31d) | 15h? → 5.03h? |  |  |  | resources Budic-DESAROLLADOR → Budic-DESAROLLADOR; Croci-DESAROLLADOR |
| 60 | Modificar emprendimiento | 2015-08-08 → 2015-09-08 (+31d) | 2015-08-13 → 2015-09-17 (+35d) |  |  | 15.2d → 7.57d |  |  |
| 61 | Buscar/filtrar emprendimientos | 2015-09-13 A → 2015-09-08 A (-5d) | 2015-09-18 A → 2015-09-12 A (-6d) | 10h? → 5h? |  |  | 65 → 59 | resources Budic-DESAROLLADOR → Budic-DESAROLLADOR; Croci-DESAROLLADOR |
| 62 | Aprobar baja de emprendimiento | 2015-08-16 → 2015-09-26 (+41d) | 2015-08-21 → 2015-09-27 (+37d) |  |  | 14.12d → 6.09d |  |  |
| 63 | Responder a inversor | 2015-08-22 A → 2015-09-26 A (+35d) | 2015-08-24 A → 2015-09-26 A (+33d) | 10h? → 3h? |  |  | 62 → 140 |  |
| 64 | Asociacion a emprendimiento | 2015-09-01 A → 2015-09-26 A (+25d) | 2015-09-06 A → 2015-09-27 A (+21d) | 10h? → 4h? |  |  |  |  |
| 65 | Consultar información a emprendedor | 2015-09-12 A → 2015-09-27 A (+15d) | 2015-09-13 → 2015-10-10 A (+27d) | 10h? → 8h? | 75% → 100% | 10.37d → none |  | resources Budic-DESAROLLADOR → Budic-DESAROLLADOR; Croci-DESAROLLADOR |
| 66 | Realizar Pago | 2015-09-18 A → 2015-10-10 A (+22d) |  | 20h? → 6h? |  |  | 61 → 65 | resources Budic-DESAROLLADOR → Budic-DESAROLLADOR; Croci-DESAROLLADOR |
| 68 | Presentar estado de resultados | 2015-09-25 → 2015-10-18 (+23d) | 2015-09-27 → 2015-10-22 (+25d) |  |  | 7.8d → 3.02d |  |  |
| 69 | Promocionar estado de resultados | 2015-09-27 → 2015-10-22 (+25d) | 2015-10-02 → 2015-10-25 (+23d) |  |  | 7.8d → 3.02d |  | was named Promocionar estado de Resultados |
| 70 | Cancelar emprendimiento (baja por tiempo) | 2015-10-02 A → 2015-10-17 A (+15d) | 2015-10-04 A → 2015-10-18 A (+14d) | 10h? → 6h? |  |  | 69 → 67 | was named Cancelar proyecto (manualmente y por finalizacion) |
| 71 | Promocionar emprendimiento | 2015-10-04 → 2015-10-18 (+14d) | 2015-10-07 → 2015-10-23 (+16d) |  |  | 5.13d → 3.23d |  |  |
| 72 | Difundir Mail | 2015-10-07 → 2015-10-23 (+16d) | 2015-10-09 → 2015-10-24 (+15d) |  |  | 6.82d → 3.23d |  |  |

| ID | Task | Start | Finish | Duration | Complete | Total float | Predecessors | Other |
| --- | --- | --- | --- | --- | --- | --- | --- | --- |
| 73 | **Escribir código JavaScript** | 2015-05-10 → 2015-06-07 (+28d) | 2015-11-22 → 2016-02-03 (+73d) | 14.08d? → 19.44d? |  | -1.21d → -10.06d |  |  |
| 74 | Inscribirse al portal | 2015-05-10 → 2015-06-07 (+28d) | 2015-05-17 → 2015-06-21 (+35d) |  |  | -1.21d → -8.94d |  |  |
| 75 | Autenticarse como usuario | 2015-05-18 → 2015-06-21 (+34d) | 2015-06-06 → 2015-07-25 (+49d) |  |  | -1.21d → -9d |  |  |
| 76 | Modificar Usuario | 2015-06-07 → 2015-07-25 (+48d) | 2015-06-13 → 2015-08-02 (+50d) |  |  | -1.21d → -9d |  |  |
| 77 | Dar de baja Usuario | 2015-06-13 → 2015-08-02 (+50d) | 2015-06-19 → 2015-08-15 (+57d) |  |  | -1.21d → -9d |  |  |
| 78 | Inscribirse como emprendedor | 2015-07-05 → 2015-09-12 (+69d) | 2015-08-09 → 2015-11-14 (+97d) |  |  | -1.21d → -9d |  |  |
| 79 | Aprobar inscripción como emprendedor | 2015-08-09 → 2015-11-14 (+97d) | 2015-08-16 → 2015-11-22 (+98d) |  |  | -1.21d → -9d |  |  |
| 80 | Aplicar para crear emprendimiento | 2015-08-16 → 2015-11-22 (+98d) | 2015-08-22 → 2015-11-29 (+99d) |  |  | -1.21d → -9d |  |  |
| 81 | Aprobar emprendimiento | 2015-08-22 → 2015-11-29 (+99d) | 2015-09-19 → 2016-01-05 (+108d) |  |  | -1.21d → -8.89d |  |  |
| 82 | Modificar emprendimiento | 2015-09-19 → 2016-01-05 (+108d) | 2015-09-29 → 2016-01-07 (+100d) |  |  | -1.21d → -8.67d |  |  |
| 83 | Dar de baja emprendimiento | 2015-09-29 → 2016-01-07 (+100d) | 2015-10-04 → 2016-01-08 (+96d) |  |  | -1.21d → -8.46d |  |  |
| 84 | Aprobar baja de emprendimiento | 2015-10-24 → 2016-01-14 (+82d) | 2015-10-25 → 2016-01-18 (+85d) |  |  | -2.53d → -12.85d |  |  |
| 85 | Responder a inversor | 2015-10-25 → 2016-01-18 (+85d) | 2015-10-29 → 2016-01-19 (+82d) |  |  | -2.53d → -12.85d |  |  |
| 86 | Asociacion a emprendimiento | 2015-10-29 → 2016-01-19 (+82d) | 2015-11-03 → 2016-01-21 (+79d) |  |  | -2.53d → -12.85d |  |  |
| 87 | Consultar información a emprendedor | 2015-11-03 → 2016-01-21 (+79d) | 2015-11-08 → 2016-01-25 (+78d) |  |  | -2.53d → -12.85d |  |  |
| 88 | Buscar/filtrar emprendimientos | 2015-11-08 → 2016-01-25 (+78d) | 2015-11-11 → 2016-01-27 (+77d) |  |  | -2.53d → -12.85d |  |  |
| 89 | Realizar Pago | 2015-11-11 → 2016-01-27 (+77d) | 2015-11-14 → 2016-01-28 (+75d) |  |  | -2.53d → -12.85d |  |  |
| 90 | Presentar estado de resultados | 2015-11-16 → 2016-01-29 (+74d) | 2015-11-17 → 2016-01-29 (+73d) |  |  | -2.15d → -12.85d |  |  |
| 91 | Promocionar estado de Resultados | 2015-11-17 → 2016-01-29 (+73d) | 2015-11-18 → 2016-02-01 (+75d) |  |  | -2.15d → -12.85d |  |  |
| 92 | Cancelar proyecto (manualmente y por finalizacion) | 2015-11-18 → 2016-02-01 (+75d) | 2015-11-21 → 2016-02-01 (+72d) |  |  | -2.15d → -12.85d |  |  |
| 93 | Promocionar emprendimiento | 2015-11-21 → 2016-02-01 (+72d) | 2015-11-21 → 2016-02-02 (+73d) |  |  | -2.15d → -12.85d |  |  |
| 94 | Difundir mail | 2015-11-21 → 2016-02-02 (+73d) | 2015-11-22 → 2016-02-03 (+73d) |  |  | -1.78d → -12.64d |  |  |
| 95 | **Escribir código PHP** | 2015-06-14 A → 2015-06-07 A (-7d) | 2015-11-01 → 2015-11-06 (+5d) | 10d? → 8.56d? | 93% → 90% | 1.67d → 0.1d |  |  |
| 96 | Inscribirse al portal | 2015-06-14 A → 2015-06-07 A (-7d) | 2015-07-08 A → 2015-06-27 A (-11d) | 25h? → 20h? |  |  |  | resources Rodriguez-DESAROLLADOR → Croci-DESAROLLADOR; Rodriguez-DESAROLLADOR |
| 97 | Autenticarse como usuario | 2015-06-21 A → 2015-07-04 A (+13d) | 2015-08-20 A → 2015-07-18 A (-33d) | 20h? → 15h? |  |  |  | resources Rodriguez-DESAROLLADOR → Croci-DESAROLLADOR; Rodriguez-DESAROLLADOR |
| 98 | Modificar Usuario | 2015-06-28 A → 2015-07-18 A (+20d) | 2015-08-30 A → 2015-07-26 A (-35d) | 15h? → 10h? |  |  |  | resources Rodriguez-DESAROLLADOR → Croci-DESAROLLADOR; Rodriguez-DESAROLLADOR |
| 99 | Dar de baja Usuario | 2015-07-03 A → 2015-07-26 A (+23d) | 2015-08-31 A → 2015-08-08 A (-23d) |  |  |  |  | resources Rodriguez-DESAROLLADOR → Croci-DESAROLLADOR; Rodriguez-DESAROLLADOR |
| 100 | Inscribirse como emprendedor | 2015-07-05 A → 2015-08-08 A (+34d) | 2015-09-05 A → 2015-08-16 A (-20d) | 15h? → 10h? |  |  |  | resources Rodriguez-DESAROLLADOR → Croci-DESAROLLADOR; Rodriguez-DESAROLLADOR |
| 101 | Aprobar inscripción como emprendedor | 2015-07-11 A → 2015-08-16 A (+36d) | 2015-09-07 A → 2015-08-23 A (-15d) | 15h? → 10h? |  |  |  | resources Rodriguez-DESAROLLADOR → Croci-DESAROLLADOR; Rodriguez-DESAROLLADOR |
| 102 | Aplicar para crear emprendimiento | 2015-07-14 A → 2015-08-23 A (+40d) | 2015-09-12 A → 2015-09-05 A (-7d) | 15h? → 10h? |  |  |  | resources Rodriguez-DESAROLLADOR → Croci-DESAROLLADOR; Rodriguez-DESAROLLADOR |
| 103 | Aprobar emprendimiento | 2015-08-01 A → 2015-09-12 A (+42d) | 2015-10-04 A → 2015-09-13 A (-21d) | 20h? → 8h? |  |  |  | resources Rodriguez-DESAROLLADOR → Croci-DESAROLLADOR; Rodriguez-DESAROLLADOR |
| 104 | Modificar emprendimiento | 2015-08-03 A → 2015-09-13 (+41d) | 2015-10-07 A → 2015-09-17 (-20d) | 15h? → 7.5h? | 100% → 0% | none → 7.58d |  | resources Rodriguez-DESAROLLADOR → Croci-DESAROLLADOR; Rodriguez-DESAROLLADOR |
| 105 | Buscar/filtrar emprendimientos | 2015-10-23 A → 2015-09-13 A (-40d) | 2015-10-26 → 2015-09-19 A (-37d) | 3h? → 10h? | 25% → 100% | 0d → none | 109 → 103 | resources Rodriguez-DESAROLLADOR → Croci-DESAROLLADOR; Rodriguez-DESAROLLADOR |
| 106 | Aprobar baja de emprendimiento | 2015-10-07 A → 2015-09-19 (-18d) | 2015-10-11 A → 2015-09-20 (-21d) | 15h? → 7.5h? | 100% → 0% | none → 7.17d | Dar de baja emprendimiento → 105 | resources Rodriguez-DESAROLLADOR → Croci-DESAROLLADOR; Rodriguez-DESAROLLADOR |
| 107 | Responder a inversor | 2015-10-11 A → 2015-09-19 A (-22d) | 2015-10-14 A → 2015-09-20 A (-24d) | 10h? → 8h? |  |  | 106 → 105 | resources Rodriguez-DESAROLLADOR → Croci-DESAROLLADOR; Rodriguez-DESAROLLADOR |
| 108 | Asociar a emprendimiento | 2015-10-17 → 2015-09-20 A (-27d) | 2015-10-18 → 2015-09-26 A (-22d) | 6h? → 15h? | 0% → 100% | 5.28d → none |  | was named Asociacion a emprendimiento; resources Rodriguez-DESAROLLADOR → Croci-DESAROLLADOR; Rodriguez-DESAROLLADOR |
| 109 | Consultar información a emprendedor | 2015-10-18 A → 2015-09-27 A (-21d) | 2015-10-23 A → 2015-10-03 A (-20d) | 14h? → 10h? |  |  |  | resources Rodriguez-DESAROLLADOR → Croci-DESAROLLADOR; Rodriguez-DESAROLLADOR |
| 110 | Realizar Pago | 2015-09-20 A → 2015-10-03 A (+13d) | 2015-10-29 → 2015-10-17 A (-12d) | 25h? → 42.01h? | 75% → 100% | 0.08d → none | 105 → 109 | resources Rodriguez-DESAROLLADOR → Croci-DESAROLLADOR; Rodriguez-DESAROLLADOR |
| 113 | Promocionar estado de Resultados | 2015-10-31 → 2015-11-07 (+7d) | 2015-10-31 → 2015-11-07 (+7d) | 3h? → 1.5h? |  | -0.04d → 1.5d |  | resources Rodriguez-DESAROLLADOR → Rodriguez-DESAROLLADOR; Croci-DESAROLLADOR |
| 114 | Presentar estado de resultados | 2015-10-29 → 2015-11-01 (+3d) | 2015-10-31 → 2015-11-06 (+6d) | 3h? → 11.01h? |  | -0.04d → 0.21d | 110 → 112 | resources Rodriguez-DESAROLLADOR → Croci-DESAROLLADOR; Rodriguez-DESAROLLADOR |
| 115 | Promocionar emprendimiento | 2015-11-01 → 2015-11-06 (+5d) | 2015-11-02 → 2015-11-07 (+5d) | 9h? → 4.5h? |  | 0.62d → 1.04d | Cancelar proyecto (manualmente y por finalizacion) → 114 | resources Rodriguez-DESAROLLADOR → Rodriguez-DESAROLLADOR; Croci-DESAROLLADOR |
| 116 | Difundir mail | 2015-11-02 → 2015-11-07 (+5d) | 2015-11-07 → 2015-11-09 (+2d) |  |  | 0.62d → 1.04d |  | resources Rodriguez-DESAROLLADOR → Rodriguez-DESAROLLADOR; Croci-DESAROLLADOR |
| 117 | **Escribir script de la base de datos** | 2015-06-28 A → 2015-09-13 A (+77d) | 2015-07-05 A → 2015-10-03 A (+90d) | 0.46d? → 1.15d? |  |  |  |  |
| 118 | Script inicial | 2015-06-28 A → 2015-09-13 A (+77d) | 2015-07-05 A → 2015-10-03 A (+90d) | 12h? → 17h? |  |  |  |  |
| 119 | Autenticarse como usuario | 2015-07-05 → 2015-10-03 (+90d) | 2015-07-11 → 2015-10-11 (+92d) |  |  | 9.04d → 1.15d |  |  |
| 120 | Modificar Usuario | 2015-07-11 → 2015-10-11 (+92d) | 2015-07-15 → 2015-10-18 (+95d) |  |  | 9.04d → 1.15d |  |  |
| 121 | Dar de baja Usuario | 2015-07-15 → 2015-10-18 (+95d) | 2015-07-19 → 2015-10-31 (+104d) |  |  | 9.04d → 1.04d |  |  |
| 122 | Inscribirse como emprendedor | 2015-07-26 → 2015-11-01 (+98d) | 2015-08-01 → 2015-11-14 (+105d) |  |  | 1.5d → -8.67d |  |  |
| 123 | Aprobar inscripción como emprendedor | 2015-08-01 → 2015-11-14 (+105d) | 2015-08-07 → 2015-11-21 (+106d) |  |  | 1.5d → -8.67d |  |  |
| 124 | Aplicar para crear emprendimiento | 2015-08-07 → 2015-11-21 (+106d) | 2015-08-11 → 2015-11-29 (+110d) |  |  | 1.5d → -8.67d |  |  |
| 125 | Aprobar emprendimiento | 2015-08-11 → 2015-11-29 (+110d) | 2015-08-16 → 2015-12-06 (+112d) |  |  | 1.5d → -8.67d |  |  |
| 126 | Modificar emprendimiento | 2015-08-16 → 2015-12-06 (+112d) | 2015-09-02 → 2016-01-01 (+121d) |  |  | 1.5d → -8.65d |  |  |
| 127 | Dar de baja emprendimiento | 2015-09-02 → 2016-01-01 (+121d) | 2015-09-06 → 2016-01-04 (+120d) |  |  | 1.5d → -8.54d |  |  |
| 128 | Solicitar asociación a emprendimiento | 2015-09-09 → 2016-01-05 (+118d) | 2015-09-13 → 2016-01-06 (+115d) |  |  | 1.5d → -8.44d |  |  |
| 129 | Responder a inversor | 2015-09-13 → 2016-01-06 (+115d) | 2015-09-20 → 2016-01-07 (+109d) |  |  | 1.5d → -8.23d |  |  |
| 130 | Aceptar solicitud de asociación | 2015-09-20 → 2016-01-07 (+109d) | 2015-09-26 → 2016-01-08 (+104d) |  |  | 1.5d → -8.13d |  |  |
| 131 | Consultar información a emprendedor | 2015-09-26 → 2016-01-08 (+104d) | 2015-09-30 → 2016-01-11 (+103d) |  |  | 1.5d → -8.02d |  |  |
| 132 | Buscar/filtrar emprendimientos | 2015-09-30 → 2016-01-11 (+103d) | 2015-10-04 → 2016-01-12 (+100d) |  |  | 1.5d → -7.92d |  |  |
| 133 | Pagar | 2015-10-04 → 2016-01-12 (+100d) | 2015-10-11 → 2016-01-14 (+95d) |  |  | 1.5d → -7.71d |  |  |
| 134 | Configurar seguimiento de emprendimiento | 2015-10-11 → 2016-01-14 (+95d) | 2015-10-18 → 2016-01-15 (+89d) |  |  | 1.42d → -7.6d |  |  |
| 135 | Crear Agenda | 2015-10-18 → 2016-01-15 (+89d) | 2015-10-24 → 2016-01-18 (+86d) |  |  | 1.42d → -7.4d |  |  |
| 136 | Modificar agenda | 2015-10-24 → 2016-01-18 (+86d) | 2015-10-28 → 2016-01-19 (+83d) |  |  | 1.42d → -7.29d |  |  |
| 137 | Difundir Mail | 2015-10-28 → 2016-01-19 (+83d) | 2015-11-01 → 2016-01-20 (+80d) |  |  | 1.42d → -7.19d |  |  |
| 138 | **Revisión de pares de Plantillas** | 2015-06-13 A → 2015-07-26 A (+43d) | 2015-10-17 A → 2015-10-27 A (+10d) | 9d? → 5.17d? |  |  |  |  |
| 139 | Revision 1 | 2015-06-13 A → 2015-07-26 A (+43d) | 2015-06-21 A → 2015-08-09 A (+49d) | 16h? → 4h? |  |  |  | resources Croci-DESAROLLADOR; Rodriguez-DESAROLLADOR → Tiberti-DESAROLLADOR; Rodriguez-DESAROLLADOR |
| 140 | Revision 2 | 2015-08-15 A → 2015-09-12 A (+28d) | 2015-08-16 A → 2015-09-26 A (+41d) | 7h? → 4h? |  |  | Dar de baja emprendimiento → 61 | resources Croci-DESAROLLADOR; Rodriguez-DESAROLLADOR → Tiberti-DESAROLLADOR; Rodriguez-DESAROLLADOR |
| 141 | Revision 3 | 2015-09-22 A → 2015-10-17 A (+25d) | 2015-09-25 A → 2015-10-18 A (+23d) | 5h? → 4h? |  |  | 66 → 67 | resources Croci-DESAROLLADOR; Rodriguez-DESAROLLADOR → Tiberti-DESAROLLADOR; Rodriguez-DESAROLLADOR |
| 142 | Revision 4 | 2015-10-07 A → 2015-10-18 A (+11d) | 2015-10-17 A → 2015-10-27 A (+10d) | 12h? → 4h? |  |  | 71 → 70 |  |
| 143 | **Revisión de pares de JavaScript** | 2015-06-19 → 2015-08-15 (+57d) | 2015-12-04 → 2016-02-03 (+61d) | 12d? → 15.69d? |  | -1.21d → -10.23d |  |  |
| 144 | Revision 1 | 2015-06-19 → 2015-08-15 (+57d) | 2015-07-05 → 2015-09-12 (+69d) |  |  | -1.21d → -9d |  |  |

| ID | Task | Start | Finish | Duration | Complete | Total float | Predecessors | Other |
| --- | --- | --- | --- | --- | --- | --- | --- | --- |
| 145 | Revision 2 | 2015-10-04 → 2016-01-11 (+99d) | 2015-10-24 → 2016-01-14 (+82d) |  |  | -1.21d → -8.25d |  |  |
| 146 | Revision 3 | 2015-11-14 → 2016-01-28 (+75d) | 2015-11-15 → 2016-01-29 (+75d) |  |  | -2.53d → -12.85d |  |  |
| 147 | Revision 4 | 2015-11-21 → 2016-02-02 (+73d) | 2015-12-04 → 2016-02-03 (+61d) | 16h? → 8h? |  | -2.15d → -12.85d |  |  |
| 148 | **Revisión de pares de la base de datos** | 2015-07-16 A → 2015-10-03 A (+79d) | 2015-07-26 A → 2015-11-01 A (+98d) | 0.79d? → 1.71d? |  |  |  |  |
| 149 | Revision 1 | 2015-07-16 A → 2015-10-03 A (+79d) | 2015-07-26 A → 2015-11-01 A (+98d) | 16h? → 14.02h? |  |  |  |  |
| 150 | Revision 2 | 2015-09-06 → 2016-01-04 (+120d) | 2015-09-09 → 2016-01-05 (+118d) |  |  | 1.5d → -8.44d |  |  |
| 151 | Revision 3 | 2015-10-11 → 2016-01-14 (+95d) | 2015-10-11 → 2016-01-14 (+95d) |  |  | 3.04d → -12.63d |  |  |
| 152 | Revision 4 | 2015-11-01 → 2016-01-20 (+80d) | 2015-11-01 → 2016-01-21 (+81d) |  |  | 3.04d → -9.69d |  |  |
| 153 | **Revisión de pares de PHP** | 2015-06-19 A → 2015-06-27 A (+8d) | 2015-11-09 → 2015-11-07 (-2d) | 10.35d? → 7.48d? | 84% → 81% | 0d → 0.08d |  |  |
| 154 | Revision 1 | 2015-06-19 A → 2015-06-27 A (+8d) | 2015-07-09 A → 2015-07-04 A (-5d) | 8h? → 5h? |  |  |  | resources Budic-DESAROLLADOR; Croci-DESAROLLADOR → Tiberti-DESAROLLADOR; Rodriguez-DESAROLLADOR |
| 155 | Revision 2 | 2015-07-19 A → 2015-09-05 A (+48d) | 2015-11-09 A → 2015-09-12 A (-58d) | 14h? → 6h? |  |  |  | resources Budic-DESAROLLADOR; Croci-DESAROLLADOR → Rodriguez-DESAROLLADOR; Tiberti-DESAROLLADOR |
| 156 | Revision 3 | 2015-10-18 A → 2015-09-26 A (-22d) | 2015-10-19 A → 2015-09-27 A (-22d) | 5h? → 6h? |  |  |  | resources Budic-DESAROLLADOR; Croci-DESAROLLADOR → Rodriguez-DESAROLLADOR; Tiberti-DESAROLLADOR |
| 157 | Revision 4 | 2015-10-29 → 2015-11-06 (+8d) | 2015-10-31 → 2015-11-07 (+7d) | 5h? → 4h? |  | 0.08d → 0.21d |  | resources Budic-DESAROLLADOR; Croci-DESAROLLADOR → Rodriguez-DESAROLLADOR; Tiberti-DESAROLLADOR |
| 158 | **Promoción** | 2015-07-22 A → 2015-08-23 A (+32d) | 2015-08-01 A → 2015-09-12 A (+42d) | 0.62d → 1.06d |  |  |  |  |
| 159 | Realizar presentación comercial | 2015-07-26 A → 2015-08-30 A (+35d) | 2015-08-01 A → 2015-09-12 A (+42d) |  |  |  |  | resources Croci-ANALISTA FUNCIONAL; Croci-DISEÑADOR DE EXPERIENCIA DE USUARIO; Budic-PROJECT MANAGER → Tiberti-ANALISTA FUNCIONAL; Croci-DISEÑADOR DE EXPERIENCIA DE USUARIO; Budic-PROJECT MANAGER |
| 160 | Realizar poster comercial | 2015-07-22 A → 2015-08-23 A (+32d) | 2015-07-26 A → 2015-08-30 A (+35d) |  |  |  |  | resources Croci-DISEÑADOR DE EXPERIENCIA DE USUARIO → Croci-DISEÑADOR DE EXPERIENCIA DE USUARIO; Budic-PROJECT MANAGER |
| 166 | **Testing** | 2015-06-21 A → 2015-08-29 A (+69d) |  | 10.67d → 4.6d | 71% → 59% | 0.17d → 0d |  |  |
| 167 | Armar el plan de pruebas | 2015-06-28 A → 2015-09-06 A (+70d) | 2015-07-04 A → 2015-09-20 A (+78d) | 8h → 12h |  |  |  | resources Croci-ANALISTA FUNCIONAL; Budic-PROJECT MANAGER → Tiberti-ANALISTA FUNCIONAL; Budic-PROJECT MANAGER |
| 168 | Definir los casos de prueba | 2015-06-21 A → 2015-08-29 A (+69d) | 2015-06-28 A → 2015-09-06 A (+70d) | 14.6h → 13.6h |  |  |  | resources Croci-ANALISTA FUNCIONAL; Budic-PROJECT MANAGER → Tiberti-ANALISTA FUNCIONAL; Budic-PROJECT MANAGER |
| 169 | Ejecutar los casos de prueba | 2015-11-08 A → 2015-11-07 A (-1d) |  |  | 50% → 25% | 0.21d → 0d | 168, 50, 71, 94, 116 → 141, 149, 157, 156 | resources Budic-TESTER → Budic-TESTER; Tiberti-TESTER |
| 170 | Documentar resultados de las pruebas | 2015-11-14 A → 2015-11-14 |  | 10h → 6h | 50% → 0% | 0.46d → 0d |  | resources Budic-TESTER → Budic-TESTER; Tiberti-TESTER |
| 172 | Redactar manual de uso y ayuda | 2015-12-04 → 2016-02-03 (+61d) | 2015-12-05 → 2016-02-03 (+60d) |  |  | -2.15d → -12.85d |  |  |
| 173 | **Finalización del Proyecto** |  |  | 0.56d → 0.4d |  | 0.46d → 0d |  |  |
| 174 | Reflexionar sobre la experiencia realizada |  |  |  |  | 0.46d → 0d | 172, 170, 6, 12, 15, 17, 19, 21, 26, 30, 32, 34, 39, 153, 160 → 170, 6, 12, 15, 17, 19, 21, 26, 30, 32, 34, 39, 153, 160 | resources Tiberti-ADMINISTRADOR DE BASE DE DATOS; Tiberti-ADMINISTRADOR DEL ENTORNO DE DESARROLLO; Croci-ANALISTA FUNCIONAL; Rodriguez-ARQUITECTO DE SOFTWARE; Tiberti-DESAROLLADOR; Croci-DISEÑADOR DE EXPERIENCIA DE USUARIO; Budic-PROJECT MANAGER; Budic-TESTER → Tiberti-ADMINISTRADOR DE BASE DE DATOS; Tiberti-ADMINISTRADOR DEL ENTORNO DE DESARROLLO; Tiberti-ANALISTA FUNCIONAL; Rodriguez-ARQUITECTO DE SOFTWARE; Tiberti-DESAROLLADOR; Croci-DISEÑADOR DE EXPERIENCIA DE USUARIO; Budic-PROJECT MANAGER; Budic-TESTER |
| 175 | Analizar errores cometidos |  |  |  |  | 0.46d → 0d |  | resources Tiberti-ADMINISTRADOR DE BASE DE DATOS; Tiberti-ADMINISTRADOR DEL ENTORNO DE DESARROLLO; Croci-ANALISTA FUNCIONAL; Rodriguez-ARQUITECTO DE SOFTWARE; Tiberti-DESAROLLADOR; Croci-DISEÑADOR DE EXPERIENCIA DE USUARIO; Budic-PROJECT MANAGER; Budic-TESTER → Tiberti-ADMINISTRADOR DE BASE DE DATOS; Tiberti-ADMINISTRADOR DEL ENTORNO DE DESARROLLO; Tiberti-ANALISTA FUNCIONAL; Rodriguez-ARQUITECTO DE SOFTWARE; Tiberti-DESAROLLADOR; Croci-DISEÑADOR DE EXPERIENCIA DE USUARIO; Budic-PROJECT MANAGER; Budic-TESTER |
| 176 | Documentación de cierre de proyecto |  | 2015-11-18 → 2015-11-19 (+1d) |  |  | 0.46d → 0d |  | resources Croci-ANALISTA FUNCIONAL; Budic-PROJECT MANAGER → Tiberti-ANALISTA FUNCIONAL; Budic-PROJECT MANAGER |
| 177 | Cerrar el proyecto | 2015-11-18 → 2015-11-19 (+1d) |  | 6h → 2h |  | 0.46d → 0d |  |  |

## Version 9 (data date 2015-06-07, saved 2015-11-04, file Gantt.mpp)

Note of the change: supercommiteada

Last finish stays 2016-02-03. Complete tasks 79 → 80.

Changed:

| ID | Task | Start | Finish | Duration | Complete | Total float | Other |
| --- | --- | --- | --- | --- | --- | --- | --- |
| 40 | **Desarrollo** |  |  |  | 96% → 98% | 0.08d → 0.25d |  |
| 95 | **Escribir código PHP** |  |  |  | 90% → 96% | 0.1d → 0.18d |  |
| 112 | Cancelar emprendimiento (baja por tiempo) |  | 2015-11-01 A |  | 50% → 100% | 0.21d → none |  |
| 114 | Presentar estado de resultados | 2015-11-01 A |  |  | 0% → 20% | 0.21d → 0.41d |  |
| 166 | **Testing** |  |  |  | 59% → 65% |  |  |
| 169 | Ejecutar los casos de prueba |  |  |  | 25% → 30% | 0d → 0.16d |  |
| 170 | Documentar resultados de las pruebas | 2015-11-14 A |  |  | 0% → 30% |  |  |
| 171 | **Manuales** | 2015-04-12 → 2015-11-01 A (+203d) | 2015-04-12 → 2015-11-07 (+209d) | 0d → 0.19d | 0% → 20% | 12.54d → 0.79d |  |
| 172 | Redactar manual de usuario | 2016-02-03 → 2015-11-01 A (-94d) | 2016-02-03 → 2015-11-07 (-88d) | 2h → 10h | 0% → 20% | -12.85d → 1.69d | was named Redactar manual de uso y ayuda; resources Tiberti-ADMINISTRADOR DE BASE DE DATOS; Tiberti-ADMINISTRADOR DEL ENTORNO DE DESARROLLO; Tiberti-DESAROLLADOR → Croci-DISEÑADOR DE EXPERIENCIA DE USUARIO |

## Version 10 (data date 2015-06-07, saved 2015-11-07, file GanttConCiclos.mpp)

Note of the change: Gantt con ciclos

Last finish 2016-02-03 → 2015-11-28 (-67d).

Added:

| ID | Task | Duration | Start | Finish | Predecessors | Resources |
| --- | --- | --- | --- | --- | --- | --- |
| 108 | Ciclo #1 | 10h? | 2015-11-07 | 2015-11-08 | 87, 90, 95 | Budic-TESTER; Tiberti-TESTER |
| 109 | Ciclo #2 | 10h? | 2015-11-08 | 2015-11-14 | 114 | Budic-TESTER; Tiberti-TESTER |
| 110 | Ciclo #3 | 10h? | 2015-11-14 | 2015-11-15 | 115 | Budic-TESTER; Tiberti-TESTER |
| 111 | Ciclo #4 | 10h? | 2015-11-15 | 2015-11-21 | 116 | Budic-TESTER; Tiberti-TESTER |
| 112 | Ciclo #5 | 10h? | 2015-11-21 | 2015-11-23 | 117 | Budic-TESTER; Tiberti-TESTER |
| 114 | Ciclo #1 | 0.5h? | 2015-11-08 | 2015-11-08 | 108 | Budic-TESTER; Tiberti-TESTER |
| 115 | Ciclo #2 | 0.5h? | 2015-11-14 | 2015-11-14 | 109 | Budic-TESTER; Tiberti-TESTER |
| 116 | Ciclo #3 | 0.5h? | 2015-11-15 | 2015-11-15 | 110 | Budic-TESTER; Tiberti-TESTER |
| 117 | Ciclo #4 | 0.5h? | 2015-11-21 | 2015-11-21 | 111 | Budic-TESTER; Tiberti-TESTER |
| 118 | Ciclo #5 | 0.5h? | 2015-11-23 | 2015-11-23 | 112 | Budic-TESTER; Tiberti-TESTER |

Removed: 43 Inicio Capacitación en JavaScript; 47 Capacitación en Java; 60 Modificar emprendimiento; 62 Aprobar baja de emprendimiento; 68 Presentar estado de resultados; 69 Promocionar estado de resultados; 71 Promocionar emprendimiento; 72 Difundir Mail; 73 Escribir código JavaScript; 74 Inscribirse al portal; 75 Autenticarse como usuario; 76 Modificar Usuario; 77 Dar de baja Usuario; 78 Inscribirse como emprendedor; 79 Aprobar inscripción como emprendedor; 80 Aplicar para crear emprendimiento; 81 Aprobar emprendimiento; 82 Modificar emprendimiento; 83 Dar de baja emprendimiento; 84 Aprobar baja de emprendimiento; 85 Responder a inversor; 86 Asociacion a emprendimiento; 87 Consultar información a emprendedor; 88 Buscar/filtrar emprendimientos; 89 Realizar Pago; 90 Presentar estado de resultados; 91 Promocionar estado de Resultados; 92 Cancelar proyecto (manualmente y por finalizacion); 93 Promocionar emprendimiento; 94 Difundir mail; 104 Modificar emprendimiento; 106 Aprobar baja de emprendimiento; 113 Promocionar estado de Resultados; 115 Promocionar emprendimiento; 116 Difundir mail; 119 Autenticarse como usuario; 120 Modificar Usuario; 121 Dar de baja Usuario; 122 Inscribirse como emprendedor; 123 Aprobar inscripción como emprendedor; 124 Aplicar para crear emprendimiento; 125 Aprobar emprendimiento; 126 Modificar emprendimiento; 127 Dar de baja emprendimiento; 128 Solicitar asociación a emprendimiento; 129 Responder a inversor; 130 Aceptar solicitud de asociación; 131 Consultar información a emprendedor; 132 Buscar/filtrar emprendimientos; 133 Pagar; 134 Configurar seguimiento de emprendimiento; 135 Crear Agenda; 136 Modificar agenda; 137 Difundir Mail; 143 Revisión de pares de JavaScript; 144 Revision 1; 145 Revision 2; 146 Revision 3; 147 Revision 4; 150 Revision 2; 151 Revision 3; 152 Revision 4

Changed:

| ID | Task | Start | Finish | Duration | Complete | Total float | Predecessors | Other |
| --- | --- | --- | --- | --- | --- | --- | --- | --- |
| 48 | Capacitacion Symfony |  |  |  |  |  | 42, Inicio Capacitación en JavaScript, 43, 44 → 42, 43, 44 |  |
| 104 | **Testing** |  | 2015-11-15 → 2015-11-23 (+8d) | 4.6d → 5.04d? | 65% → 33% |  |  |  |
| 107 | **Ejecutar los casos de prueba** | 2015-11-07 A → 2015-11-07 | 2015-11-14 → 2015-11-23 (+9d) | 20h → 2.17d? | 30% → 0% | 0.16d → 0d | 87, 90, 95, 94 → none | resources Budic-TESTER; Tiberti-TESTER → none |
| 113 | **Documentar resultados de las pruebas** | 2015-11-14 A → 2015-11-08 (-6d) | 2015-11-15 → 2015-11-23 (+8d) | 6h → 1.77d? | 30% → 0% |  | 107 → none | resources Budic-TESTER; Tiberti-TESTER → none |
| 120 | Redactar manual de usuario |  |  |  |  | 1.69d → 2.71d | Revisión de pares de JavaScript, 89, 106 → 89, 106 |  |
| 121 | **Finalización del Proyecto** | 2015-11-15 → 2015-11-23 (+8d) | 2015-11-21 → 2015-11-28 (+7d) |  |  |  |  |  |
| 122 | Reflexionar sobre la experiencia realizada | 2015-11-15 → 2015-11-23 (+8d) | 2015-11-15 → 2015-11-24 (+9d) |  |  |  |  |  |
| 123 | Analizar errores cometidos | 2015-11-15 → 2015-11-24 (+9d) | 2015-11-15 → 2015-11-25 (+10d) |  |  |  |  |  |
| 124 | Documentación de cierre de proyecto | 2015-11-15 → 2015-11-25 (+10d) | 2015-11-19 → 2015-11-28 (+9d) |  |  |  |  |  |
| 125 | Cerrar el proyecto | 2015-11-19 → 2015-11-28 (+9d) | 2015-11-21 → 2015-11-28 (+7d) |  |  |  |  |  |

## Version 11 (data date 2015-06-07, saved 2015-11-11, file Gantt.mpp)

Note of the change: Script+ diagrama de secuencia + informe de avance + gantt

Last finish 2015-11-28 → 2015-11-20 (-8d). Complete tasks 80 → 86.

Changed:

| ID | Task | Start | Finish | Duration | Complete | Total float | Predecessors |
| --- | --- | --- | --- | --- | --- | --- | --- |
| 104 | **Testing** |  | 2015-11-23 → 2015-11-15 (-8d) | 5.04d? → 4.48d? | 33% → 80% |  |  |
| 107 | **Ejecutar los casos de prueba** | 2015-11-07 A | 2015-11-23 → 2015-11-15 (-8d) | 2.17d? → 1d? | 0% → 60% |  |  |
| 108 | Ciclo #1 | 2015-11-07 A | 2015-11-08 A | 10h? → 4h? | 0% → 100% | 0d → none |  |
| 109 | Ciclo #2 | 2015-11-08 A | 2015-11-14 → 2015-11-08 A (-6d) | 10h? → 4h? | 0% → 100% | 0d → none |  |
| 110 | Ciclo #3 | 2015-11-14 → 2015-11-08 A (-6d) | 2015-11-15 → 2015-11-11 A (-4d) | 10h? → 4h? | 0% → 100% | 0d → none |  |
| 111 | Ciclo #4 | 2015-11-15 → 2015-11-12 (-3d) | 2015-11-21 → 2015-11-14 (-7d) | 10h? → 4h? |  |  |  |
| 112 | Ciclo #5 | 2015-11-21 → 2015-11-14 (-7d) | 2015-11-23 → 2015-11-15 (-8d) | 10h? → 4h? |  |  |  |
| 113 | **Documentar resultados de las pruebas** | 2015-11-08 A | 2015-11-23 → 2015-11-15 (-8d) | 1.77d? → 0.88d? | 0% → 60% |  |  |
| 114 | Ciclo #1 | 2015-11-08 A | 2015-11-08 A | 0.5h? → 1h? | 0% → 100% | 0d → none |  |
| 115 | Ciclo #2 | 2015-11-14 → 2015-11-08 A (-6d) | 2015-11-14 → 2015-11-08 A (-6d) | 0.5h? → 1h? | 0% → 100% | 0d → none |  |
| 116 | Ciclo #3 | 2015-11-15 → 2015-11-11 A (-4d) | 2015-11-15 → 2015-11-12 A (-3d) | 0.5h? → 1h? | 0% → 100% | 0d → none |  |
| 117 | Ciclo #4 | 2015-11-21 → 2015-11-14 (-7d) | 2015-11-21 → 2015-11-14 (-7d) | 0.5h? → 1h? |  |  |  |
| 118 | Ciclo #5 | 2015-11-23 → 2015-11-15 (-8d) | 2015-11-23 → 2015-11-15 (-8d) | 0.5h? → 1h? |  |  |  |
| 121 | **Finalización del Proyecto** | 2015-11-23 → 2015-11-15 (-8d) | 2015-11-28 → 2015-11-20 (-8d) | 0.4d → 0.48d |  |  |  |
| 122 | Analizar errores cometidos | 2015-11-24 → 2015-11-15 (-9d) | 2015-11-25 → 2015-11-15 (-10d) |  |  |  | 123 → 6, 12, 15, 17, 19, 21, 26, 30, 32, 34, 39, 91, 98, 118 |
| 123 | Reflexionar sobre la experiencia realizada | 2015-11-23 → 2015-11-15 (-8d) | 2015-11-24 → 2015-11-15 (-9d) |  |  |  | 113, 6, 12, 15, 17, 19, 21, 26, 30, 32, 34, 39, 91, 98 → 122 |
| 124 | Documentación de cierre de proyecto | 2015-11-25 → 2015-11-15 (-10d) | 2015-11-28 → 2015-11-16 (-12d) |  |  |  | 122 → 123 |
| 125 | Cerrar el proyecto | 2015-11-28 → 2015-11-16 (-12d) | 2015-11-28 → 2015-11-20 (-8d) | 2h → 4h |  |  |  |

## Version 12 (data date 2015-06-07, saved 2015-11-12, file Gantt.mpp)

Note of the change: gantt

Last finish stays 2015-11-20.

Changed:

| ID | Task | Start | Finish | Duration | Complete | Total float | Predecessors |
| --- | --- | --- | --- | --- | --- | --- | --- |
| 119 | **Manuales** | 2015-11-01 A → 2015-11-15 (+14d) | 2015-11-07 → 2015-11-19 (+12d) | 0.19d → 0.23d | 20% → 0% | 0.77d → 0.02d |  |
| 120 | Redactar manual de usuario | 2015-11-01 A → 2015-11-15 (+14d) | 2015-11-07 → 2015-11-19 (+12d) |  | 20% → 0% | 1.65d → 0.06d | 89, 106 → 118 |

## Version 13 (data date 2015-06-07, saved 2015-11-28, file Gantt.mpp)

Note of the change: GANTT

Last finish stays 2015-11-20.

Added:

| ID | Task | Duration | Start | Finish | Resources |
| --- | --- | --- | --- | --- | --- |
| 59 | Buscador avanzado de emprendimientos (CU021) | 26h? | 2015-04-12 | 2015-04-19 | Budic-DESAROLLADOR; Croci-DESAROLLADOR |
| 63 | Consultar información de inversiones (CU017) | 26h? | 2015-04-19 | 2015-04-27 | Budic-DESAROLLADOR; Croci-DESAROLLADOR |
| 64 | Consultar información de emprendimientos (CU018) | 48h? | 2015-04-26 | 2015-05-16 | Budic-DESAROLLADOR; Croci-DESAROLLADOR |
| 65 | Gestionar notificaciones (CU019) | 48h? | 2015-05-07 | 2015-06-06 | Budic-DESAROLLADOR; Croci-DESAROLLADOR |
| 67 | Validar Pago Realizado (CU020) | 48h? | 2015-05-16 | 2015-06-20 | Budic-DESAROLLADOR; Croci-DESAROLLADOR |
| 70 | Presentar estado de resultados | 48h? | 2015-05-25 | 2015-06-28 | Budic-DESAROLLADOR; Croci-DESAROLLADOR |
| 81 | Buscador avanzado de emprendimientos (CU021) | 48h? | 2015-04-19 | 2015-05-08 | Croci-DESAROLLADOR; Rodriguez-DESAROLLADOR |
| 85 | Consultar información de inversiones (CU017) | 48h? | 2015-04-26 | 2015-07-04 | Croci-DESAROLLADOR; Rodriguez-DESAROLLADOR |
| 86 | Consultar información de emprendimientos (CU018) | 48h? | 2015-05-07 | 2015-07-16 | Croci-DESAROLLADOR; Rodriguez-DESAROLLADOR |
| 87 | Gestionar notificaciones (CU019) | 48h? | 2015-05-16 | 2015-07-28 | Croci-DESAROLLADOR; Rodriguez-DESAROLLADOR |
| 89 | Validar Pago Realizado (CU020) | 48h? | 2015-05-25 | 2015-08-09 | Croci-DESAROLLADOR; Rodriguez-DESAROLLADOR |
| 100 | Revision 5 | 48h? | 2015-06-07 | 2015-08-23 | Croci-DESAROLLADOR; Rodriguez-DESAROLLADOR |
| 108 | Revision 5 | 24h? | 2015-04-12 | 2015-04-19 | Rodriguez-DESAROLLADOR; Tiberti-DESAROLLADOR |

Changed:

| ID | Task | Start | Finish | Duration | Complete | Total float | Other |
| --- | --- | --- | --- | --- | --- | --- | --- |
| 40 | **Desarrollo** | 2015-05-17 A → 2015-04-12 A (-35d) |  | 9.77d? → 11.79d? | 98% → 55% | 0.48d → 0.73d |  |
| 49 | **Escribir código de Plantillas** | 2015-05-30 A → 2015-04-12 A (-48d) | 2015-10-18 A → 2015-10-18 | 8.08d? → 10.73d? | 100% → 28% | none → 1.79d |  |
| 66 | Realizar pago |  |  |  |  |  | was named Realizar Pago |
| 71 | **Escribir código PHP** | 2015-06-07 A → 2015-04-19 A (-49d) |  | 8.56d? → 11.25d? | 96% → 48% | 0.5d → 0.79d |  |
| 95 | **Revisión de pares de Plantillas** | 2015-07-26 A → 2015-06-07 A (-49d) | 2015-10-27 A → 2015-10-27 | 5.17d? → 7.94d? | 100% → 25% | none → 1.25d |  |
| 103 | **Revisión de pares de PHP** | 2015-06-27 A → 2015-04-12 A (-76d) |  | 7.48d? → 11.79d? | 81% → 38% |  |  |

## Version 14 (data date 2015-06-07, saved 2015-11-30, file Gantt.mpp)

Note of the change: GANTT REPLANIFICACION

Last finish 2015-11-20 → 2016-02-14 (+86d). Complete tasks 86 → 92.

Added:

| ID | Task | Duration | Start | Finish | Predecessors | Constraint | Resources |
| --- | --- | --- | --- | --- | --- | --- | --- |
| 13 | Inicio de Replanificación | 0h | 2015-11-26 A | 2015-11-26 A | 32 |  |  |
| 14 | Estimar los tiempos de cada tarea | 1h? | 2015-11-27 A | 2015-11-28 A | 13 |  | Croci-DESAROLLADOR; Budic-DESAROLLADOR; Rodriguez-DESAROLLADOR; Tiberti-ANALISTA FUNCIONAL |
| 15 | Realizar diagrama de Gantt | 7h? | 2015-11-28 A | 2015-11-30 A | 14 |  | Rodriguez-PROJECT CONTROLLER |
| 30 | Inicio Replanificacion de casos de uso | 0h? | 2015-11-17 A | 2015-11-17 A |  | start no earlier than 2015-11-17 |  |
| 31 | Identificar actores y funcionalidades | 3h | 2015-11-17 A | 2015-11-21 A | 30 |  | Tiberti-ANALISTA FUNCIONAL |
| 32 | Describir casos de uso | 8h | 2015-11-21 A | 2015-11-26 A | 31 |  | Tiberti-ANALISTA FUNCIONAL |
| 37 | Inicio Replanificación de DER | 0h | 2015-11-30 | 2015-11-30 | 15 |  |  |
| 38 | Definir entidades y sus atributos | 4h? | 2015-12-01 | 2015-12-05 | 37 |  | Tiberti-ADMINISTRADOR DE BASE DE DATOS; Tiberti-ANALISTA FUNCIONAL; Rodriguez-ARQUITECTO DE SOFTWARE; Budic-PROJECT MANAGER |
| 39 | Describir las relaciones entre las entidades | 4h? | 2015-12-05 | 2015-12-06 | 38 |  | Tiberti-ADMINISTRADOR DE BASE DE DATOS |
| 74 | Inicio Replanificacion de Plantillas | 0h? | 2015-12-06 | 2015-12-06 | 39 |  |  |
| 95 | Inicio Replanificacion de PHP | 0h? | 2015-12-06 | 2015-12-06 | 39 |  |  |
| 109 | Revision 6 (CU019) | 0.08d? | 2016-01-09 | 2016-01-09 | 77 |  | Croci-DESAROLLADOR; Rodriguez-DESAROLLADOR |
| 110 | Revision 7 (CU015) | 2h? | 2016-01-10 | 2016-01-10 | 78 |  | Croci-DESAROLLADOR; Rodriguez-DESAROLLADOR |
| 119 | Revision 6 (CU019 - CU020) | 1h? | 2016-01-16 | 2016-01-16 | 99 |  | Rodriguez-DESAROLLADOR; Tiberti-DESAROLLADOR |
| 120 | Revision 7 (CU015) | 1h? | 2016-01-24 | 2016-01-24 | 100 |  | Rodriguez-DESAROLLADOR; Tiberti-DESAROLLADOR |
| 132 | Inicio Replanificacion Testing | 0h? | 2015-12-06 | 2015-12-06 | 39 |  |  |
| 133 | Armar el plan de pruebas | 6h? | 2015-12-06 | 2015-12-12 | 132 |  | Tiberti-ANALISTA FUNCIONAL |
| 134 | Definir los casos de prueba | 10h? | 2015-12-12 | 2015-12-19 | 133 |  | Tiberti-ANALISTA FUNCIONAL |
| 139 | Inicio Replanificacion de ejecución casos de prueba | 0h | 2016-01-24 | 2016-01-24 | 110, 120 |  |  |
| 142 | Ciclo #6 | 3h? | 2016-01-31 | 2016-01-31 | 151 |  | Budic-TESTER; Tiberti-TESTER |
| 143 | Ciclo #7 | 3h? | 2016-02-06 | 2016-02-07 | 152 |  | Budic-TESTER; Tiberti-TESTER |
| 144 | Ciclo #8 | 3h? | 2016-02-07 | 2016-02-07 | 153 |  | Budic-TESTER; Tiberti-TESTER |
| 149 | Inicio Replanificacion de documentación de pruebas | 0h | 2015-04-12 | 2015-04-12 |  |  |  |
| 152 | Ciclo #6 | 0.5h? | 2016-02-06 | 2016-02-06 | 142 |  | Budic-TESTER; Tiberti-TESTER |
| 153 | Ciclo #7 | 0.5h? | 2016-02-07 | 2016-02-07 | 143 |  | Budic-TESTER; Tiberti-TESTER |
| 154 | Ciclo #8 | 0.5h? | 2016-02-07 | 2016-02-07 | 144 |  | Budic-TESTER; Tiberti-TESTER |

Removed: 59 Buscador avanzado de emprendimientos (CU021); 81 Buscador avanzado de emprendimientos (CU021); 89 Validar Pago Realizado (CU020); 138 Cerrar el proyecto

Changed:

| ID | Task | Start | Finish | Duration | Complete | Total float | Predecessors | Other |
| --- | --- | --- | --- | --- | --- | --- | --- | --- |
| 1 | **Análisis** |  | 2015-06-07 A → 2015-11-30 A (+176d) | 3.29d → 13.23d? |  |  |  |  |
| 7 | **Planificación** |  | 2015-05-30 A → 2015-11-30 A (+184d) | 1.62d → 12.08d? |  |  |  |  |
| 25 | **Diseño** |  | 2015-09-13 A → 2015-12-06 (+84d) | 7.12d → 12d? | 100% → 95% | none → 0d |  |  |
| 26 | **Casos de Uso** |  | 2015-08-29 A → 2015-11-26 A (+89d) | 4.94d → 10.04d? |  |  |  |  |
| 33 | **DER** |  | 2015-08-15 A → 2015-12-06 (+113d) | 2.77d → 9.27d? | 100% → 73% | none → 0d |  |  |
| 49 | **Desarrollo** | 2015-04-12 A → 2015-05-17 A (+35d) | 2015-11-07 → 2016-01-24 (+78d) | 11.79d? → 18.21d? | 55% → 86% | 0.73d → 5d |  |  |
| 58 | **Escribir código de Plantillas** | 2015-04-12 A → 2015-05-30 A (+48d) | 2015-10-18 → 2016-01-10 (+84d) | 10.73d? → 14.25d? | 28% → 68% | 1.79d → 3.33d |  |  |
| 75 | Consultar información de inversiones (CU017) | 2015-04-19 → 2015-12-06 (+231d) | 2015-04-27 → 2015-12-16 (+233d) | 26h? → 12h? |  | 11.56d → 0.9d | none → 74 | resources Budic-DESAROLLADOR; Croci-DESAROLLADOR → Budic-DESAROLLADOR; Tiberti-DESAROLLADOR |
| 76 | Consultar información de emprendimientos (CU018) | 2015-04-26 → 2015-12-17 (+235d) | 2015-05-16 → 2015-12-26 (+224d) | 48h? → 12h? |  | 10.58d → 0.88d | none → 75 | resources Budic-DESAROLLADOR; Croci-DESAROLLADOR → Budic-DESAROLLADOR; Tiberti-DESAROLLADOR |
| 77 | Gestionar notificaciones (CU019) | 2015-05-07 → 2015-12-27 (+234d) | 2015-06-06 → 2016-01-04 (+212d) | 48h? → 12h? |  | 9.35d → 0.96d | none → 108 | resources Budic-DESAROLLADOR; Croci-DESAROLLADOR → Budic-DESAROLLADOR; Tiberti-DESAROLLADOR |
| 78 | Presentar estado de resultados (CU015) | 2015-05-25 → 2016-01-05 (+225d) | 2015-06-28 → 2016-01-10 (+196d) | 48h? → 8h |  | 8d → 0.94d | none → 77 | was named Presentar estado de resultados; resources Budic-DESAROLLADOR; Croci-DESAROLLADOR → Budic-DESAROLLADOR; Tiberti-DESAROLLADOR |
| 79 | **Escribir código PHP** | 2015-04-19 A → 2015-06-07 A (+49d) | 2015-11-06 → 2016-01-24 (+79d) | 11.25d? → 17.06d? | 48% → 81% | 0.79d → 0d |  |  |
| 96 | Consultar información de inversiones (CU017) | 2015-04-26 → 2015-12-06 (+224d) | 2015-07-04 → 2015-12-13 (+162d) | 48h? → 10h? |  | 7.9d → 0d | none → 95 |  |
| 97 | Consultar información de emprendimientos (CU018) | 2015-05-07 → 2015-12-13 (+220d) | 2015-07-16 → 2015-12-27 (+164d) | 48h? → 12h? |  | 7.12d → 0d | none → 96 |  |
| 98 | Gestionar notificaciones (CU019) | 2015-05-16 → 2015-12-27 (+225d) | 2015-07-28 → 2016-01-03 (+159d) | 48h? → 10h |  | 6.4d → 0d | none → 118 |  |
| 99 | Validar Pago Realizado (CU020) | 2015-05-16 → 2016-01-03 (+232d) | 2015-06-20 → 2016-01-10 (+204d) | 48h? → 10h? |  | 8.69d → 0d | none → 98 | resources Budic-DESAROLLADOR; Croci-DESAROLLADOR → Croci-DESAROLLADOR; Rodriguez-DESAROLLADOR |
| 100 | Presentar estado de resultados (CU015) | 2015-11-01 A → 2016-01-16 (+76d) | 2015-11-06 → 2016-01-24 (+79d) | 11.01h? → 12h? | 20% → 0% | 1.04d → 0d | 94 → 119 | was named Presentar estado de resultados |
| 103 | **Revisión de pares de Plantillas** | 2015-06-07 A → 2015-07-26 A (+49d) | 2015-10-27 → 2016-01-10 (+75d) | 7.94d? → 10.8d? | 25% → 73% | 1.25d → 8.33d |  |  |
| 108 | Revision 5 (CU017 - CU018) | 2015-06-07 → 2015-12-27 (+203d) | 2015-08-23 → 2015-12-27 (+126d) | 48h? → 2h? |  | 4.96d → 2.21d | none → 76 | was named Revision 5 |
| 113 | **Revisión de pares de PHP** | 2015-04-12 A → 2015-06-27 A (+76d) | 2015-11-07 → 2016-01-24 (+78d) | 11.79d? → 15.92d? | 38% → 61% | 0.48d → 5d |  |  |
| 117 | Revision 4 | 2015-11-06 → 2015-10-17 (-20d) | 2015-11-07 → 2015-10-18 (-20d) | 4h? → 8h? |  | 1.04d → 13.9d | 100 → 92 |  |
| 118 | Revision 5 (CU017 - CU018) | 2015-04-12 → 2015-12-27 (+259d) | 2015-04-19 → 2015-12-27 (+252d) | 24h? → 1h? |  | 11.79d → 0d | none → 97 | was named Revision 5 |
| 129 | **Testing** | 2015-08-29 A → 2015-04-12 A (-139d) | 2015-11-15 → 2016-02-07 (+84d) | 4.48d? → 23.56d? | 80% → 55% | 0d → 1.67d |  |  |
| 135 | **Ejecutar los casos de prueba** |  | 2015-11-15 → 2016-02-07 (+84d) | 1d? → 11.25d? | 60% → 44% |  |  |  |
| 140 | Ciclo #4 | 2015-11-12 → 2016-01-24 (+73d) | 2015-11-14 → 2016-01-30 (+77d) | 4h? → 3h? |  |  | 148 → 139 |  |
| 141 | Ciclo #5 | 2015-11-14 → 2016-01-30 (+77d) | 2015-11-15 → 2016-01-31 (+77d) | 4h? → 3h? |  |  |  |  |
| 145 | **Documentar resultados de las pruebas** | 2015-11-08 A → 2015-04-12 A (-210d) | 2015-11-15 → 2016-02-07 (+84d) | 0.88d? → 36.15d? | 60% → 55% | 0d → 0.69d |  |  |
| 150 | Ciclo #4 | 2015-11-14 → 2016-01-30 (+77d) | 2015-11-14 → 2016-01-30 (+77d) | 1h? → 0.5h? |  |  |  |  |
| 151 | Ciclo #5 | 2015-11-15 → 2016-01-31 (+77d) | 2015-11-15 → 2016-01-31 (+77d) | 1h? → 0.5h? |  |  |  |  |
| 155 | **Manuales** | 2015-11-15 → 2016-02-07 (+84d) | 2015-11-19 → 2016-02-13 (+86d) | 0.23d → 1.67d |  | 0.02d → 0d |  |  |
| 156 | Redactar manual de usuario | 2015-11-15 → 2016-02-07 (+84d) | 2015-11-19 → 2016-02-13 (+86d) |  |  | 0.06d → 0d | 151 → 154 |  |
| 157 | **Finalización del Proyecto** | 2015-11-15 → 2016-02-13 (+90d) | 2015-11-20 → 2016-02-14 (+86d) | 0.48d → 0.27d |  |  |  |  |
| 158 | Analizar errores cometidos | 2015-11-15 → 2016-02-13 (+90d) | 2015-11-15 → 2016-02-13 (+90d) |  |  |  | 6, 12, 18, 20, 22, 24, 29, 36, 41, 43, 48, 113, 123, 151 → 6, 12, 18, 20, 22, 24, 29, 36, 41, 43, 48, 113, 123, 154, 156 |  |
| 159 | Reflexionar sobre la experiencia realizada | 2015-11-15 → 2016-02-13 (+90d) | 2015-11-15 → 2016-02-13 (+90d) |  |  |  |  |  |
| 160 | Documentación de cierre de proyecto | 2015-11-15 → 2016-02-13 (+90d) | 2015-11-16 → 2016-02-14 (+90d) | 6h → 5h |  |  |  |  |

## Version 15 (data date 2015-06-07, saved 2015-12-01, file Gantt.mpp)

Note of the change: replanificacion

Last finish stays 2016-02-14. Complete tasks 92 → 93.

Changed:

| ID | Task | Start | Finish | Duration | Complete | Total float | Other |
| --- | --- | --- | --- | --- | --- | --- | --- |
| 8 | Identificar las tareas para cada entregable |  |  | 8h → 11.99h |  |  | constraint none → finish no earlier than 2015-05-10 |
| 49 | **Desarrollo** |  |  |  | 86% → 87% |  |  |
| 113 | **Revisión de pares de PHP** |  |  |  | 61% → 89% | 5d → 0d |  |
| 117 | Revision 4 | 2015-10-17 A | 2015-10-18 A |  | 0% → 100% | 13.9d → none |  |

## Version 16 (data date 2015-06-07, saved 2016-01-24, file Gantt.mpp)

Note of the change: Gantt Actualizado

Last finish stays 2016-02-14. Complete tasks 93 → 113.

Changed:

| ID | Task | Start | Finish | Duration | Complete | Total float |
| --- | --- | --- | --- | --- | --- | --- |
| 8 | Identificar las tareas para cada entregable |  | 2015-05-10 A → 2015-05-02 A (-8d) | 11.99h → 0h |  |  |
| 25 | **Diseño** |  |  |  | 95% → 97% | 0d → 11.65d |
| 33 | **DER** |  |  |  | 73% → 87% | 0d → 11.65d |
| 38 | Definir entidades y sus atributos | 2015-12-01 A |  |  | 0% → 50% | 0d → 5.04d |
| 39 | Describir las relaciones entre las entidades | 2015-12-05 A |  |  | 0% → 50% | 0d → 4.96d |
| 49 | **Desarrollo** |  |  |  | 87% → 99% |  |
| 58 | **Escribir código de Plantillas** |  | 2016-01-10 A |  | 68% → 100% | 3.33d → none |
| 74 | Inicio Replanificacion de Plantillas | 2015-12-06 A | 2015-12-06 A |  | 0% → 100% | 2.19d → none |
| 75 | Consultar información de inversiones (CU017) | 2015-12-06 A | 2015-12-16 A |  | 0% → 100% | 0.9d → none |
| 76 | Consultar información de emprendimientos (CU018) | 2015-12-17 A | 2015-12-26 A |  | 0% → 100% | 0.88d → none |
| 77 | Gestionar notificaciones (CU019) | 2015-12-27 A | 2016-01-04 A |  | 0% → 100% | 0.96d → none |
| 78 | Presentar estado de resultados (CU015) | 2016-01-05 A | 2016-01-10 A |  | 0% → 100% | 0.94d → none |
| 79 | **Escribir código PHP** |  |  |  | 81% → 96% | 0d → 5d |
| 95 | Inicio Replanificacion de PHP | 2015-12-06 A | 2015-12-06 A |  | 0% → 100% | 0d → none |
| 96 | Consultar información de inversiones (CU017) | 2015-12-06 A | 2015-12-13 A |  | 0% → 100% | 0d → none |
| 97 | Consultar información de emprendimientos (CU018) | 2015-12-13 A | 2015-12-27 A |  | 0% → 100% | 0d → none |
| 98 | Gestionar notificaciones (CU019) | 2015-12-27 A | 2016-01-03 A |  | 0% → 100% | 0d → none |
| 100 | Presentar estado de resultados (CU015) | 2016-01-16 A | 2016-01-24 A |  | 0% → 100% | 0d → none |
| 103 | **Revisión de pares de Plantillas** |  | 2016-01-10 A |  | 73% → 100% | 8.33d → none |
| 108 | Revision 5 (CU017 - CU018) | 2015-12-27 A | 2015-12-27 A |  | 0% → 100% | 2.21d → none |
| 109 | Revision 6 (CU019) | 2016-01-09 A | 2016-01-09 A |  | 0% → 100% | 5.71d → none |
| 110 | Revision 7 (CU015) | 2016-01-10 A | 2016-01-10 A |  | 0% → 100% | 2.21d → none |
| 113 | **Revisión de pares de PHP** |  | 2016-01-24 A |  | 89% → 100% | 0d → none |
| 118 | Revision 5 (CU017 - CU018) | 2015-12-27 A | 2015-12-27 A |  | 0% → 100% | 0d → none |
| 119 | Revision 6 (CU019 - CU020) | 2016-01-16 A | 2016-01-16 A |  | 0% → 100% | 0d → none |
| 120 | Revision 7 (CU015) | 2016-01-24 A | 2016-01-24 A |  | 0% → 100% | 0d → none |
| 129 | **Testing** |  |  |  | 55% → 80% |  |
| 132 | Inicio Replanificacion Testing | 2015-12-06 A | 2015-12-06 A |  | 0% → 100% | 4.12d → none |
| 133 | Armar el plan de pruebas | 2015-12-06 A | 2015-12-12 A |  | 0% → 100% | 4.08d → none |
| 134 | Definir los casos de prueba | 2015-12-12 A | 2015-12-19 A |  | 0% → 100% | 4.08d → none |
| 135 | **Ejecutar los casos de prueba** |  |  |  | 44% → 53% |  |
| 139 | Inicio Replanificacion de ejecución casos de prueba | 2016-01-24 A | 2016-01-24 A |  | 0% → 100% | 0d → none |
| 140 | Ciclo #4 | 2016-01-24 A |  |  | 0% → 80% | 0d → 0.02d |
| 145 | **Documentar resultados de las pruebas** |  |  |  | 55% → 62% |  |
| 150 | Ciclo #4 | 2016-01-30 A |  |  | 0% → 80% |  |
